# 07.09.26

Schedule from MS Project, 2023-03-10 to 2027-03-10, A marks actual dates.
DEXP

## Calendars

- Стандартный: Mon-Fri 09:00-13:00, 14:00-18:00; Sat-Sun off. Exceptions (off unless hours are given): 2026-09-05 09:00-13:00, 14:00-18:00, 2026-09-12 to 2026-09-13 09:00-13:00, 14:00-18:00, 2026-09-19 to 2026-09-20 09:00-13:00, 14:00-18:00, 2026-09-26 to 2026-09-27 09:00-13:00, 14:00-18:00, 2026-10-04 09:00-13:00, 14:00-18:00, 2026-10-17 09:00-13:00, 14:00-18:00, 2026-11-07 to 2026-11-08 09:00-13:00, 14:00-18:00, 2026-11-14 to 2026-11-15 09:00-13:00, 14:00-18:00.

## Resources

| Resource |
| --- |
| Макаревич А |
| Дедов В |
| Бобренок В |
| Тимофеев В |
| Зорькин В |
| Бундин В |
| Труфанов А |
| Некрасов А |
| Шуранов Ю |
| Домоводов К |
| Амрулин Р |
| Карабанов |
| Олег |
| оплот |
| Коленкоров |
| Мультан |
| Малинина М |
| Лобанов И |
| Дворник |
| Подрядчик |
| Олег лукас |
| Черепанов И |
| оперторы2 |
| оператор2 |
| Тракресурс |
| Сапелин С |
| Технолог |
| Фрезер ЧПУ |
| Пинчук А |
| КИнжекул |
| ТО_2 |
| ТО_1 |
| ТО_М |
| ТО |
| Кладовщики |
| Логист |
| Автобест |
| Николаев |

## Schedule

| ID | WBS | Task | Type | Duration | Start | Finish | Predecessors | Complete | Remaining | Total slack | Free slack | Constraint | Resources | Work | Actual work |
| --- | --- | --- | --- | --- | --- | --- | --- | --- | --- | --- | --- | --- | --- | --- | --- |
| 1 | 1 | **1 цех** |  | 431.5d? | 2023-03-10 09:00 A | 2024-11-02 13:00 |  | 98% | 7.51d? |  |  |  |  | 23335.8h | 22934.7h |
| 2 | 1.1 | Замена пускателя получить информацию по смене от Николаева |  | 1h | 2026-11-23 09:00 A | 2026-11-23 10:00 A |  | 100% |  |  |  | start no earlier than 2026-11-23 08:00 | Бундин В | 1h | 1h |
| 3 | 1.2 | Усиление рамы прайсчекера, чтоб не падала так легко, подумать как укрепить, утяжелить | manual | 2h | 2026-11-27 09:00 | 2026-11-27 11:00 |  |  |  |  |  | start no earlier than 2026-11-27 09:00 | Бундин В | 2h |  |
| 4 | 1.3 | Установка дополнительного освещения на охладителях |  | 2h | 2026-11-25 09:00 | 2026-11-25 11:00 |  |  |  | 75.34d |  | start no earlier than 2026-11-25 09:00 | Труфанов А; Некрасов А | 4h |  |
| 5 | 1.4 | Посмотреть отопление в 1 цехе холодно |  | 1h | 2026-11-19 09:00 A | 2026-11-19 10:00 A |  | 100% |  |  |  | start no earlier than 2026-11-19 09:00 | Труфанов А; Некрасов А | 2h | 2h |
| 6 | 1.5 | Замена редуктора на сухом гидролизате на s40-60-23 |  | 2h | 2026-11-18 09:00 A | 2026-11-18 11:00 A |  | 100% |  |  |  | start no earlier than 2026-11-18 09:00 | Труфанов А; Некрасов А | 4h | 4h |
| 7 | 1.6 | **Модернизация смесителей** |  | 10.38d | 2026-11-16 09:00 A | 2026-11-30 12:00 |  | 24% | 7.88d | 72.22d |  |  |  | 5.17h | 2h |
| 8 | 1.6.1 | Повторить заявку на комплектующие для автоматической подачи сырья из смесителей |  | 1h | 2026-11-16 09:00 A | 2026-11-16 10:00 A |  | 100% |  |  |  | start no earlier than 2026-11-16 08:00 | Дедов В; Зорькин В | 2h | 2h |
| 9 | 1.6.2 | контроль |  | 10min | 2026-11-27 09:00 | 2026-11-27 09:10 |  |  |  | 73.57d |  | start no earlier than 2026-11-27 09:00 | Зорькин В | 0.17h |  |
| 10 | 1.6.3 | монтаж |  | 3h | 2026-11-30 09:00 | 2026-11-30 12:00 |  |  |  | 72.22d |  | start no earlier than 2026-11-30 09:00 | Дедов В | 3h |  |
| 11 | 1.7 | **изготовить лоток м/д GRLW и экструдером с переключателем на сброс и крышкой очиски/быстросъемный** |  | 2d? | 2026-11-10 09:00 | 2026-11-11 18:00 |  |  |  | 86.59d |  |  |  | 24h |  |
| 12 | 1.7.1 | составить чертежи |  | 1d? | 2026-11-10 09:00 | 2026-11-10 18:00 |  |  |  | 86.59d | 0d | start no earlier than 2026-11-10 09:00 | Зорькин В; Домоводов К | 16h |  |
| 13 | 1.7.2 | раскрой металл / сборка |  | 1d? | 2026-11-11 09:00 | 2026-11-11 18:00 | 12 |  |  | 86.59d |  | start no earlier than 2026-11-09 08:00 | Макаревич А | 8h |  |
| 14 | 1.8 | калибровка пид регулятор печи 2 |  | 1h | 2026-11-16 09:00 A | 2026-11-16 10:00 A |  | 100% |  |  |  | start no earlier than 2026-11-16 09:00 | Дедов В | 1h | 1h |
| 15 | 1.9 | ремонт силиконовой резинки выход из печи 1 |  | 1h | 2026-11-18 09:00 A | 2026-11-18 10:00 A |  | 100% |  |  |  | start no earlier than 2026-11-18 09:00 | Труфанов А; Некрасов А | 2h | 2h |
| 16 | 1.10 | 2 линия ремонт сквозной ржавчины прекондиционера возле горла |  | 2h | 2026-11-25 09:00 | 2026-11-25 11:00 |  |  |  | 75.34d |  | start no earlier than 2026-11-25 09:00 | Бундин В; Труфанов А | 4h |  |
| 17 | 1.11 | диагностика кондиционера |  | 2h | 2026-11-10 09:00 | 2026-11-10 11:00 |  |  |  | 88.34d |  | start no earlier than 2026-11-10 09:00 | Труфанов А; Некрасов А | 4h |  |
| 18 | 1.12 | ПУН поломоечная машинка |  | 2h | 2026-11-09 09:00 A | 2026-11-09 11:00 A |  | 100% |  |  |  | start no earlier than 2026-11-09 08:00 | Макаревич А; Николаев | 4h | 4h |
| 19 | 1.13 | Засыпать пескобетон в сваи |  | 2h | 2026-11-16 09:00 A | 2026-11-16 11:00 A |  | 100% |  |  |  | start no earlier than 2026-11-16 09:00 | Некрасов А; Труфанов А | 4h | 4h |
| 20 | 1.14 | Вывезти землю трактором возле септика |  | 1d? | 2026-11-05 09:00 | 2026-11-05 18:00 |  |  |  | 92.59d |  | start no earlier than 2026-11-05 09:00 |  |  |  |
| 21 | 1.15 | Приделать уголок к верхнему краю битумной ленты, к стене, алюминиевым уголком. Крепеж дюбель гвоздь или предложить другой вариант крепления |  | 4h | 2026-11-04 09:00 A | 2026-11-04 13:00 A |  | 100% |  |  |  | start no earlier than 2026-11-04 09:00 | Бобренок В | 4h | 4h |
| 22 | 1.16 | Расширить отверстие по видео |  | 30min | 2026-11-03 09:00 A | 2026-11-03 09:30 A |  | 100% |  |  |  | start no earlier than 2026-11-03 08:00 | Дедов В | 0.5h | 0.5h |
| 23 | 1.17 | Изготовление трубок (удочек, для подачи жира) 1 и 2 лини, на каждую линию по 2. |  | 4h | 2026-11-03 09:00 | 2026-11-03 13:00 |  |  |  | 95.09d |  | start no earlier than 2026-11-03 09:00 | Тимофеев В | 4h |  |
| 24 | 1.18 | Разметить место бурения под раму за 1 цехом, чертеж у Константина |  | 1h | 2026-11-03 09:00 A | 2026-11-03 10:00 A |  | 100% |  |  |  | start no earlier than 2026-11-03 09:00 | Труфанов А; Некрасов А | 2h | 2h |
| 25 | 1.19 | установить датчики температуры для прекондиционера (механический, со стрелкой) |  | 1h | 2026-11-03 09:00 A | 2026-11-03 10:00 A |  | 100% |  |  |  | start no earlier than 2026-11-03 09:00 | Дедов В | 1h | 1h |
| 26 | 1.20 | Приклеить удлинетель к носику для гидролизата, которую обломили, приклепать на пластины. Все тестить и собирать можно в 3 цехе по месту, что бы она в итоге была готова в любой момент быть поставлена | manual | 2h | 2026-10-31 09:00 A | 2026-10-31 11:00 A |  | 100% |  |  |  | start no earlier than 2026-10-31 09:00 | Макаревич А | 2h | 2h |
| 27 | 1.21 | Поставить выключатель на рампе |  | 30min | 2026-10-30 09:00 A | 2026-10-30 09:30 A |  | 100% |  |  |  | start no earlier than 2026-10-30 08:00 | Бобренок В | 0.5h | 0.5h |
| 28 | 1.22 | Убрать лист над печкой |  | 30min | 2026-10-30 09:00 A | 2026-10-30 09:30 A |  | 100% |  |  |  | start no earlier than 2026-10-30 08:00 | Бобренок В | 0.5h | 0.5h |
| 29 | 1.23 | Посмотреть/заменить термопару на 1 линии на бачке с жиром, определить, какой перегревает |  | 1h | 2026-10-30 09:00 A | 2026-10-30 10:00 A |  | 100% |  |  |  | start no earlier than 2026-10-30 08:00 | Бобренок В | 1h | 1h |
| 30 | 1.24 | замена ножек на полибоксах под которые не заезжает рохля |  | 3h | 2026-10-29 09:00 A | 2026-10-29 12:00 A |  | 100% |  |  |  | start no earlier than 2026-10-29 08:00 | Бобренок В | 3h | 3h |
| 31 | 1.25 | Перенос конструкции с фильтрами на раму барабанов (каждую мойку их двигают, мучаются со вторым краном, что не открывается) |  | 2h | 2026-10-29 09:00 A | 2026-10-29 11:00 A |  | 100% |  |  |  | start no earlier than 2026-10-29 08:00 | Тимофеев В | 2h | 2h |
| 32 | 1.26 | Поставить насос 12В через расходомер линия 2 |  | 1h | 2026-11-18 09:00 | 2026-11-18 10:00 |  |  |  | 80.47d |  | start no earlier than 2026-11-18 09:00 | Тимофеев В | 1h |  |
| 33 | 1.27 | Сделать врезки по водоподготовке в основную магистраль, курьер привез необходимое |  | 2h | 2026-10-28 09:00 A | 2026-10-28 11:00 A |  | 100% |  |  |  | start no earlier than 2026-10-28 08:00 | Труфанов А; Некрасов А | 4h | 4h |

| ID | WBS | Task | Duration | Start | Finish | Complete | Remaining | Total slack | Constraint | Resources | Work | Actual work |
| --- | --- | --- | --- | --- | --- | --- | --- | --- | --- | --- | --- | --- |
| 34 | 1.28 | **Собрать канистру для подачи воды в экструдер, по аналогу 3 цех. Промежуточный бак 2 шт** | 17.25d | 2026-10-29 09:00 A | 2026-11-17 11:00 | 99% | 0d | 0d |  | Бундин В | 141.42h | 17.83h |
| 35 | 1.28.1 | Заказать поплавковый клапан с боковой подачей | 15min | 2026-10-29 09:00 A | 2026-10-29 09:15 A | 100% |  |  | start no earlier than 2026-10-29 08:00 | Зорькин В | 0.25h | 0.25h |
| 36 | 1.28.2 | Контроль | 10min | 2026-11-05 09:00 A | 2026-11-05 09:10 A | 100% |  |  | start no earlier than 2026-11-05 09:00 | Зорькин В | 0.17h | 0.17h |
| 37 | 1.28.3 | монтаж | 1h | 2026-11-17 09:00 A | 2026-11-17 10:00 A | 100% |  |  | start no earlier than 2026-11-17 09:00 | Дедов В | 1h | 1h |
| 38 | 1.28.4 | Монтаж насоса, взять в кабинете оги | 2h | 2026-11-17 09:00 A | 2026-11-17 11:00 A | 100% |  |  | start no earlier than 2026-11-17 09:00 | Дедов В | 2h | 2h |
| 39 | 1.29 | Поставить лампу на 1 линии, по аналогу 2 линии, повешать на зонтик, такую же длинную, запитаться от соседней, посмотреть токи, что все хватает | 2h | 2026-10-28 09:00 A | 2026-10-28 11:00 A | 100% |  |  | start no earlier than 2026-10-28 08:00 | Бундин В | 2h | 2h |
| 40 | 1.30 | Ремонт палетообмотчика | 2h | 2026-10-28 09:00 A | 2026-10-28 11:00 A | 100% |  |  | start no earlier than 2026-10-28 09:00 | Тимофеев В | 2h | 2h |
| 41 | 1.31 | Дополнительный свет в зоне экструдера над нож узелом - линия 2 | 2h | 2026-10-28 09:00 A | 2026-10-28 11:00 A | 100% |  |  | start no earlier than 2026-10-28 09:00 | Бобренок В; Николаев | 4h | 4h |
| 42 | 1.32 | монтаж светильник в зону между печь 2 и стенка профлист. Темно уборщице | 2h | 2026-10-27 09:00 A | 2026-10-27 11:00 A | 100% |  |  | start no earlier than 2026-10-27 08:00 | Бундин В | 2h | 2h |
| 43 | 1.33 | Изготовить уши на конвейере №1 по аналогу 1 линии | 2h | 2026-10-29 09:00 A | 2026-10-29 11:00 A | 100% |  |  | start no earlier than 2026-10-29 09:00 | Тимофеев В | 2h | 2h |
| 44 | 1.34 | Загерметизировать щель битумной лентой между мезонином и стеной на экструдере, герметизируем сверху | 2h | 2026-10-27 09:00 A | 2026-10-27 11:00 A | 100% |  |  | start no earlier than 2026-10-27 09:00 | Бобренок В | 2h | 2h |
| 45 | 1.35 | Установить тепловую пушкув гидролизатной для обогрева помещения, чтоб не разморозило трубы. Подключить от шкафа ВРУ, пушка на 380, кабель подобрать по мощности | 2h | 2026-10-23 09:00 A | 2026-10-23 11:00 A | 100% |  |  | start no earlier than 2026-10-23 08:00 | Макаревич А | 2h | 2h |
| 46 | 1.36 | Собрать крышку на дозатор которая в слесарке, вторую часть снять с 3дпринтера | 1h | 2026-10-20 09:00 A | 2026-10-20 10:00 A | 100% |  |  | start no earlier than 2026-10-20 08:00 | Бундин В | 1h | 1h |
| 47 | 1.37 | Изготовление резинки для поломоечной машинки и установка. Резину получить на складе | 30min | 2026-10-20 09:00 A | 2026-10-20 09:30 A | 100% |  |  | start no earlier than 2026-10-20 08:00 | Бундин В | 0.5h | 0.5h |
| 48 | 1.38 | **ремонт 3х ходовой приточная вентиляция** | 4.12d | 2026-10-19 09:00 A | 2026-10-23 10:00 A | 100% |  |  |  |  | 7h | 7h |
| 49 | 1.38.1 | монтаж + замена серволпривод | 1h | 2026-10-19 09:00 A | 2026-10-19 10:00 A | 100% |  |  | start no earlier than 2026-10-19 08:00 | Тимофеев В; Николаев | 2h | 2h |
| 50 | 1.38.2 | монтаж на калорифер /подключить серволпривод | 2h | 2026-10-20 09:00 A | 2026-10-20 11:00 A | 100% |  |  | start no earlier than 2026-10-20 09:00 | Тимофеев В; Николаев | 4h | 4h |
| 51 | 1.38.3 | контроль работы / отлака | 1h | 2026-10-23 09:00 A | 2026-10-23 10:00 A | 100% |  |  | start no earlier than 2026-10-23 09:00 | Дедов В | 1h | 1h |
| 52 | 1.39 | подклоючить в дренаж доп лотки сбора конденсата | 4h | 2026-10-20 09:00 A | 2026-10-20 13:00 A | 100% |  |  | start no earlier than 2026-10-20 09:00 | Труфанов А | 4h | 4h |
| 53 | 1.40 | **монтаж водоподготовка // разделить воду в экструдер и парогенераторы** | 169.5d? | 2026-03-19 09:00 A | 2026-10-29 13:00 | 96% | 6.84d? | 98.09d |  |  | 293h | 281.5h |
| 54 | 1.40.1 | **монтаж водоподготовка** | 3.5d? | 2026-10-26 09:00 A | 2026-10-29 13:00 A | 100% |  |  |  |  | 24h | 24h |
| 55 | 1.40.1.1 | купить тройники / краны | 1d? | 2026-10-26 09:00 A | 2026-10-26 18:00 A | 100% |  |  | start no earlier than 2026-10-26 09:00 | Зорькин В | 8h | 8h |
| 56 | 1.40.1.2 | монтаж трасса раздельная, что можно без отключения | 4h | 2026-10-27 09:00 A | 2026-10-27 13:00 A | 100% |  |  | start no earlier than 2026-10-27 09:00 | Бобренок В; Николаев | 8h | 8h |
| 57 | 1.40.1.3 | подключение в систему / подключение питание | 4h | 2026-10-29 09:00 A | 2026-10-29 13:00 A | 100% |  |  | start no earlier than 2026-10-29 09:00 | Труфанов А; Некрасов А | 8h | 8h |

| ID | WBS | Task | Type | Duration | Start | Finish | Predecessors | Complete | Remaining | Total slack | Free slack | Constraint | Resources | Work | Actual work |
| --- | --- | --- | --- | --- | --- | --- | --- | --- | --- | --- | --- | --- | --- | --- | --- |
| 58 | 1.40.2 | **разделение воды ПГ / экструдер** |  | 67.31d | 2026-08-07 09:00 A | 2026-10-28 11:30 |  | 30% | 46.91d | 99.28d |  |  |  | 16.5h | 5h |
| 59 | 1.40.2.1 | изготовить промежуточную емкость для прекондера, подача воды, сделать по аналогу 3 цеха | manual | 2h | 2026-10-05 09:00 A | 2026-10-05 11:00 A |  | 100% |  |  |  | start no earlier than 2026-10-05 09:00 | Тимофеев В | 2h | 2h |
| 60 | 1.40.2.2 | **воставноить насосы пирльстатические** |  | 6.31d | 2026-10-20 09:00 A | 2026-10-28 11:30 A |  | 100% |  |  |  |  |  | 3h | 3h |
| 61 | 1.40.2.2.1 | Подать информацию (список), что необходимо заказать для восстановления насосов |  | 30min | 2026-10-28 09:00 A | 2026-10-28 09:30 A |  | 100% |  |  |  | start no earlier than 2026-10-28 09:00 | Тимофеев В | 0.5h | 0.5h |
| 62 | 1.40.2.2.2 | заявка трубка |  | 15min | 2026-10-20 09:00 A | 2026-10-20 09:15 A |  | 100% |  |  |  | start no earlier than 2026-10-20 09:00 | Зорькин В | 0.25h | 0.25h |
| 63 | 1.40.2.2.3 | контроль доставка |  | 15min | 2026-10-27 09:15 A | 2026-10-27 09:30 A | 62FS+5d | 100% |  |  |  | start no earlier than 2026-10-19 08:00 | Зорькин В | 0.25h | 0.25h |
| 64 | 1.40.2.2.4 | сборка |  | 2h | 2026-10-28 09:30 A | 2026-10-28 11:30 A | 63FS+1d | 100% |  |  |  | start no earlier than 2026-10-19 08:00 | Тимофеев В | 2h | 2h |
| 65 | 1.40.2.3 | **монтаж на линия 1** |  | 18.44d | 2026-08-07 09:00 | 2026-09-02 12:30 |  |  |  | 148.16d |  |  |  | 11.5h |  |
| 66 | 1.40.2.3.1 | заявка на счетчик, насос, 3х ход клапан, фитинги, канистра |  | 1h | 2026-08-07 09:00 | 2026-08-07 10:00 |  |  |  | 148.16d | 0d | start no earlier than 2026-08-07 09:00 | Зорькин В | 1h |  |
| 67 | 1.40.2.3.2 | контроль поставки |  | 30min | 2026-08-28 10:00 | 2026-08-28 10:30 | 66FS+15d |  |  | 148.16d | 0d | start no earlier than 2026-08-12 09:00 | Зорькин В | 0.5h |  |
| 68 | 1.40.2.3.3 | сборка корпус |  | 4h | 2026-08-31 10:30 | 2026-08-31 15:30 | 67FS+1d |  |  | 148.16d | 0d | start no earlier than 2026-08-12 09:00 | Тимофеев В | 4h |  |
| 69 | 1.40.2.3.4 | монтаж линия 1 |  | 6h | 2026-09-01 15:30 | 2026-09-02 12:30 | 68FS+1d |  |  | 148.16d |  | start no earlier than 2026-08-12 09:00 | Тимофеев В | 6h |  |
| 70 | 1.40.3 | заявка поплавкой клапан вертикальный, подводка с боку по аналогии с 4ц |  | 1h | 2026-03-19 09:00 A | 2026-03-19 10:00 A |  | 100% |  |  |  | start no earlier than 2026-03-19 08:00 | Зорькин В | 1h | 1h |
| 71 | 1.40.4 | доставка |  | 10d | 2026-03-19 10:00 A | 2026-04-02 10:00 A | 70 | 100% |  |  |  | start no earlier than 2026-03-19 08:00 | Карабанов | 80h | 80h |
| 72 | 1.40.5 | испытать производсительность маленького черн насоса с "медленным" счетким |  | 2h | 2026-05-20 09:00 A | 2026-05-20 11:00 A |  | 100% |  |  |  | start no earlier than 2026-05-20 09:00 | Тимофеев В | 2h | 2h |
| 73 | 1.40.6 | изготовить емкость для поплавкой камеры и насоса из нерж |  | 4h | 2026-04-27 09:00 A | 2026-04-27 13:00 A |  | 100% |  |  |  | start no earlier than 2026-04-27 09:00 | Макаревич А | 4h | 4h |
| 74 | 1.40.7 | доставка частотный 220 контроль | milestone | 0d | 2026-04-24 09:00 A | 2026-04-24 09:00 A |  | 100% |  |  |  | start no earlier than 2026-04-24 09:00 | Зорькин В |  |  |
| 75 | 1.40.8 | испытать регулирование насоса на частотнике |  | 1h | 2026-05-26 09:00 A | 2026-05-26 10:00 A |  | 100% |  |  |  | start no earlier than 2026-05-26 09:00 | Дедов В | 1h | 1h |
| 76 | 1.40.9 | монтаж насоса + бак нерж на линия 2 |  | 1h | 2026-05-27 09:00 A | 2026-05-27 10:00 A |  | 100% |  |  |  | start no earlier than 2026-05-27 09:00 | Тимофеев В | 1h | 1h |
| 77 | 1.40.10 | монтаж розетка, кабель до насаса, подключение двигатель насоса |  | 1h | 2026-05-27 09:00 A | 2026-05-27 10:00 A |  | 100% |  |  |  | start no earlier than 2026-05-27 09:00 | Бундин В | 1h | 1h |
| 78 | 1.40.11 | подключение насос + счетчик + кран + частотник - сборка схема с байпасом на мал насосе |  | 2h | 2026-08-11 09:00 A | 2026-08-11 11:00 A |  | 100% |  |  |  | start no earlier than 2026-08-11 09:00 | Тимофеев В | 2h | 2h |
| 79 | 1.40.12 | установить счетчик в линию |  | 1h | 2026-08-12 09:00 A | 2026-08-12 10:00 A |  | 100% |  |  |  | start no earlier than 2026-08-12 09:00 | Тимофеев В | 1h | 1h |
| 80 | 1.40.13 | испытания производительности и регулировки |  | 1h | 2026-08-12 09:00 A | 2026-08-12 10:00 A |  | 100% |  |  |  | start no earlier than 2026-08-12 09:00 | Тимофеев В | 1h | 1h |
| 81 | 1.40.14 | тестирование работы при обновленном SSID |  | 147.5h | 2026-08-07 09:00 A | 2026-09-02 12:30 A |  | 100% |  |  |  |  | Домоводов К | 147.5h | 147.5h |
| 82 | 1.40.15 | подключть конденсатор к насосу, запуск системы |  | 1h | 2026-05-27 08:00 A | 2026-05-27 10:00 A |  | 100% |  |  |  | start no earlier than 2026-05-27 08:00 | Дедов В | 1h | 1h |
| 83 | 1.40.16 | подготовить емкость нерж (попловок, сгон) для подключения к насосу |  | 4h | 2026-05-26 09:00 A | 2026-05-26 13:00 A |  | 100% |  |  |  | start no earlier than 2026-05-26 09:00 | Бундин В | 4h | 4h |
| 84 | 1.40.17 | испытать насос на часотоном приводе |  | 2h | 2026-05-19 09:00 A | 2026-05-19 11:00 A | 74 | 100% |  |  |  | start no earlier than 2026-05-20 09:00 | Тимофеев В | 2h | 2h |
| 85 | 1.40.18 | перенос с 3й линии бак с насосом, установка на линия 2 |  | 4h | 2026-04-08 09:00 A | 2026-04-08 13:00 A | 73 | 100% |  |  |  | start no earlier than 2026-04-08 09:00 | Некрасов А | 4h | 4h |

| ID | WBS | Task | Type | Duration | Start | Finish | Predecessors | Complete | Total slack | Free slack | Constraint | Resources | Work | Actual work |
| --- | --- | --- | --- | --- | --- | --- | --- | --- | --- | --- | --- | --- | --- | --- |
| 86 | 1.41 | **Входная дверь 1 цех - замена шарниров** |  | 10.12d | 2026-10-10 09:00 A | 2026-10-23 10:00 A |  | 100% |  |  |  |  | 2.33h | 2.33h |
| 87 | 1.41.1 | Посмотреть входные двери в 1 цех, тяжело закрываются, устранить | manual | 1h | 2026-10-10 09:00 A | 2026-10-10 10:00 A |  | 100% |  |  | start no earlier than 2026-10-10 09:00 | Бундин В | 1h | 1h |
| 88 | 1.41.2 | Заявка |  | 10min | 2026-10-14 09:00 A | 2026-10-14 09:10 A |  | 100% |  |  | start no earlier than 2026-10-14 09:00 | Зорькин В | 0.17h | 0.17h |
| 89 | 1.41.3 | контроль |  | 10min | 2026-10-21 09:00 A | 2026-10-21 09:10 A |  | 100% |  |  | start no earlier than 2026-10-21 09:00 | Зорькин В | 0.17h | 0.17h |
| 90 | 1.41.4 | Замена петли | manual | 1h | 2026-10-23 09:00 A | 2026-10-23 10:00 A |  | 100% |  |  | start no earlier than 2026-10-23 09:00 | Бундин В | 1h | 1h |
| 91 | 1.42 | Увезти бетономешалку и лестницу с пандуса (бетономешалку прикрутить к паллету на перфоленту и сразу поставить на полку |  | 1d? | 2026-10-12 09:00 A | 2026-10-12 18:00 A |  | 100% |  |  | start no earlier than 2026-10-12 08:00 |  |  |  |
| 92 | 1.43 | Установить вентилятор на пробник (на столе в слесарке?) |  | 1h | 2026-10-09 09:00 A | 2026-10-09 10:00 A |  | 100% |  |  | start no earlier than 2026-10-09 09:00 | Дедов В | 1h | 1h |
| 93 | 1.44 | Убрать пневмотрубу из гидролизатной, видео скинул, муфту взять в кабинете у нас. Остановку согласовать, сделать все за 20 мин максимум |  | 20min | 2026-10-08 09:00 A | 2026-10-08 09:20 A |  | 100% |  |  | start no earlier than 2026-10-08 08:00 | Бобренок В | 0.33h | 0.33h |
| 94 | 1.45 | Устранение течи с вентиляции, предложить варианты, выслушать вариант домоводова |  | 3h | 2026-10-06 09:00 A | 2026-10-06 12:00 A |  | 100% |  |  | start no earlier than 2026-10-06 09:00 | Труфанов А | 3h | 3h |
| 95 | 1.46 | Изготовление и установка крышек на бачок гидролизата в 1 цеху |  | 3h | 2026-10-07 09:00 A | 2026-10-07 12:00 A |  | 100% |  |  | start no earlier than 2026-10-07 09:00 | Бундин В | 3h | 3h |
| 96 | 1.47 | **Вал прекондиционера 1 линия** |  | 1.88d | 2026-10-05 09:00 A | 2026-10-06 17:00 A |  | 100% |  |  |  |  | 11.67h | 11.67h |
| 97 | 1.47.1 | С 8 утра снимаем вал с прекондиционера 1 линия. |  | 3h | 2026-10-05 09:00 A | 2026-10-05 12:00 A |  | 100% |  |  | start no earlier than 2026-10-05 09:00 | Труфанов А | 3h | 3h |
| 98 | 1.47.2 | Образмеривание вала |  | 1h | 2026-10-05 12:00 A | 2026-10-05 13:00 A | 97 | 100% |  |  | start no earlier than 2026-10-02 08:00 | Труфанов А | 1h | 1h |
| 99 | 1.47.3 | Передача всей необходимой информации токарю |  | 30min | 2026-10-05 14:00 A | 2026-10-05 14:30 A | 98 | 100% |  |  | start no earlier than 2026-10-05 09:00 | Зорькин В | 0.5h | 0.5h |
| 100 | 1.47.4 | Контроль |  | 10min | 2026-10-05 14:30 A | 2026-10-05 14:40 A | 99 | 100% |  |  | start no earlier than 2026-10-05 09:00 | Зорькин В | 0.17h | 0.17h |
| 101 | 1.47.5 | Доставка |  | 3h | 2026-10-06 09:00 A | 2026-10-06 12:00 A | 100 | 100% |  |  | start no earlier than 2026-10-06 09:00 | Логист | 3h | 3h |
| 102 | 1.47.6 | Ставим новый вал сразу после прихода |  | 4h | 2026-10-06 12:00 A | 2026-10-06 17:00 A | 101 | 100% |  |  | start no earlier than 2026-10-06 09:00 | Труфанов А | 4h | 4h |
| 103 | 1.48 | **ремонт шарнир подачи пакетов квадропак** |  | 5d? | 2026-10-01 09:00 | 2026-10-06 18:00 |  |  | 115.59d |  |  |  |  |  |
| 104 | 1.48.1 | Составить заявку на шарнир подачи пакетов (зона 1) ВЭД партнер |  | 1d? | 2026-10-01 09:00 | 2026-10-01 18:00 |  |  | 115.59d | 0d | start no earlier than 2026-10-01 08:00 |  |  |  |
| 105 | 1.48.2 | Получить счет - оплата |  | 1d? | 2026-10-02 09:00 | 2026-10-02 18:00 | 104 |  | 115.59d | 0d | start no earlier than 2026-10-01 08:00 |  |  |  |
| 106 | 1.48.3 | Контроль доставки |  | 1d? | 2026-10-04 09:00 | 2026-10-04 18:00 | 105 |  | 115.59d | 0d | start no earlier than 2026-10-01 08:00 |  |  |  |
| 107 | 1.48.4 | Приемка |  | 1d? | 2026-10-05 09:00 | 2026-10-05 18:00 | 106 |  | 115.59d | 0d | start no earlier than 2026-10-01 08:00 |  |  |  |
| 108 | 1.48.5 | Установка |  | 1d? | 2026-10-06 09:00 | 2026-10-06 18:00 | 107 |  | 115.59d |  | start no earlier than 2026-10-01 08:00 |  |  |  |
| 109 | 1.49 | Установить газлифты на раму весов в плоскостях Х и У |  | 3h | 2026-10-02 09:00 A | 2026-10-02 12:00 A |  | 100% |  |  | start no earlier than 2026-10-02 09:00 | Тимофеев В; Бундин В | 6h | 6h |

| ID | WBS | Task | Duration | Start | Finish | Predecessors | Complete | Remaining | Total slack | Constraint | Resources | Work | Actual work |
| --- | --- | --- | --- | --- | --- | --- | --- | --- | --- | --- | --- | --- | --- |
| 110 | 1.50 | **сборка рама для труб приточной вентиляции** | 37d? | 2026-10-15 09:00 A | 2026-11-27 18:00 |  | 66% | 12.74d? | 72.59d |  |  | 113.5h | 72.25h |
| 111 | 1.50.1 | Срезать кончики свай на 300 | 2h | 2026-11-17 09:00 | 2026-11-17 11:00 |  |  |  | 81.34d | start no earlier than 2026-11-17 09:00 | Труфанов А; Некрасов А | 4h |  |
| 112 | 1.50.2 | Монтаж головок | 1h | 2026-11-17 10:00 | 2026-11-17 11:00 | 113 |  |  | 81.34d |  | Труфанов А; Некрасов А | 2h |  |
| 113 | 1.50.3 | Лазером сделать привязки свай относительно вентиляции (колонны здания) | 1h | 2026-11-17 09:00 A | 2026-11-17 10:00 A |  | 100% |  |  | start no earlier than 2026-11-17 09:00 | Труфанов А; Некрасов А | 2h | 2h |
| 114 | 1.50.4 | Монтаж арматурной сетки | 4h | 2026-11-17 09:00 A | 2026-11-17 13:00 A |  | 100% |  |  | start no earlier than 2026-11-17 09:00 | Труфанов А; Некрасов А | 8h | 8h |
| 115 | 1.50.5 | составить проект рамы | 4h | 2026-10-15 09:00 A | 2026-10-15 13:00 A |  | 100% |  |  | start no earlier than 2026-10-15 09:00 | Домоводов К | 4h | 4h |
| 116 | 1.50.6 | заявка металл | 4h | 2026-10-15 14:00 A | 2026-10-15 18:00 A | 115 | 100% |  |  | start no earlier than 2026-09-30 08:00 | Домоводов К | 4h | 4h |
| 117 | 1.50.7 | обновить схему для согласования | 4h | 2026-10-20 09:00 A | 2026-10-20 13:00 A |  | 100% |  |  | start no earlier than 2026-10-20 09:00 | Домоводов К | 4h | 4h |
| 118 | 1.50.8 | проект подготовить заказ на пластины | 4h | 2026-10-22 09:00 A | 2026-10-22 13:00 A |  | 100% |  |  | start no earlier than 2026-10-22 08:00 | Домоводов К | 4h | 4h |
| 119 | 1.50.9 | контроль доставка | 15min | 2026-10-29 09:00 A | 2026-10-29 09:15 A | 116FS+10d | 100% |  |  | start no earlier than 2026-09-30 08:00 | Зорькин В | 0.25h | 0.25h |
| 120 | 1.50.10 | **покраска металл** | 12.38d | 2026-10-27 09:00 A | 2026-11-10 12:00 A |  | 100% |  |  |  |  | 36.5h | 36.5h |
| 121 | 1.50.10.1 | Докрасить металл на рампе | 3h | 2026-11-10 09:00 A | 2026-11-10 12:00 A |  | 100% |  |  | start no earlier than 2026-11-10 09:00 | Макаревич А; Николаев | 6h | 6h |
| 122 | 1.50.10.2 | заявка грунт ПФ116 | 15min | 2026-10-27 09:00 A | 2026-10-27 09:15 A |  | 100% |  |  | start no earlier than 2026-10-27 08:00 | Домоводов К | 0.25h | 0.25h |
| 123 | 1.50.10.3 | контроль доставка | 15min | 2026-11-04 09:00 A | 2026-11-04 09:15 A | 122 | 100% |  |  | start no earlier than 2026-11-04 09:00 | Домоводов К | 0.25h | 0.25h |
| 124 | 1.50.10.4 | покраска металл на рампе 1 цех по верху, то что лежит, перекидывать не нужно | 4h | 2026-11-04 09:15 A | 2026-11-04 14:15 A | 123 | 100% |  |  | start no earlier than 2026-10-27 08:00 | Бобренок В | 4h | 4h |
| 125 | 1.50.10.5 | Продолжить покраску металла на пандусе | 4h | 2026-11-05 09:00 A | 2026-11-05 13:00 A |  | 100% |  |  | start no earlier than 2026-11-05 09:00 | Труфанов А; Некрасов А; Тимофеев В; Бобренок В | 16h | 16h |
| 126 | 1.50.10.6 | Организовать перевозку металла в 3 цех | 2h | 2026-11-06 09:00 A | 2026-11-06 11:00 A |  | 100% |  |  | start no earlier than 2026-11-06 09:00 | Труфанов А; Некрасов А; Тимофеев В; Макаревич А; Николаев | 10h | 10h |
| 127 | 1.50.11 | **изг кронштейнов** | 3.03d | 2026-10-27 09:00 A | 2026-10-30 09:15 |  | 50% | 1.52d | 97.56d |  |  | 0.5h | 0.25h |
| 128 | 1.50.11.1 | заявка оплата ТВР | 15min | 2026-10-27 09:00 A | 2026-10-27 09:15 A |  | 100% |  |  | start no earlier than 2026-10-27 09:00 | Зорькин В | 0.25h | 0.25h |
| 129 | 1.50.11.2 | контроль орг забрать | 15min | 2026-10-30 09:00 | 2026-10-30 09:15 |  |  |  | 97.56d | start no earlier than 2026-10-30 09:00 | Зорькин В | 0.25h |  |
| 130 | 1.50.12 | **бурение свай** | 18.03d? | 2026-10-27 09:00 A | 2026-11-16 09:15 A |  | 100% |  |  |  |  | 9.25h | 9.25h |
| 131 | 1.50.12.1 | получить счет /договор | 1h | 2026-10-27 09:00 A | 2026-10-27 10:00 A |  | 100% |  |  | start no earlier than 2026-10-27 08:00 | Домоводов К | 1h | 1h |
| 132 | 1.50.12.2 | перекладка труб 500 соседких краном | 1d? | 2026-10-27 09:00 A | 2026-10-27 18:00 A |  | 100% |  |  | start no earlier than 2026-10-27 08:00 | Труфанов А; Некрасов А | 8h | 8h |
| 133 | 1.50.12.3 | примерка пластины с отверстием на сваю | 15min | 2026-11-16 09:00 A | 2026-11-16 09:15 A |  | 100% |  |  | start no earlier than 2026-11-20 09:00 | Некрасов А | 0.25h | 0.25h |

| ID | WBS | Task | Duration | Start | Finish | Predecessors | Complete | Total slack | Free slack | Constraint | Resources | Work | Actual work |
| --- | --- | --- | --- | --- | --- | --- | --- | --- | --- | --- | --- | --- | --- |
| 134 | 1.50.13 | **сборка рама в цехе** | 13.88d | 2026-11-09 09:00 | 2026-11-24 17:00 | 119 |  | 74.72d | 2.12d |  |  | 27h |  |
| 135 | 1.50.13.1 | сборка рамы | 7h | 2026-11-24 09:00 | 2026-11-24 17:00 |  |  | 74.72d |  | start no earlier than 2026-11-24 09:00 | Труфанов А; Некрасов А; Макаревич А | 21h |  |
| 136 | 1.50.13.2 | распаковка настройка станка для резки проката | 1h | 2026-11-10 09:00 | 2026-11-10 10:00 |  |  | 87.47d |  | start no earlier than 2026-11-10 09:00 | Труфанов А; Некрасов А | 2h |  |
| 137 | 1.50.13.3 | разработка инструкции по ТБ на данный станок | 4h | 2026-11-09 09:00 | 2026-11-09 13:00 |  |  | 88.09d |  | start no earlier than 2026-11-09 08:00 | Зорькин В | 4h |  |
| 138 | 1.50.14 | монтаж рама на цех краном | 1d? | 2026-11-27 09:00 | 2026-11-27 18:00 | 134 |  | 72.59d |  | start no earlier than 2026-11-27 09:00 | Некрасов А | 8h |  |
| 139 | 1.51 | герметизация неиспользуемых отверстий после модернизации вентиляции | 1d? | 2026-09-30 09:00 | 2026-09-30 18:00 |  |  | 120.59d |  | start no earlier than 2026-09-30 08:00 |  |  |  |
| 140 | 1.52 | **сборка системы дренажа для рекуператоров ввентиляции** | 2d? | 2026-09-30 09:00 A | 2026-10-01 18:00 A |  | 100% |  |  |  |  | 30h | 30h |
| 141 | 1.52.1 | Монтаж трассы слива в раковину с рекурператоров | 7h | 2026-09-30 09:00 A | 2026-09-30 17:00 A |  | 100% |  |  | start no earlier than 2026-09-30 09:00 | Труфанов А; Некрасов А | 14h | 14h |
| 142 | 1.52.2 | продолжить монтаж | 1d? | 2026-10-01 09:00 A | 2026-10-01 18:00 A |  | 100% |  |  | start no earlier than 2026-10-02 09:00 | Труфанов А; Некрасов А | 16h | 16h |
| 143 | 1.53 | Проверка весов на 2 линии красный смеситель, со слов валентина, после замены блока питания, работает, а потом выбивает весы, перестают работать | 1h | 2026-09-29 09:00 A | 2026-09-29 10:00 A |  | 100% |  |  | start no earlier than 2026-09-29 09:00 | Дедов В | 1h | 1h |
| 144 | 1.54 | Повторный замер параметров в 1 цеху, вентилляция (подробности по точкам у Домоводова) | 5h | 2026-09-25 09:00 A | 2026-09-25 15:00 A |  | 100% |  |  | start no earlier than 2026-09-25 09:00 | Труфанов А; Некрасов А | 10h | 10h |
| 145 | 1.55 | замеры в точках выброса вентиляции с проедставителем | 6h | 2026-09-29 09:00 A | 2026-09-29 16:00 A |  | 100% |  |  | start no earlier than 2026-09-29 09:00 | Труфанов А; Некрасов А | 12h | 12h |
| 146 | 1.56 | изготовить переход между прекондиционер и экструдер на 1 линию | 1d? | 2026-09-27 09:00 A | 2026-09-27 18:00 A |  | 100% |  |  | start no earlier than 2026-09-27 09:00 | Макаревич А | 8h | 8h |
| 147 | 1.57 | уборка остатков монтажа с рампы | 1h | 2026-09-14 09:00 A | 2026-09-14 10:00 A |  | 100% |  |  | start no earlier than 2026-09-14 09:00 | Некрасов А; Тимофеев В; Труфанов А | 3h | 3h |
| 148 | 1.58 | крепить табличку видеонаблюдение в офисе | 15min | 2026-09-14 09:00 A | 2026-09-14 09:15 A |  | 100% |  |  | start no earlier than 2026-09-14 09:00 | Тимофеев В | 0.25h | 0.25h |
| 149 | 1.59 | закрыть чердак у Лукаса | 15min | 2026-09-14 09:00 A | 2026-09-14 09:15 A |  | 100% |  |  | start no earlier than 2026-09-14 09:00 | Труфанов А; Некрасов А | 0.5h | 0.5h |
| 150 | 1.60 | **ремонт весов смеситель 1 линия** | 1.12d | 2026-09-24 09:00 A | 2026-09-25 10:00 A |  | 100% |  |  |  |  | 2h | 2h |
| 151 | 1.60.1 | Реанимировать весы, чтобы показывали. Смесители | 1h | 2026-09-24 09:00 A | 2026-09-24 10:00 A |  | 100% |  |  | start no earlier than 2026-09-24 09:00 | Дедов В | 1h | 1h |
| 152 | 1.60.2 | подключить блок питания найти на складе | 1h | 2026-09-25 09:00 A | 2026-09-25 10:00 A |  | 100% |  |  | start no earlier than 2026-09-25 08:00 | Бундин В | 1h | 1h |
| 153 | 1.61 | Закрыть каналыгу. На анкера | 2h | 2026-09-15 09:00 A | 2026-09-15 11:00 A |  | 100% |  |  | start no earlier than 2026-09-15 09:00 | Бундин В | 2h | 2h |
| 154 | 1.62 | **Дополнительное освещение на Рампе** | 41.12d | 2026-09-11 09:00 A | 2026-10-28 10:00 A |  | 100% |  |  |  |  | 7.17h | 7.17h |
| 155 | 1.62.1 | Прокинуть кабель | 2h | 2026-09-11 09:00 A | 2026-09-11 11:00 A |  | 100% |  |  | start no earlier than 2026-09-11 09:00 | Бобренок В | 2h | 2h |
| 156 | 1.62.2 | установить доп светильник на погрузочной рампе | 4h | 2026-09-15 09:00 A | 2026-09-15 13:00 A | 155 | 100% |  |  | start no earlier than 2026-09-15 09:00 | Бобренок В | 4h | 4h |
| 157 | 1.62.3 | заявка выключатель | 5min | 2026-09-16 09:00 A | 2026-09-16 09:05 A | 156 | 100% |  |  | start no earlier than 2026-09-16 08:00 | Зорькин В | 0.08h | 0.08h |
| 158 | 1.62.4 | контроль | 5min | 2026-09-25 09:00 A | 2026-09-25 09:05 A | 157FS+7d | 100% |  |  | start no earlier than 2026-09-25 09:00 | Зорькин В | 0.08h | 0.08h |
| 159 | 1.62.5 | пожключение выключателя | 1h | 2026-10-28 09:00 A | 2026-10-28 10:00 A | 158FS+1d | 100% |  |  | start no earlier than 2026-10-28 09:00 | Бобренок В | 1h | 1h |
| 160 | 1.63 | востановить светильник отсек выгрузки ГП + установить доп светильник | 4h | 2026-09-09 09:00 A | 2026-09-09 13:00 A |  | 100% |  |  | start no earlier than 2026-09-09 09:00 | Бундин В | 4h | 4h |

| ID | WBS | Task | Type | Duration | Start | Finish | Predecessors | Complete | Remaining | Total slack | Free slack | Constraint | Resources | Work | Actual work |
| --- | --- | --- | --- | --- | --- | --- | --- | --- | --- | --- | --- | --- | --- | --- | --- |
| 161 | 1.64 | **реконструкция хранения гидролизатов и маршрут подачи навесок** |  | 73d | 2026-09-08 09:00 A | 2026-12-01 18:00 |  | 36% | 46.88d | 70.59d |  |  |  | 69.08h | 24.5h |
| 162 | 1.64.1 | **перенос системы отопления** |  | 0.12d | 2026-09-11 09:00 A | 2026-09-11 10:00 A |  | 100% |  |  |  |  |  | 1h | 1h |
| 163 | 1.64.1.1 | посик сварщиков |  | 1h | 2026-09-11 09:00 A | 2026-09-11 10:00 A |  | 100% |  |  |  | start no earlier than 2026-09-11 09:00 | Домоводов К | 1h | 1h |
| 164 | 1.64.2 | **монтаж доп плащадки** |  | 53d | 2026-09-28 09:00 A | 2026-12-01 18:00 |  | 9% | 48.46d | 70.59d |  |  |  | 17.5h | 1.5h |
| 165 | 1.64.2.1 | составить чертеж площадки |  | 1h | 2026-09-28 09:00 A | 2026-09-28 10:00 A |  | 100% |  |  |  | start no earlier than 2026-09-28 09:00 | Домоводов К | 1h | 1h |
| 166 | 1.64.2.2 | заявка |  | 15min | 2026-10-13 09:00 A | 2026-10-13 09:15 A | 165FS+1d | 100% |  |  |  | start no earlier than 2026-10-13 09:00 | Домоводов К | 0.25h | 0.25h |
| 167 | 1.64.2.3 | получен счет | milestone | 0d | 2026-10-19 08:00 A | 2026-10-19 08:00 A |  | 100% |  |  |  | start no earlier than 2026-10-19 08:00 | Домоводов К |  |  |
| 168 | 1.64.2.4 | контроль доставки |  | 15min | 2026-10-26 09:00 A | 2026-10-26 09:15 A | 166FS+5d, 167FS+5d | 100% |  |  |  | start no earlier than 2026-09-08 08:00 | Зорькин В | 0.25h | 0.25h |
| 169 | 1.64.2.5 | монтаж |  | 2d | 2026-11-30 09:00 | 2026-12-01 18:00 | 168FS+1d |  |  | 70.59d |  | start no earlier than 2026-11-30 09:00 | Тимофеев В | 16h |  |
| 170 | 1.64.3 | **монтаж перегородка корридор** |  | 30.97d | 2026-10-26 09:15 | 2026-12-01 18:00 |  |  |  | 70.59d |  |  |  | 16.25h |  |
| 171 | 1.64.3.1 | контроль доставки |  | 15min | 2026-10-26 09:15 | 2026-10-26 09:30 | 168 |  |  | 98.53d | 27.94d | start no earlier than 2026-09-08 08:00 | Зорькин В | 0.25h |  |
| 172 | 1.64.3.2 | монтаж |  | 2d | 2026-11-30 09:00 | 2026-12-01 18:00 | 171FS+1d |  |  | 70.59d |  | start no earlier than 2026-11-30 09:00 | Тимофеев В | 16h |  |
| 173 | 1.64.4 | **врезка двери в проем на упаковку** |  | 0.04d | 2026-09-09 09:00 | 2026-09-09 09:20 |  |  |  | 142.55d |  |  |  | 0.33h |  |
| 174 | 1.64.4.1 | планирование с Олегом, как сделана стена |  | 20min | 2026-09-09 09:00 | 2026-09-09 09:20 |  |  |  | 142.55d |  | start no earlier than 2026-09-09 09:00 | Домоводов К | 0.33h |  |
| 175 | 1.64.5 | востановить уплотнения двери в гидролизатной, все резинки, примыкания |  | 3h | 2026-10-20 09:00 | 2026-10-20 12:00 |  |  |  | 105.22d |  | start no earlier than 2026-10-20 09:00 | Тимофеев В; Николаев | 6h |  |
| 176 | 1.64.6 | монтаж трассы к батарее (позвонить труфанову) приоритетная задача |  | 3h | 2026-10-21 09:00 | 2026-10-21 12:00 |  |  |  | 104.22d |  | start no earlier than 2026-10-21 09:00 | Бундин В; Труфанов А | 6h |  |
| 177 | 1.64.7 | перенос батареи отопления в гидролизатной |  | 2h | 2026-10-12 09:00 A | 2026-10-12 11:00 A |  | 100% |  |  |  | start no earlier than 2026-10-12 09:00 | Труфанов А; Некрасов А | 4h | 4h |
| 178 | 1.64.8 | демонтаж бетонного отлива/отмостка |  | 2d | 2026-09-08 09:00 A | 2026-09-09 18:00 A |  | 100% |  |  |  | start no earlier than 2026-09-08 08:00 | Олег | 16h | 16h |
| 179 | 1.64.9 | Помощь Олегу пока ставит шпильки |  | 1h | 2026-10-12 09:00 A | 2026-10-12 10:00 A |  | 100% |  |  |  | start no earlier than 2026-10-12 08:00 | Труфанов А; Бобренок В | 2h | 2h |
| 180 | 1.65 | **ревизия парогенератор КАРЧЕР** |  | 3.03d? | 2026-09-21 09:00 A | 2026-09-24 09:15 A |  | 100% |  |  |  |  |  | 8.5h | 8.5h |
| 181 | 1.65.1 | орг отправить курьера на пнд |  | 15min | 2026-09-23 09:00 A | 2026-09-23 09:15 A |  | 100% |  |  |  | start no earlier than 2026-09-23 09:00 | Зорькин В | 0.25h | 0.25h |
| 182 | 1.65.2 | контроль доставки |  | 15min | 2026-09-24 09:00 A | 2026-09-24 09:15 A | 181 | 100% |  |  |  | start no earlier than 2026-09-24 09:00 | Зорькин В | 0.25h | 0.25h |
| 183 | 1.65.3 | монтаж |  | 1d? | 2026-09-21 09:00 A | 2026-09-21 18:00 A | 182 | 100% |  |  |  | start no earlier than 2026-09-25 09:00 | Тимофеев В | 8h | 8h |
| 184 | 1.66 | **подключить циклоны 1 и 2 линия** |  | 1.12d | 2026-09-09 09:00 A | 2026-09-10 10:00 A |  | 100% |  |  |  |  |  | 1.17h | 1.17h |
| 185 | 1.66.1 | контроль поставка кабель |  | 10min | 2026-09-09 09:00 A | 2026-09-09 09:10 A |  | 100% |  |  |  | start no earlier than 2026-09-09 09:00 | Зорькин В | 0.17h | 0.17h |
| 186 | 1.66.2 | монтаж кабеля (временно удлинить от сущестующих концов) |  | 1h | 2026-09-10 09:00 A | 2026-09-10 10:00 A |  | 100% |  |  |  | start no earlier than 2026-09-10 09:00 | Бундин В | 1h | 1h |

| ID | WBS | Task | Type | Duration | Start | Finish | Predecessors | Complete | Constraint | Resources | Work | Actual work |
| --- | --- | --- | --- | --- | --- | --- | --- | --- | --- | --- | --- | --- |
| 187 | 1.67 | **бактерицидные лампы** |  | 7.12d | 2026-09-09 09:00 A | 2026-09-16 10:00 A |  | 100% |  |  | 3h | 3h |
| 188 | 1.67.1 | замена бактерицидных ламп в коридоре и посмотреть, где не горят |  | 1h | 2026-09-09 09:00 A | 2026-09-09 10:00 A |  | 100% | start no earlier than 2026-09-09 09:00 | Бундин В | 1h | 1h |
| 189 | 1.67.2 | ремонт лампы снятой бундиным с мойки экструдера |  | 1h | 2026-09-16 09:00 A | 2026-09-16 10:00 A |  | 100% | start no earlier than 2026-09-16 09:00 | Бундин В | 1h | 1h |
| 190 | 1.67.3 | ремонт лампы в тамбуре вывоз ГП |  | 1h | 2026-09-16 09:00 A | 2026-09-16 10:00 A |  | 100% | start no earlier than 2026-09-16 09:00 | Бундин В | 1h | 1h |
| 191 | 1.68 | исправить "не возможность открыть" краны фильтр жир 2л |  | 30min | 2026-09-10 09:00 A | 2026-09-10 09:30 A |  | 100% | start no earlier than 2026-09-10 09:00 | Тимофеев В | 0.5h | 0.5h |
| 192 | 1.69 | ремонт силиконовых уплотнений печи на сетке 1 и 2 л |  | 3h? | 2026-09-10 09:00 A | 2026-09-10 12:00 A |  | 100% | start no earlier than 2026-09-10 09:00 | Бундин В | 3h | 3h |
| 193 | 1.70 | **сместить квадропак в сторону охладителя 2л** |  | 20.5d | 2026-09-10 09:00 A | 2026-09-30 13:00 A |  | 100% |  |  | 20h | 20h |
| 194 | 1.70.1 | отключение / перенгос мехнизмов |  | 3h | 2026-09-10 09:00 A | 2026-09-10 12:00 A |  | 100% | start no earlier than 2026-09-10 09:00 | Некрасов А; Труфанов А | 6h | 6h |
| 195 | 1.70.2 | подключение |  | 3h | 2026-09-11 09:00 A | 2026-09-11 12:00 A |  | 100% | start no earlier than 2026-09-11 09:00 | Некрасов А; Труфанов А | 6h | 6h |
| 196 | 1.70.3 | доработка перил |  | 4h | 2026-09-30 09:00 A | 2026-09-30 13:00 A |  | 100% | start no earlier than 2026-09-30 09:00 | Труфанов А; Некрасов А | 8h | 8h |
| 197 | 1.71 | **квадропак - сделать силиконовый успокоитель между нория и весы 800*250 шаг шторок 60** |  | 30.12d | 2026-09-25 09:00 A | 2026-11-02 10:00 A |  | 100% |  |  | 1.33h | 1.33h |
| 198 | 1.71.1 | заявка прозрачный силикон |  | 10min | 2026-09-25 09:00 A | 2026-09-25 09:10 A |  | 100% | start no earlier than 2026-09-25 09:00 | Зорькин В | 0.17h | 0.17h |
| 199 | 1.71.2 | доставка контроль |  | 10min | 2026-10-26 09:00 A | 2026-10-26 09:10 A | 198FS+1d | 100% | start no earlier than 2026-10-26 09:00 | Зорькин В | 0.17h | 0.17h |
| 200 | 1.71.3 | сборка |  | 1h | 2026-11-02 09:00 A | 2026-11-02 10:00 A | 199 | 100% | start no earlier than 2026-11-02 09:00 | Некрасов А | 1h | 1h |
| 201 | 1.72 | квадропак - ремонт люфта штанги нажима роликов открытия захватов на станции №1 |  | 4h | 2026-09-30 09:00 A | 2026-09-30 13:00 A |  | 100% | start no earlier than 2026-09-30 09:00 | Тимофеев В | 4h | 4h |
| 202 | 1.73 | квадропак - кронштейн пневовстряхивателя - востановить резтбу сквозную |  | 1h | 2026-09-30 09:00 A | 2026-09-30 10:00 A |  | 100% | start no earlier than 2026-09-30 09:00 | Тимофеев В | 1h | 1h |
| 203 | 1.74 | Ревизия утечек воздуха на квадропаке (важно проверить пневмораспределителях) и вакуумную систему (если работают, отменяем задание) | manual | 2h | 2026-09-23 09:00 A | 2026-09-23 11:00 A |  | 100% | start no earlier than 2026-09-23 09:00 | Тимофеев В | 2h | 2h |
| 204 | 1.75 | Комплексное ТО квадропака, проверка всех соединений, протяжка болтов на всех узлах | manual | 2h | 2026-09-23 09:00 A | 2026-09-23 11:00 A |  | 100% | start no earlier than 2026-09-23 09:00 | Тимофеев В | 2h | 2h |
| 205 | 1.76 | Сделать основную кнопку на НОТИСЕ, чтоб срабатывало от нее, а не от блока управления (схему взять у нас в кабинете) | manual | 1h | 2026-09-22 09:00 A | 2026-09-22 10:00 A |  | 100% | start no earlier than 2026-09-22 09:00 | Дедов В | 1h | 1h |
| 206 | 1.77 | Убрать все кабеля на полу в зоне фасовки, теко-нотис (кабельный менеджмент) |  | 2h | 2026-09-10 09:00 A | 2026-09-10 11:00 A |  | 100% | start no earlier than 2026-09-10 09:00 | Бундин В | 2h | 2h |
| 207 | 1.78 | Клемная коробка на жирах сделать, сейчас вся висит на хомутах 2 линия |  | 1h | 2026-09-07 09:00 A | 2026-09-07 10:00 A |  | 100% | start no earlier than 2026-09-05 09:00 | Дедов В | 1h | 1h |
| 208 | 1.79 | Ошибка на баке жиротопки 2 линия Err.4 /разобраться и устранить причину |  | 1h | 2026-09-04 09:00 A | 2026-09-04 10:00 A |  | 100% | start no earlier than 2026-09-04 09:00 | Бобренок В | 1h | 1h |
| 209 | 1.80 | Установить новые газлифты, которые получил Бобренок на жиротопку 2 этаж |  | 2h | 2026-09-07 09:00 A | 2026-09-07 11:00 A |  | 100% | start no earlier than 2026-09-07 09:00 | Тимофеев В | 2h | 2h |
| 210 | 1.81 | **Не работают роль ставни на жирах, не стопоряться сделать/устранить неисправность** |  | 20.02d | 2026-09-09 09:00 A | 2026-09-29 09:10 A |  | 100% |  |  | 8.33h | 8.33h |
| 211 | 1.81.1 | Вызвать подрядчика/контроль |  | 10min | 2026-09-09 09:00 A | 2026-09-09 09:10 A |  | 100% | start no earlier than 2026-09-09 09:00 | Зорькин В | 0.17h | 0.17h |
| 212 | 1.81.2 | получить счет на ремонт |  | 1d | 2026-09-09 09:10 A | 2026-09-10 09:10 A | 211 | 100% | start no earlier than 2026-09-08 09:00 | Зорькин В | 8h | 8h |
| 213 | 1.81.3 | согласовать с подрядчиком дату ремонта |  | 10min | 2026-09-29 09:00 A | 2026-09-29 09:10 A | 212 | 100% | start no earlier than 2026-09-29 09:00 | Зорькин В | 0.17h | 0.17h |
| 214 | 1.82 | закреить отбойник корридор навесок (заанкерить) |  | 1h | 2026-09-03 09:00 A | 2026-09-03 10:00 A |  | 100% | start no earlier than 2026-09-03 08:00 | Бобренок В | 1h | 1h |
| 215 | 1.83 | Переподключение кондиционера срежима кондиционера на автоматический |  | 15min | 2026-09-02 09:00 A | 2026-09-02 09:15 A |  | 100% | start no earlier than 2026-09-02 09:00 | Бобренок В | 0.25h | 0.25h |
| 216 | 1.84 | Замена редуктора поворотного стола |  | 1h | 2026-09-02 09:00 A | 2026-09-02 10:00 A |  | 100% | start no earlier than 2026-09-02 09:00 | Бобренок В | 1h | 1h |
| 217 | 1.85 | Программирование частотника теко 0,4 привод смещения ленты |  | 2h | 2026-09-02 09:00 A | 2026-09-02 11:00 A |  | 100% | start no earlier than 2026-09-02 09:00 | Тимофеев В | 2h | 2h |
| 218 | 1.86 | Прозвонить кабель паллетных весов ошибка Error 10 |  | 1h | 2026-09-07 09:00 A | 2026-09-07 10:00 A |  | 100% | start no earlier than 2026-09-05 09:00 | Дедов В | 1h | 1h |
| 219 | 1.87 | Замена подшипников на ножевом узле |  | 2h | 2026-09-01 09:00 A | 2026-09-01 11:00 A |  | 100% | start no earlier than 2026-09-01 09:00 | Бундин В | 2h | 2h |
| 220 | 1.88 | Замена насоса на водяной рубашке жиротопке 2 этаж |  | 2h | 2026-09-01 09:00 A | 2026-09-01 11:00 A |  | 100% | start no earlier than 2026-09-01 09:00 | Бундин В | 2h | 2h |
| 221 | 1.89 | Замена контактора 1 линия 2 зона экструдера |  | 1h | 2026-09-01 09:00 A | 2026-09-01 10:00 A |  | 100% | start no earlier than 2026-09-01 09:00 | Бундин В | 1h | 1h |
| 222 | 1.90 | Редуктор смесителя 1 линия, собрать информацию, что не так, что нужно сделать |  | 30min | 2026-09-02 09:00 A | 2026-09-02 09:30 A |  | 100% | start no earlier than 2026-09-02 09:00 | Тимофеев В | 0.5h | 0.5h |
| 223 | 1.91 | Ремонт мухобойки 1 цех в корридоре завоза навесок |  | 1h | 2026-09-01 09:00 A | 2026-09-01 10:00 A |  | 100% | start no earlier than 2026-09-01 09:00 | Труфанов А | 1h | 1h |
| 224 | 1.92 | капает с кондиционера ближе к жировику (устранить) |  | 2h | 2026-08-31 09:00 A | 2026-08-31 11:00 A |  | 100% | start no earlier than 2026-08-31 09:00 | Бундин В; Тимофеев В | 4h | 4h |
| 225 | 1.93 | отвезти внутренний блок с 1 цеха на синий склад | manual | 1h | 2026-08-30 09:00 A | 2026-08-30 10:00 A |  | 100% | start no earlier than 2026-08-30 09:00 | Бундин В | 1h | 1h |
| 226 | 1.94 | чистка фильтра кондиционера между печками | manual | 1h | 2026-08-31 09:00 A | 2026-08-31 10:00 A |  | 100% | start no earlier than 2026-08-31 09:00 | Бундин В | 1h | 1h |
| 227 | 1.95 | ревизия приточной вентиляции (протяжка контактов и т.д.) | manual | 3h | 2026-08-31 09:00 A | 2026-08-31 12:00 A |  | 100% | start no earlier than 2026-08-31 09:00 | Дедов В | 3h | 3h |
| 228 | 1.96 | прикрутить лоток между барабанами, чтобы не бил о лопасти 1 линия | manual | 1h | 2026-08-30 09:00 A | 2026-08-30 10:00 A |  | 100% | start no earlier than 2026-08-30 09:00 | Бундин В | 1h | 1h |
| 229 | 1.97 | улитка на подиуме за цехом, прикрутить отвод в бок (отвод под подиумом) | manual | 1h | 2026-08-31 09:00 A | 2026-08-31 10:00 A |  | 100% | start no earlier than 2026-08-31 09:00 | Бундин В | 1h | 1h |
| 230 | 1.98 | течет вода с поломоечной машинки - разобраться | manual | 2h | 2026-08-31 09:00 A | 2026-08-31 11:00 A |  | 100% | start no earlier than 2026-08-31 09:00 | Дедов В | 2h | 2h |

| ID | WBS | Task | Duration | Start | Finish | Predecessors | Complete | Remaining | Total slack | Constraint | Resources | Work | Actual work |
| --- | --- | --- | --- | --- | --- | --- | --- | --- | --- | --- | --- | --- | --- |
| 231 | 1.99 | **почистить шнек сухого гидрализата (1 линия)** | 0.12d | 2026-08-28 08:00 A | 2026-08-28 10:00 A |  | 100% |  |  |  | Бобренок В | 3h | 3h |
| 232 | 1.99.1 | замена пошипников | 1h | 2026-08-28 08:00 A | 2026-08-28 10:00 A |  | 100% |  |  | start no earlier than 2026-08-28 08:00 | Тимофеев В; Некрасов А | 2h | 2h |
| 233 | 1.100 | замена фильтров на приточке | 1h | 2026-08-27 09:00 A | 2026-08-27 10:00 A |  | 100% |  |  | start no earlier than 2026-08-27 09:00 | Дедов В | 1h | 1h |
| 234 | 1.101 | **продумать как сделать герметичную крышку на смесителе сухого гидрализата** | 72.25d | 2026-08-27 09:00 A | 2026-11-18 11:00 |  | 86% | 10.26d | 80.34d |  |  | 18.08h | 16.08h |
| 235 | 1.101.1 | печать уплотненителей крышек | 4h | 2026-09-28 09:00 A | 2026-09-28 13:00 A |  | 100% |  |  | start no earlier than 2026-09-28 09:00 | Домоводов К | 4h | 4h |
| 236 | 1.101.2 | контроль доставка резинка упл | 5min | 2026-10-28 09:00 A | 2026-10-28 09:05 A |  | 100% |  |  | start no earlier than 2026-10-28 09:00 | Зорькин В | 0.08h | 0.08h |
| 237 | 1.101.3 | изготовить крышку (расскажу по телефону) | 4h | 2026-08-27 09:00 A | 2026-08-27 13:00 A |  | 100% |  |  | start no earlier than 2026-08-27 09:00 | Бобренок В; Шуранов Ю | 8h | 8h |
| 238 | 1.101.4 | изготовить крышку для 2 линии (как сделал Слава) | 4h | 2026-09-01 09:00 A | 2026-09-01 13:00 A |  | 100% |  |  | start no earlier than 2026-09-01 09:00 | Макаревич А | 4h | 4h |
| 239 | 1.101.5 | установка на струбцинах с уплотнителями | 2h | 2026-11-18 09:00 | 2026-11-18 11:00 | 235, 236 |  |  | 80.34d | start no earlier than 2026-11-18 09:00 | Бундин В | 2h |  |
| 240 | 1.102 | **метал от тенов печи, устранить причину** | 15.38d? | 2026-08-24 09:00 A | 2026-09-11 12:00 A |  | 100% |  |  |  |  | 5.42h | 5.42h |
| 241 | 1.102.1 | выяснить сгорел тен русский или китайский (будет ночью остановка) | 15min | 2026-08-27 09:00 A | 2026-08-27 09:15 A |  | 100% |  |  | start no earlier than 2026-08-27 09:00 | Бобренок В | 0.25h | 0.25h |
| 242 | 1.102.2 | вскрыть 2 зону и посмотреть какой тен (мойка) | 1h | 2026-08-31 09:00 A | 2026-08-31 10:00 A |  | 100% |  |  | start no earlier than 2026-09-02 09:00 | Некрасов А | 1h | 1h |
| 243 | 1.102.3 | осмотр состояния тенов/ планирование замены | 10min | 2026-08-27 09:00 A | 2026-08-27 09:10 A |  | 100% |  |  | start no earlier than 2026-08-27 09:00 | Бобренок В | 0.17h | 0.17h |
| 244 | 1.102.4 | выяснить статус поставки тенов из китая | 1h | 2026-08-24 09:00 A | 2026-08-24 10:00 A |  | 100% |  |  | start no earlier than 2026-08-24 09:00 | Шуранов Ю | 1h | 1h |
| 245 | 1.102.5 | замена заброкованных осмотром тенов | 3h? | 2026-09-11 09:00 A | 2026-09-11 12:00 A |  | 100% |  |  | start no earlier than 2026-09-11 09:00 | Тимофеев В | 3h | 3h |
| 246 | 1.103 | замена плата 485 в контроллере 2 линия | 1h | 2026-08-21 09:00 A | 2026-08-21 10:00 A |  | 100% |  |  | start no earlier than 2026-08-21 09:00 | Дедов В | 1h | 1h |
| 247 | 1.104 | перемонтаж частотный привод сух гидролизат | 2h | 2026-09-02 09:00 A | 2026-09-02 11:00 A |  | 100% |  |  | start no earlier than 2026-09-04 09:00 | Некрасов А; Дедов В | 4h | 4h |
| 248 | 1.105 | поменять светильник где вывозят готовую продукцию (с люлки) | 2h | 2026-08-31 09:00 A | 2026-08-31 11:00 A |  | 100% |  |  | start no earlier than 2026-08-31 09:00 | Тимофеев В; Бундин В | 4h | 4h |
| 249 | 1.106 | на нотис настроить кнопку, чтобы работала в цикле | 1h | 2026-08-20 09:00 A | 2026-08-20 10:00 A |  | 100% |  |  | start no earlier than 2026-08-20 09:00 | Дедов В | 1h | 1h |
| 250 | 1.107 | изготовление герметичной крышки под мойкой экструдера (объясню по телефону) занкрепить на анкера | 2h | 2026-08-19 08:00 A | 2026-08-19 11:00 A |  | 100% |  |  | start no earlier than 2026-08-19 08:00 | Бобренок В | 2h | 2h |
| 251 | 1.108 | **проверка пылесоса, почему не стартует (в слесарке)** | 1d? | 2026-08-25 09:00 A | 2026-08-25 18:00 A |  | 100% |  |  |  | Бобренок В | 16h | 16h |
| 252 | 1.108.1 | заказать двигатель и выяснить на гарантии он или нет | 1d? | 2026-08-25 09:00 A | 2026-08-25 18:00 A |  | 100% |  |  | start no earlier than 2026-08-25 08:00 | Шуранов Ю | 8h | 8h |
| 253 | 1.109 | ремонт свет в раздевалке | 30min | 2026-08-14 09:00 A | 2026-08-14 09:30 A |  | 100% |  |  | start no earlier than 2026-08-14 09:00 | Бундин В | 0.5h | 0.5h |
| 254 | 1.110 | стиральная машинка проверка насоса слива, разборка, фото шильдик. Не качает. | 2h | 2026-08-15 09:00 A | 2026-08-17 11:00 A |  | 100% |  |  | start no earlier than 2026-08-15 09:00 | Бундин В | 2h | 2h |

| ID | WBS | Task | Type | Duration | Start | Finish | Predecessors | Complete | Constraint | Resources | Work | Actual work |
| --- | --- | --- | --- | --- | --- | --- | --- | --- | --- | --- | --- | --- |
| 255 | 1.111 | **настройка пробники на толстую цветную пленку** |  | 9.38d? | 2026-08-14 09:00 A | 2026-08-27 12:00 A |  | 100% |  |  | 25.25h | 25.25h |
| 256 | 1.111.1 | тест пленки на пробнике с Луговских В в 11 00 |  | 1h | 2026-08-14 09:00 A | 2026-08-14 10:00 A |  | 100% | start no earlier than 2026-08-14 09:00 | Тимофеев В | 1h | 1h |
| 257 | 1.111.2 | установить протяжной ролик к турбе от ТЕКО 1.5 с синего,снять с синего примерка |  | 2h | 2026-08-17 09:00 A | 2026-08-17 11:00 A |  | 100% | start no earlier than 2026-08-17 09:00 | Тимофеев В | 2h | 2h |
| 258 | 1.111.3 | настройка пробника с режимом фотометки |  | 1h | 2026-08-27 09:00 A | 2026-08-27 10:00 A |  | 100% | start no earlier than 2026-08-27 09:00 | Дедов В | 1h | 1h |
| 259 | 1.111.4 | получить пневмоцилиндр |  | 15min | 2026-08-20 09:00 A | 2026-08-20 09:15 A |  | 100% | start no earlier than 2026-08-20 09:00 | Тимофеев В | 0.25h | 0.25h |
| 260 | 1.111.5 | изготовление крепления вспомогательной протяжки |  | 6h | 2026-08-21 09:00 A | 2026-08-21 16:00 A |  | 100% | start no earlier than 2026-08-21 09:00 | Тимофеев В | 6h | 6h |
| 261 | 1.111.6 | подключение частотника через реле от двигателя протяжки (спросить Константина) |  | 1d? | 2026-08-25 09:00 A | 2026-08-25 18:00 A |  | 100% | start no earlier than 2026-08-25 08:00 | Бундин В | 8h | 8h |
| 262 | 1.111.7 | настройка частотника для работы пробника |  | 3h | 2026-08-27 09:00 A | 2026-08-27 12:00 A |  | 100% | start no earlier than 2026-08-27 09:00 | Тимофеев В; Шуранов Ю | 6h | 6h |
| 263 | 1.111.8 | жалобы, что пробники бьют периодически током- проверить соединения, контакты и т.д. |  | 1h | 2026-08-26 08:00 A | 2026-08-26 10:00 A |  | 100% | start no earlier than 2026-08-26 08:00 | Бобренок В | 1h | 1h |
| 264 | 1.112 | настройка параметров ЧП сухой ГДЗ сбиты, переставлен с линии 2. Снял Слава, найти. Настройка в птц |  | 15min | 2026-08-20 09:00 A | 2026-08-20 09:15 A |  | 100% | start no earlier than 2026-08-20 09:00 | Дедов В | 0.25h | 0.25h |
| 265 | 1.113 | **ТЕКО ремонт кнопки, которую снял Бобренок В , вернуть то что снял с 3ц** |  | 19.12d | 2026-08-13 09:00 A | 2026-09-08 10:00 A |  | 100% |  |  | 2.75h | 2.75h |
| 266 | 1.113.1 | осмотр |  | 30min | 2026-08-13 09:00 A | 2026-08-13 09:30 A |  | 100% | start no earlier than 2026-08-13 09:00 | Домоводов К | 0.5h | 0.5h |
| 267 | 1.113.2 | заявка в ТЕКО платы |  | 30min | 2026-08-18 09:00 A | 2026-08-18 09:30 A | 266 | 100% | start no earlier than 2026-08-18 09:00 | Зорькин В | 0.5h | 0.5h |
| 268 | 1.113.3 | контроль поставки |  | 15min | 2026-09-04 09:00 A | 2026-09-04 09:15 A | 267FS+10d | 100% | start no earlier than 2026-09-04 09:00 | Зорькин В | 0.25h | 0.25h |
| 269 | 1.113.4 | монтаж платы на место |  | 1h | 2026-09-08 09:00 A | 2026-09-08 10:00 A | 268FS+1d | 100% | start no earlier than 2026-09-09 09:00 | Тимофеев В | 1h | 1h |
| 270 | 1.113.5 | Вернуть голову с восстановленной клавиатурой на НОТИС в 3 цех |  | 30min | 2026-09-08 09:00 A | 2026-09-08 09:30 A |  | 100% | start no earlier than 2026-09-09 09:00 | Тимофеев В | 0.5h | 0.5h |
| 271 | 1.114 | установить вент решетки на трассу кондиционера |  | 30min | 2026-08-12 09:00 A | 2026-08-12 09:30 A |  | 100% | start no earlier than 2026-08-12 09:00 | Труфанов А; Некрасов А | 1h | 1h |
| 272 | 1.115 | течь сливной трубы кондиционара править трассу |  | 2h | 2026-08-12 09:00 A | 2026-08-12 11:00 A |  | 100% | start no earlier than 2026-08-12 09:00 | Труфанов А; Некрасов А | 4h | 4h |
| 273 | 1.116 | слить конденсат и чистка фильтров, продуть радиаторы компрессора | manual | 2h | 2026-08-09 09:00 A | 2026-08-09 11:00 A |  | 100% | start no earlier than 2026-08-09 09:00 | Бундин В | 2h | 2h |
| 274 | 1.117 | заменить камеру над квадропаком (слева) -камера у нас в слесарке, взять в помощь оператора | manual | 1h | 2026-08-09 09:00 A | 2026-08-09 10:00 A |  | 100% | start no earlier than 2026-08-09 09:00 | Бундин В | 1h | 1h |
| 275 | 1.118 | дверь тяжело открывается в гидрализаторную (попробовать поправить, задевает металл-металл) |  | 1h | 2026-08-06 09:00 A | 2026-08-06 10:00 A |  | 100% | start no earlier than 2026-08-06 08:00 | Труфанов А | 1h | 1h |
| 276 | 1.119 | заменить плафон в душе | manual | 1h | 2026-08-06 09:00 A | 2026-08-06 10:00 A |  | 100% | start no earlier than 2026-08-06 09:00 | Бундин В | 1h | 1h |
| 277 | 1.120 | ТО пробники и Теко 0,4 (чистка тен, ножей, смазка) |  | 4h | 2026-08-05 08:00 A | 2026-08-05 13:00 A |  | 100% | start no earlier than 2026-08-05 08:00 | Макаревич А | 4h | 4h |
| 278 | 1.121 | **палетообмостчик монтаж в 1ц** |  | 62.62d | 2026-08-12 09:00 A | 2026-10-26 15:00 A |  | 100% |  |  | 16.25h | 16.25h |
| 279 | 1.121.1 | получить договор + счет |  | 1h | 2026-08-12 09:00 A | 2026-08-12 10:00 A |  | 100% | start no earlier than 2026-08-12 09:00 | Зорькин В | 1h | 1h |

| ID | WBS | Task | Type | Duration | Start | Finish | Predecessors | Complete | Actual finish | Constraint | Resources | Work | Actual work |
| --- | --- | --- | --- | --- | --- | --- | --- | --- | --- | --- | --- | --- | --- |
| 280 | 1.121.2 | **согласвоание договор** |  | 2.89d | 2026-08-12 10:00 A | 2026-08-17 09:05 A | 279 | 100% |  |  |  | 0.17h | 0.17h |
| 281 | 1.121.2.1 | передать Маше |  | 5min | 2026-08-12 10:00 A | 2026-08-12 10:05 A |  | 100% |  | start no earlier than 2026-08-12 09:00 | Домоводов К | 0.08h | 0.08h |
| 282 | 1.121.2.2 | контроль |  | 5min | 2026-08-17 09:00 A | 2026-08-17 09:05 A | 281FS+3d | 100% |  | start no earlier than 2026-08-17 09:00 | Домоводов К | 0.08h | 0.08h |
| 283 | 1.121.3 | оплата подать счет | milestone | 0d | 2026-08-12 09:00 A | 2026-08-12 09:00 A |  | 100% |  | start no earlier than 2026-08-12 09:00 | Домоводов К |  |  |
| 284 | 1.121.4 | доставка конетроль |  | 5min | 2026-09-01 09:00 A | 2026-09-01 09:05 A |  | 100% |  | start no earlier than 2026-09-01 09:00 | Зорькин В | 0.08h | 0.08h |
| 285 | 1.121.5 | прокинуть кабель для подключения обмотчика |  | 2h | 2026-10-26 09:00 A | 2026-10-26 11:00 A |  | 100% |  | start no earlier than 2026-10-26 09:00 | Тимофеев В; Николаев; Бундин В | 6h | 6h |
| 286 | 1.121.6 | монтаж |  | 3h | 2026-10-26 11:00 A | 2026-10-26 15:00 A | 285 | 100% |  | start no earlier than 2026-10-23 09:00 | Тимофеев В; Николаев; Бундин В | 9h | 9h |
| 287 | 1.122 | подключить розетку на правой ноге квадропака (отключить квадропак на 5 минут) |  | 2h | 2026-08-11 09:00 A | 2026-08-11 11:00 A |  | 100% |  | start no earlier than 2026-08-11 09:00 | Бобренок В | 2h | 2h |
| 288 | 1.123 | **перенос вентилятор охладителя линия2 в реверс, убрать шкаф** |  | 24.12d | 2026-08-18 09:00 A | 2026-09-16 10:00 A |  | 100% |  |  |  | 38.25h | 38.25h |
| 289 | 1.123.1 | проектирование рамы |  | 2d | 2026-08-19 09:00 A | 2026-08-20 18:00 A |  | 100% |  | start no earlier than 2026-08-19 09:00 | Зорькин В | 16h | 16h |
| 290 | 1.123.2 | чертеж рамы под вентилятор |  | 2h | 2026-08-18 09:00 A | 2026-08-18 11:00 A |  | 100% |  | start no earlier than 2026-08-18 09:00 | Зорькин В; Домоводов К | 4h | 4h |
| 291 | 1.123.3 | заявка вент фитинги |  | 1h | 2026-08-21 09:00 A | 2026-08-21 10:00 A | 290 | 100% |  | start no earlier than 2026-08-21 09:00 | Зорькин В | 1h | 1h |
| 292 | 1.123.4 | конроль поставки |  | 15min | 2026-09-09 09:00 A | 2026-09-09 09:15 A | 291FS+10d | 100% |  | start no earlier than 2026-09-09 09:00 | Зорькин В | 0.25h | 0.25h |
| 293 | 1.123.5 | сборка рама |  | 4h | 2026-09-07 09:00 A | 2026-09-07 13:00 A |  | 100% |  | start no earlier than 2026-09-07 09:00 | Некрасов А; Труфанов А | 8h | 8h |
| 294 | 1.123.6 | модернизация венттилятора/монтаж вентилляции |  | 4h | 2026-09-11 09:00 A | 2026-09-11 13:00 A | 293 | 100% |  | start no earlier than 2026-09-11 09:00 | Некрасов А; Труфанов А | 8h | 8h |
| 295 | 1.123.7 | Подключение улитки, монтаж щитка к стене |  | 1h | 2026-09-16 09:00 A | 2026-09-16 10:00 A |  | 100% |  | start no earlier than 2026-09-16 09:00 | Макаревич А | 1h | 1h |
| 296 | 1.124 | шум зл двигателя 2 линия / смазка |  | 1h | 2026-08-10 08:00 A | 2026-08-10 10:00 A |  | 100% |  | start no earlier than 2026-08-10 08:00 | Тимофеев В | 1h | 1h |
| 297 | 1.125 | натяжка транспортер №2 линия 2 |  | 2h | 2026-08-12 09:00 A | 2026-08-12 11:00 A |  | 100% |  | start no earlier than 2026-08-12 09:00 | Тимофеев В | 2h | 2h |
| 298 | 1.126 | монтаж- подключение внутреннего блока кондиционера |  | 2h | 2026-08-05 09:00 A | 2026-08-05 11:00 A |  | 100% |  | start no earlier than 2026-08-05 09:00 | Труфанов А; Тимофеев В | 4h | 4h |
| 299 | 1.127 | **теко 0,4 -восстановить или заменить блок для тепловухи** |  | 1.12d? | 2026-08-04 09:00 A | 2026-08-05 10:00 |  | 100% | 2026-08-05 18:00 |  | Макаревич А | 17h | 17h |
| 300 | 1.127.1 | проверить подключение транспортера и тепловуху |  | 1d? | 2026-08-05 09:00 A | 2026-08-05 18:00 A |  | 100% |  | start no earlier than 2026-08-05 09:00 | Шуранов Ю | 8h | 8h |
| 301 | 1.128 | замена перегоревших светильников, монтаж доп. Светильников (Шуранов- покажу) |  | 4h | 2026-08-05 09:00 A | 2026-08-05 13:00 A |  | 100% |  | start no earlier than 2026-08-12 09:00 | Труфанов А; Тимофеев В | 8h | 8h |
| 302 | 1.129 | включить мухоловку 1 линия экструдер | manual | 0.5h | 2026-08-02 09:00 A | 2026-08-02 09:30 A |  | 100% |  | start no earlier than 2026-08-02 09:00 | Бобренок В | 0.5h | 0.5h |
| 303 | 1.130 | пропадает питание на весах смесителя 2 линия- проверить | manual | 1h | 2026-08-01 09:00 A | 2026-08-01 10:00 A |  | 100% |  | start no earlier than 2026-08-01 09:00 | Бундин В | 1h | 1h |
| 304 | 1.131 | эксперимент с лейкой жиры |  | 2h | 2026-08-06 09:00 A | 2026-08-06 11:00 A |  | 100% |  | start no earlier than 2026-08-07 09:00 | Тимофеев В | 2h | 2h |
| 305 | 1.132 | камера над компрессором снять и поменять (камеры у нас в кабинете) |  | 1h | 2026-08-03 09:00 A | 2026-08-03 10:00 A |  | 100% |  | start no earlier than 2026-08-03 09:00 | Макаревич А; Тимофеев В | 2h | 2h |
| 306 | 1.133 | на мезонине смотрит на квадропак, поменять и сделать чуть ниже обзор |  | 1h | 2026-08-03 09:00 A | 2026-08-03 10:00 A |  | 100% |  | start no earlier than 2026-08-03 09:00 | Макаревич А; Тимофеев В | 2h | 2h |
| 307 | 1.134 | камера 1 линия повернуть чуть правее и приподнять |  | 1h | 2026-08-03 09:00 A | 2026-08-03 10:00 A |  | 100% |  | start no earlier than 2026-08-03 09:00 | Макаревич А; Тимофеев В | 2h | 2h |
| 308 | 1.135 | камера на углу, где вывозят готовую продукцию с люльки поменять (камеры у нас в кабинете) |  | 2h | 2026-08-03 09:00 A | 2026-08-03 11:00 A |  | 100% |  | start no earlier than 2026-08-03 09:00 | Макаревич А; Тимофеев В | 4h | 4h |
| 309 | 1.136 | повесить камеру над входом в фасовку, чтобы смотрела на коридор и как обрабатывают руки, монтаж кабеля |  | 3h | 2026-08-03 09:00 A | 2026-08-03 12:00 A |  | 100% |  | start no earlier than 2026-08-03 09:00 | Макаревич А; Тимофеев В | 6h | 6h |

| ID | WBS | Task | Type | Duration | Start | Finish | Predecessors | Complete | Constraint | Resources | Work | Actual work |
| --- | --- | --- | --- | --- | --- | --- | --- | --- | --- | --- | --- | --- |
| 310 | 1.137 | **снять камеру зона экструдера и повесить на жирах со стороны экструдера, монтаж кабель** |  | 0.12d | 2026-09-09 09:00 A | 2026-09-09 10:00 A |  | 100% |  |  | 2h | 2h |
| 311 | 1.137.1 | на мойке попробовать снять камеру |  | 1h | 2026-09-09 09:00 A | 2026-09-09 10:00 A |  | 100% | start no earlier than 2026-09-09 09:00 | Труфанов А; Некрасов А | 2h | 2h |
| 312 | 1.138 | открутить полочку на столе на жирах, сделать ребра жесткости |  | 1h | 2026-07-31 09:00 A | 2026-07-31 10:00 A |  | 100% | start no earlier than 2026-07-31 08:00 | Бундин В | 1h | 1h |
| 313 | 1.139 | слив конденсата с компрессора и продуть радиаторы и фильтры |  | 1h | 2026-07-31 08:00 A | 2026-07-31 10:00 A |  | 100% | start no earlier than 2026-07-31 08:00 | Тимофеев В | 1h | 1h |
| 314 | 1.140 | Ревизия головы от Нотис/заключение |  | 1h | 2026-07-27 08:00 A | 2026-07-27 10:00 A |  | 100% | start no earlier than 2026-07-27 08:00 | Дедов В | 1h | 1h |
| 315 | 1.141 | Снять клавиатуру с головы нотис, подготовить ее к замене лежит на верстаке |  | 30min | 2026-07-29 08:00 A | 2026-07-29 09:30 A |  | 100% | start no earlier than 2026-07-29 08:00 | Дедов В | 0.5h | 0.5h |
| 316 | 1.142 | Ремонт клавиатуры от головы нотис, клаву получить на складе, голову взять у нас в кабинете |  | 1h | 2026-09-01 09:00 A | 2026-09-01 10:00 A |  | 100% | start no earlier than 2026-09-01 08:00 | Бундин В | 1h | 1h |
| 317 | 1.143 | **ремонт кондиционер зона фасовки** |  | 0.5d | 2026-07-16 09:00 A | 2026-07-16 13:00 A |  | 100% |  |  | 6h | 6h |
| 318 | 1.143.1 | демонтаж внутреннего блока |  | 2h | 2026-07-16 09:00 A | 2026-07-16 11:00 A |  | 100% | start no earlier than 2026-07-16 09:00 | Некрасов А; Труфанов А | 4h | 4h |
| 319 | 1.143.2 | разборка, отделить испаритель от рамы |  | 1h | 2026-07-16 11:00 A | 2026-07-16 12:00 A | 318 | 100% | start no earlier than 2026-07-15 09:00 | Бундин В | 1h | 1h |
| 320 | 1.143.3 | опресовка в воде |  | 1h | 2026-07-16 12:00 A | 2026-07-16 13:00 A | 319 | 100% | start no earlier than 2026-07-15 09:00 | Бундин В | 1h | 1h |
| 321 | 1.144 | редуктор конвейера выгрузки пакетов квадропак -> обеспечить гибкое соединеине к раме, жесткое будет ломать либо вал либо редутор |  | 2h | 2026-07-16 09:00 A | 2026-07-16 11:00 A |  | 100% | start no earlier than 2026-07-16 09:00 | Некрасов А | 2h | 2h |
| 322 | 1.145 | монтаж светильник под площадку дозатора квадропака |  | 4h | 2026-07-10 09:00 A | 2026-07-10 13:00 A |  | 100% | start no earlier than 2026-07-10 09:00 | Бобренок В | 4h | 4h |
| 323 | 1.146 | **замена вентилятор вытяжка с экструдеров** |  | 2.25d | 2026-07-13 09:00 A | 2026-07-15 11:00 A |  | 100% |  |  | 13h | 13h |
| 324 | 1.146.1 | подключение воздуховоды |  | 4h | 2026-07-13 09:00 A | 2026-07-13 13:00 A |  | 100% | start no earlier than 2026-07-13 09:00 | Некрасов А; Бундин В | 8h | 8h |
| 325 | 1.146.2 | установить крыльчатку на мотор |  | 1h | 2026-07-14 09:00 A | 2026-07-14 10:00 A |  | 100% | start no earlier than 2026-07-14 08:00 | Труфанов А | 1h | 1h |
| 326 | 1.146.3 | устарнить причину вибрации мотора |  | 2h | 2026-07-15 09:00 A | 2026-07-15 11:00 A |  | 100% | start no earlier than 2026-07-15 09:00 | Некрасов А; Труфанов А | 4h | 4h |
| 327 | 1.147 | **сборка дозатор на квадропак** |  | 84.25d | 2026-07-09 08:00 A | 2026-10-22 11:00 A |  | 100% |  |  | 74.83h | 74.83h |
| 328 | 1.147.1 | тест сублиматов №2 1,5 |  | 6h | 2026-10-21 09:00 A | 2026-10-21 16:00 A |  | 100% | start no earlier than 2026-10-21 09:00 | Зорькин В; Труфанов А | 12h | 12h |
| 329 | 1.147.2 | тест сублиматов №2 0,4 |  | 2h | 2026-10-22 09:00 A | 2026-10-22 11:00 A |  | 100% | start no earlier than 2026-10-22 08:00 | Зорькин В; Труфанов А | 4h | 4h |
| 330 | 1.147.3 | установить переключатель блокировки сброса дозатором |  | 30min | 2026-08-15 09:00 A | 2026-08-17 09:30 A |  | 100% | start no earlier than 2026-08-15 09:00 | Труфанов А | 0.5h | 0.5h |
| 331 | 1.147.4 | упорядочить схему |  | 30min | 2026-08-15 09:00 A | 2026-08-17 09:30 A |  | 100% | start no earlier than 2026-08-15 09:00 | Труфанов А | 0.5h | 0.5h |
| 332 | 1.147.5 | транспортировка дозатора в слесарку |  | 1h | 2026-08-04 08:00 A | 2026-08-04 10:00 A |  | 100% | start no earlier than 2026-08-04 08:00 | Труфанов А; Тимофеев В | 2h | 2h |
| 333 | 1.147.6 | установить розетку для дозатора. Вывод кабель сверлить платформу, что бы он был не под ногами и удобен при уборке |  | 2h | 2026-07-09 08:00 A | 2026-07-09 11:00 A |  | 100% | start no earlier than 2026-07-09 08:00 | Бобренок В | 2h | 2h |
| 334 | 1.147.7 | закрепить монитор фото Зорькин |  | 2h | 2026-07-09 08:00 A | 2026-07-09 11:00 A |  | 100% | start no earlier than 2026-07-09 08:00 | Бобренок В | 2h | 2h |
| 335 | 1.147.8 | подключение дозатора к машине / поиск кабеля в 3 цехе / изучение документации |  | 4h | 2026-07-14 09:00 A | 2026-07-14 13:00 A |  | 100% | start no earlier than 2026-07-14 09:00 | Труфанов А | 4h | 4h |
| 336 | 1.147.9 | подключить реле аварии дозатора паралельно датчику отсутствия пакета квадропака (схема прилагается) |  | 1h | 2026-08-12 09:00 A | 2026-08-12 10:00 A | 335 | 100% | start no earlier than 2026-08-12 09:00 | Труфанов А | 1h | 1h |
| 337 | 1.147.10 | калибровка весов и разгон наполнения, тестирование работы |  | 4h | 2026-08-12 09:00 A | 2026-08-12 13:00 A |  | 100% | start no earlier than 2026-08-12 09:00 | Труфанов А | 4h | 4h |
| 338 | 1.147.11 | монтаж кабель выравнивания потенциалов площадка дозатора и площадка квадропака |  | 30min | 2026-08-15 09:00 A | 2026-08-17 09:30 A |  | 100% | start no earlier than 2026-08-15 09:00 | Труфанов А | 0.5h | 0.5h |
| 339 | 1.147.12 | контроль поставки маткериал | milestone | 0d | 2026-08-27 09:00 A | 2026-08-27 09:00 A |  | 100% | start no earlier than 2026-08-27 09:00 | Зорькин В |  |  |
| 340 | 1.147.13 | тестирование весов / разгон |  | 2h | 2026-09-14 09:00 A | 2026-09-14 11:00 A | 339 | 100% | start no earlier than 2026-09-14 09:00 | Зорькин В | 2h | 2h |
| 341 | 1.147.14 | подключить синхронизацию пуска дозатора паралельно катушки открытия заслонки квадропака |  | 4h | 2026-08-04 11:00 A | 2026-08-04 16:00 A | 336 | 100% | start no earlier than 2026-07-16 09:00 | Труфанов А | 4h | 4h |
| 342 | 1.147.15 | монтаж перила на площадку - подготовка |  | 2h | 2026-08-14 09:00 A | 2026-08-14 11:00 A |  | 100% | start no earlier than 2026-08-14 09:00 | Тимофеев В | 2h | 2h |
| 343 | 1.147.16 | монтаж перила на площадку |  | 2h | 2026-08-17 09:00 A | 2026-08-17 11:00 A |  | 100% | start no earlier than 2026-08-17 09:00 | Тимофеев В; Бобренок В | 4h | 4h |
| 344 | 1.147.17 | сверлить для крепления перил |  | 2h | 2026-09-04 09:00 A | 2026-09-04 11:00 A | 340 | 100% | start no earlier than 2026-09-04 09:00 | Макаревич А | 2h | 2h |
| 345 | 1.147.18 | закрыть зад крышку |  | 20min | 2026-09-13 09:00 A | 2026-09-13 09:20 A |  | 100% | start no earlier than 2026-09-13 09:00 | Дедов В | 0.33h | 0.33h |
| 346 | 1.147.19 | сборка дозатор |  | 2h | 2026-09-25 09:00 A | 2026-09-25 11:00 A |  | 100% | start no earlier than 2026-09-28 09:00 | Труфанов А; Некрасов А | 4h | 4h |
| 347 | 1.147.20 | тест компонентов |  | 1h | 2026-09-23 09:00 A | 2026-09-23 10:00 A |  | 100% | start no earlier than 2026-09-23 09:00 | Зорькин В | 1h | 1h |
| 348 | 1.147.21 | установить на пружины раму дозатора + квеличить её массу |  | 4h | 2026-09-25 09:00 A | 2026-09-25 13:00 A |  | 100% | start no earlier than 2026-09-25 08:00 | Некрасов А; Труфанов А | 8h | 8h |
| 349 | 1.147.22 | покупка за нал / найти доп пружины |  | 1h | 2026-09-28 09:00 A | 2026-09-28 10:00 A |  | 100% | start no earlier than 2026-09-28 09:00 | Зорькин В | 1h | 1h |
| 350 | 1.147.23 | увеличить доп пружины, сжались ноль |  | 4h | 2026-10-01 09:00 A | 2026-10-01 13:00 A |  | 100% | start no earlier than 2026-10-02 09:00 | Некрасов А; Труфанов А | 8h | 8h |
| 351 | 1.147.24 | монтаж кнопка дозатор ОН/ОФФ |  | 1h | 2026-09-30 09:00 A | 2026-09-30 10:00 A | 345 | 100% | start no earlier than 2026-09-30 09:00 | Труфанов А | 1h | 1h |
| 352 | 1.147.25 | закрыть металлом пустые места между площадками квадропак и дозатор |  | 2h | 2026-10-07 09:00 A | 2026-10-07 11:00 A | 344 | 100% | start no earlier than 2026-10-07 09:00 | Тимофеев В | 2h | 2h |
| 353 | 1.147.26 | Сделать перегородки в бункер дозатора для увеличения объема секций |  | 3h | 2026-09-02 09:00 A | 2026-09-02 12:00 A |  | 100% | start no earlier than 2026-09-04 09:00 | Тимофеев В | 3h | 3h |
| 354 | 1.148 | навести сортиировка / порядок пандус 1ц |  | 4h | 2026-07-10 09:00 A | 2026-07-10 13:00 A |  | 100% | start no earlier than 2026-07-10 09:00 | Тимофеев В; Амрулин Р | 7h | 7h |

| ID | WBS | Task | Type | Duration | Start | Finish | Predecessors | Complete | Remaining | Actual start | Actual finish | Total slack | Free slack | Constraint | Resources | Work | Actual work |
| --- | --- | --- | --- | --- | --- | --- | --- | --- | --- | --- | --- | --- | --- | --- | --- | --- | --- |
| 355 | 1.149 | **Кондиционер зоны экструдера** |  | 0.5d | 2026-07-07 09:00 A | 2026-07-07 13:00 A |  | 100% |  |  |  |  |  |  |  | 4h | 4h |
| 356 | 1.149.1 | Чистка сливной магистрали |  | 4h | 2026-07-07 09:00 A | 2026-07-07 13:00 A |  | 100% |  |  |  |  |  | start no earlier than 2026-07-07 09:00 | Бундин В | 4h | 4h |
| 357 | 1.150 | **установить датчик давления на экструдер** |  | 49.53d | 2026-07-06 08:00 A | 2026-09-10 14:15 |  | 68% | 15.89d |  |  | 141.06d |  |  |  | 15.25h | 11h |
| 358 | 1.150.1 | контроль поставка фитинги |  | 15min | 2026-09-10 09:00 | 2026-09-10 09:15 |  |  |  |  |  | 141.06d | 0d | start no earlier than 2026-09-10 09:00 | Зорькин В | 0.25h |  |
| 359 | 1.150.2 | монтаж кронштейны для фиксации датчикоа давления 1+2 линия |  | 2h | 2026-07-10 09:00 A | 2026-07-10 11:00 A |  | 100% |  |  |  |  |  | start no earlier than 2026-07-10 09:00 | Макаревич А; Некрасов А | 4h | 4h |
| 360 | 1.150.3 | установить датчики давления через гидравлические шланги |  | 2h | 2026-07-06 08:00 A | 2026-07-06 11:00 A |  | 100% |  |  |  |  |  | start no earlier than 2026-07-06 08:00 | Дедов В | 2h | 2h |
| 361 | 1.150.4 | доработка кожух нож узла для закрытия |  | 2h | 2026-07-07 09:00 A | 2026-07-07 11:00 A |  | 100% |  |  |  |  |  | start no earlier than 2026-07-07 09:00 | Бобренок В | 2h | 2h |
| 362 | 1.150.5 | Прокинуть кабель ШВВП 2х0,75 от датчиков давления до регистраторов, сделать по красоте. |  | 3h | 2026-07-10 09:00 A | 2026-07-10 12:00 A |  | 100% |  |  |  |  |  | start no earlier than 2026-07-10 09:00 | Бобренок В | 3h | 3h |
| 363 | 1.150.6 | подключение датчиков давления к регистратору |  | 4h | 2026-09-10 09:15 | 2026-09-10 14:15 | 358 |  |  |  |  | 141.06d |  | start no earlier than 2026-09-02 09:00 | Домоводов К | 4h |  |
| 364 | 1.151 | печь №1 ревизия/замена перемычек |  | 4h | 2026-07-04 09:00 A | 2026-07-06 13:00 A |  | 100% |  |  |  |  |  | start no earlier than 2026-07-04 09:00 | Макаревич А | 4h | 4h |
| 365 | 1.152 | печь №2 ревизия/замена перемычек |  | 2h | 2026-07-16 09:00 A | 2026-07-16 11:00 A |  | 100% |  |  |  |  |  | start no earlier than 2026-07-16 09:00 | Бобренок В | 2h | 2h |
| 366 | 1.153 | **заменить амперметры неиспрвные на ШУ 1 и 2 линия (они на складе приехали сегодня новые посмотреть фото в выдаче)** |  | 1h? | 2026-09-04 09:00 | 2026-09-04 10:00 |  | 100% |  | 2026-09-05 09:00 | 2026-09-11 13:00 |  |  |  |  | 6h | 6h |
| 367 | 1.153.1 | монтаж - оказалить не те |  | 2h | 2026-09-05 09:00 A | 2026-09-05 11:00 A |  | 100% |  |  |  |  |  | start no earlier than 2026-09-05 09:00 | Дедов В | 2h | 2h |
| 368 | 1.153.2 | контроль датч тока | milestone | 0d | 2026-09-09 09:00 A | 2026-09-09 09:00 A |  | 100% |  |  |  |  |  | start no earlier than 2026-09-09 09:00 | Зорькин В |  |  |
| 369 | 1.153.3 | монтаж датчиковтока на 2л |  | 4h | 2026-09-11 09:00 A | 2026-09-11 13:00 A |  | 100% |  |  |  |  |  | start no earlier than 2026-09-11 09:00 | Макаревич А | 4h | 4h |
| 370 | 1.154 | **ставим 2 частотника на вентиляторы вытяжки с печек №1 и 2** |  | 0.5d | 2026-07-02 09:00 A | 2026-07-02 13:00 A |  | 100% |  |  |  |  |  |  |  | 4h | 4h |
| 371 | 1.154.1 | подключение к улиткам вытяжки 1 и 2 линия (помошника дадим) |  | 4h | 2026-07-02 09:00 A | 2026-07-02 13:00 A |  | 100% |  |  |  |  |  | start no earlier than 2026-07-02 09:00 | Тимофеев В | 4h | 4h |
| 372 | 1.155 | подключить частотный привод вентилятор на площадке жиротопки |  | 4h | 2026-07-14 09:00 A | 2026-07-14 13:00 A |  | 100% |  |  |  |  |  | start no earlier than 2026-07-14 09:00 | Дедов В | 4h | 4h |
| 373 | 1.156 | установка частотника для улитку в жиротопке (по телефону расскажу) |  | 4h | 2026-07-02 09:00 A | 2026-07-02 13:00 A |  | 100% |  |  |  |  |  | start no earlier than 2026-07-02 09:00 | Дедов В | 4h | 4h |
| 374 | 1.157 | заменить шнеки и гильзы на 2 линии (ставим усиленные, 2 гильзы) по уровню (операторы помогут) | manual | 10h | 2026-07-05 09:00 A | 2026-07-06 11:00 A |  | 100% |  |  |  |  |  | start no earlier than 2026-07-05 09:00 | Бундин В | 10h | 10h |
| 375 | 1.158 | **поменять фильтрующую ткань на фильтрах кондиционеров 1 цех** |  | 0.25d | 2026-07-01 09:00 A | 2026-07-01 11:00 A |  | 100% |  |  |  |  |  |  |  | 4h | 4h |
| 376 | 1.158.1 | установка фильтров закрываем внутренние блоки |  | 2h | 2026-07-01 09:00 A | 2026-07-01 11:00 A |  | 100% |  |  |  |  |  | start no earlier than 2026-07-01 09:00 | Макаревич А; Некрасов А | 4h | 4h |
| 377 | 1.159 | изготовление кронштейна для установки вентилятора крепим на место в зоне экструдера |  | 2h | 2026-06-30 09:00 A | 2026-06-30 11:00 A |  | 100% |  |  |  |  |  | start no earlier than 2026-06-30 09:00 | Некрасов А; Тимофеев В | 4h | 4h |
| 378 | 1.160 | снять на всех валах барабанов колеса, будем покрывать полиуретаном |  | 3h | 2026-06-29 09:00 A | 2026-06-29 12:00 A |  | 100% |  |  |  |  |  | start no earlier than 2026-06-29 09:00 | Бундин В | 3h | 3h |
| 379 | 1.161 | ревизия шестеренок питателя 2 линия, если нужно замена с зип- питатель синий склад |  | 3h | 2026-06-29 09:00 A | 2026-06-29 12:00 A |  | 100% |  |  |  |  |  | start no earlier than 2026-06-29 09:00 | Бундин В | 3h | 3h |
| 380 | 1.162 | повесить полочки у ОТК в кабинете- крепеж по гипсокортону у меня на столе |  | 1h | 2026-06-26 09:00 A | 2026-06-26 10:00 A |  | 100% |  |  |  |  |  | start no earlier than 2026-06-26 09:00 | Тимофеев В; Дедов В | 2h | 2h |
| 381 | 1.163 | нормально прикрутить светильник на стойке со сканером QR- кодов на фасовке, если нужно заменить на другой | manual | 2h | 2026-07-03 09:00 A | 2026-07-03 11:00 A |  | 100% |  |  |  |  |  | start no earlier than 2026-07-03 09:00 | Макаревич А | 2h | 2h |
| 382 | 1.164 | прикрутить розетку возле ШУ приточки |  | 1h | 2026-07-04 09:00 A | 2026-07-06 10:00 A |  | 100% |  |  |  |  |  | start no earlier than 2026-07-04 09:00 | Дедов В | 1h | 1h |
| 383 | 1.165 | заменить светильник 50Вт на жиротопке | manual | 2h | 2026-06-27 09:00 A | 2026-06-27 11:00 A |  | 100% |  |  |  |  |  | start no earlier than 2026-06-27 09:00 | Дедов В | 2h | 2h |
| 384 | 1.166 | мойка внутрених и внешних блоков керхером |  | 4h | 2026-06-24 09:00 A | 2026-06-24 13:00 A |  | 100% |  |  |  |  |  | start no earlier than 2026-06-24 09:00 | Тимофеев В; Дедов В | 8h | 8h |
| 385 | 1.167 | 1 линия средняя зона печи 115А |  | 2h | 2026-07-01 09:00 A | 2026-07-01 11:00 A |  | 100% |  |  |  |  |  | start no earlier than 2026-07-01 09:00 | Некрасов А | 2h | 2h |
| 386 | 1.168 | продуть внешний блок кондиционера (посередине) |  | 2h | 2026-06-24 09:00 A | 2026-06-24 11:00 A |  | 100% |  |  |  |  |  | start no earlier than 2026-06-24 09:00 | Тимофеев В | 2h | 2h |
| 387 | 1.169 | слить конденсат и продуть радиаторы на компрессоре |  | 1h | 2026-06-22 09:00 A | 2026-06-22 10:00 A |  | 100% |  |  |  |  |  | start no earlier than 2026-06-22 08:00 | Бундин В | 1h | 1h |
| 388 | 1.170 | взять ключи на складе и повесить возле каждого щитка | manual | 1h | 2026-07-05 09:00 A | 2026-07-05 10:00 A |  | 100% |  |  |  |  |  | start no earlier than 2026-07-05 09:00 | Бундин В | 1h | 1h |
| 389 | 1.171 | заменить монтажную коробку- пускатели улиток, зона экструдера | manual | 1h | 2026-06-30 09:00 A | 2026-06-30 10:00 A |  | 100% |  |  |  |  |  | start no earlier than 2026-06-30 09:00 | Бундин В | 1h | 1h |
| 390 | 1.172 | герметизация стыков в душевой женской, потечка воды | manual | 1h | 2026-06-21 09:00 A | 2026-06-21 10:00 A |  | 100% |  |  |  |  |  | start no earlier than 2026-06-21 09:00 | Бундин В | 1h | 1h |

| ID | WBS | Task | Duration | Start | Finish | Predecessors | Complete | Actual start | Actual finish | Constraint | Resources | Work | Actual work |
| --- | --- | --- | --- | --- | --- | --- | --- | --- | --- | --- | --- | --- | --- |
| 391 | 1.173 | **вернуть колбу уровня подачи воды на 2 линию** | 1h? | 2026-06-26 09:00 | 2026-06-26 10:00 |  | 100% | 2026-06-29 09:00 | 2026-06-29 18:00 |  |  | 8h | 8h |
| 392 | 1.173.1 | найти колбу | 1d? | 2026-06-29 09:00 A | 2026-06-29 18:00 A |  | 100% |  |  | start no earlier than 2026-06-29 09:00 | Шуранов Ю | 8h | 8h |
| 393 | 1.174 | отключить кондеры и продуть внешние блоки кондиционеров 1 ц. | 2h | 2026-06-20 09:00 A | 2026-06-22 11:00 A |  | 100% |  |  | start no earlier than 2026-06-20 09:00 | Бундин В | 2h | 2h |
| 394 | 1.175 | **померить верхний воздуховод и трассу для подключения новой улитки** | 1d? | 2026-06-22 09:00 A | 2026-06-22 18:00 A |  | 100% |  |  |  | Тимофеев В; Зорькин В | 24h | 24h |
| 395 | 1.175.1 | заказать переходник | 1d? | 2026-06-22 09:00 A | 2026-06-22 18:00 A |  | 100% |  |  | start no earlier than 2026-06-22 08:00 | Зорькин В | 8h | 8h |
| 396 | 1.176 | слив конденсата с компрессора и продуть радиаторы и фильтры | 1h | 2026-06-14 09:00 A | 2026-06-15 10:00 A |  | 100% |  |  | start no earlier than 2026-06-14 09:00 | Бобренок В | 1h | 1h |
| 397 | 1.177 | **закрепить редуктор к отводящему транспортеру** | 1d? | 2026-06-17 09:00 A | 2026-06-17 18:00 A |  | 100% |  |  |  | Некрасов А | 16h | 16h |
| 398 | 1.177.1 | сделать надежное крепление на мойке | 1d? | 2026-06-17 09:00 A | 2026-06-17 18:00 A |  | 100% |  |  | start no earlier than 2026-06-17 09:00 | Бундин В | 8h | 8h |
| 399 | 1.178 | заменить сальник на вакууматоре (редуктор) | 1h | 2026-06-11 09:00 A | 2026-06-11 10:00 A |  | 100% |  |  | start no earlier than 2026-06-11 09:00 | Тимофеев В | 1h | 1h |
| 400 | 1.179 | законтрогаить шпильки-ножки запайщиков | 1h | 2026-06-12 09:00 A | 2026-06-12 10:00 A |  | 100% |  |  | start no earlier than 2026-06-12 09:00 | Бундин В | 1h | 1h |
| 401 | 1.180 | настроить подачу масла на квадропаке по пневмо системе (спросить у Дедова) | 1h | 2026-06-10 09:00 A | 2026-06-10 10:00 A |  | 100% |  |  | start no earlier than 2026-06-10 09:00 | Труфанов А | 1h | 1h |
| 402 | 1.181 | **проверить давление в гидроаккумуляторе водоподготовки** | 0.25d | 2026-06-10 09:00 A | 2026-06-10 11:00 A |  | 100% |  |  |  | Дедов В | 4h | 4h |
| 403 | 1.181.1 | замена мембраны | 2h | 2026-06-10 09:00 A | 2026-06-10 11:00 A |  | 100% |  |  | start no earlier than 2026-06-10 09:00 | Дедов В | 2h | 2h |
| 404 | 1.182 | **готовить в зип сетку оборотную для печей (нижняя)** | 0.5d | 2026-06-09 09:00 A | 2026-06-09 13:00 A |  | 100% |  |  |  |  | 4.5h | 4.5h |
| 405 | 1.182.1 | проверка материал | 30min | 2026-06-09 09:00 A | 2026-06-09 09:30 A |  | 100% |  |  | start no earlier than 2026-06-09 09:00 | Тимофеев В | 0.5h | 0.5h |
| 406 | 1.182.2 | сборка | 4h | 2026-06-09 09:00 A | 2026-06-09 13:00 A |  | 100% |  |  | start no earlier than 2026-06-09 09:00 | Тимофеев В | 4h | 4h |
| 407 | 1.183 | подключить частотный привод насос жир 2 линия/ при остановке | 2h | 2026-06-07 09:00 A | 2026-06-08 11:00 A |  | 100% |  |  | start no earlier than 2026-06-07 09:00 | Дедов В | 2h | 2h |
| 408 | 1.184 | **жиротопка текет сальник насоса** | 36.03d? | 2026-06-28 09:00 A | 2026-08-18 09:15 A |  | 100% |  |  |  |  | 18.5h | 18.5h |
| 409 | 1.184.1 | замена насос из зип | 1h | 2026-06-28 09:00 A | 2026-06-29 10:00 A |  | 100% |  |  | start no earlier than 2026-06-28 09:00 | Дедов В | 1h | 1h |
| 410 | 1.184.2 | замена сальник на снятом насосе | 1h | 2026-06-28 10:00 A | 2026-06-29 10:00 A | 409 | 100% |  |  | start no earlier than 2026-06-17 09:00 | Дедов В | 1h | 1h |
| 411 | 1.184.3 | заказать | 1d? | 2026-06-29 09:00 A | 2026-06-29 18:00 A |  | 100% |  |  | start no earlier than 2026-06-29 09:00 | Шуранов Ю | 8h | 8h |
| 412 | 1.184.4 | ревизия прогресса утечки | 15min | 2026-08-05 09:00 A | 2026-08-05 09:15 A |  | 100% |  |  | start no earlier than 2026-08-05 09:00 | Дедов В | 0.25h | 0.25h |
| 413 | 1.184.5 | контроль наличия сальника | 15min | 2026-08-18 09:00 A | 2026-08-18 09:15 A |  | 100% |  |  | start no earlier than 2026-08-18 09:00 | Шуранов Ю | 0.25h | 0.25h |
| 414 | 1.184.6 | замена сальника | 1d? | 2026-08-05 09:00 A | 2026-08-05 18:00 A |  | 100% |  |  | start no earlier than 2026-08-05 09:00 | Дедов В | 8h | 8h |
| 415 | 1.185 | ремонт весов напольный (палетные) проверить кабель на обрыв | 3h | 2026-06-11 09:00 A | 2026-06-11 12:00 A |  | 100% |  |  | start no earlier than 2026-06-11 09:00 | Дедов В | 3h | 3h |
| 416 | 1.186 | печь №2 проверка токов, тен, замена | 2h | 2026-06-04 09:00 A | 2026-06-04 11:00 A |  | 100% |  |  | start no earlier than 2026-06-04 09:00 | Некрасов А; Бундин В | 4h | 4h |
| 417 | 1.187 | изготовление шторки после приемного лотка циклона | 2h | 2026-06-04 09:00 A | 2026-06-04 11:00 A |  | 100% |  |  | start no earlier than 2026-06-04 09:00 | Бундин В | 2h | 2h |

| ID | WBS | Task | Type | Duration | Start | Finish | Predecessors | Complete | Remaining | Total slack | Free slack | Constraint | Resources | Work | Actual work |
| --- | --- | --- | --- | --- | --- | --- | --- | --- | --- | --- | --- | --- | --- | --- | --- |
| 418 | 1.188 | **на аппликаторе настроить печать QR-кода на пакет, чтобы не размазывало (по тел. Объясню)** |  | 3.12d | 2026-06-04 09:00 A | 2026-06-09 10:00 A |  | 100% |  |  |  |  |  | 2h | 2h |
| 419 | 1.188.1 | тест (подключить доп. Датчик -настроить печать без размытия, картридж находиться у Луговских подписанный) |  | 1h | 2026-06-04 09:00 A | 2026-06-04 10:00 A |  | 100% |  |  |  | start no earlier than 2026-06-04 09:00 | Дедов В | 1h | 1h |
| 420 | 1.188.2 | тест |  | 1h | 2026-06-09 09:00 A | 2026-06-09 10:00 A |  | 100% |  |  |  | start no earlier than 2026-06-09 09:00 | Тимофеев В | 1h | 1h |
| 421 | 1.189 | целкает аппликатор -разобраться, устранить |  | 1h | 2026-06-03 08:00 A | 2026-06-03 10:00 A |  | 100% |  |  |  | start no earlier than 2026-06-03 08:00 | Дедов В | 1h | 1h |
| 422 | 1.190 | **установить резервную трубку/штангу с форсункой на подачу жира** |  | 31d | 2026-09-08 09:00 A | 2026-10-09 18:00 |  | 10% | 27.9d | 112.59d |  |  |  | 10h | 1h |
| 423 | 1.190.1 | проект-схема разработать |  | 1h | 2026-09-08 09:00 A | 2026-09-08 10:00 A |  | 100% |  |  |  | start no earlier than 2026-09-08 09:00 | Домоводов К | 1h | 1h |
| 424 | 1.190.2 | разработать спецкронштейн крепления 4х трубок |  | 1h | 2026-09-10 09:00 | 2026-09-10 10:00 |  |  |  | 132.47d | 19.88d | start no earlier than 2026-09-10 09:00 | Домоводов К | 1h |  |
| 425 | 1.190.3 | монтаж спец кронштенна |  | 1h | 2026-10-01 09:00 | 2026-10-01 10:00 | 424FS+1d |  |  | 112.59d | 0d | start no earlier than 2026-10-01 09:00 | Тимофеев В | 1h |  |
| 426 | 1.190.4 | заявка фитинги / тройники / краны / трубка |  | 1h | 2026-10-01 10:00 | 2026-10-01 11:00 | 423FS+1d, 425 |  |  | 112.59d | 0d | start no earlier than 2026-06-03 08:00 | Зорькин В | 1h |  |
| 427 | 1.190.5 | доставка контроль | milestone | 0d | 2026-10-07 11:00 | 2026-10-07 11:00 | 426FS+5d |  |  | 112.59d | 0d | start no earlier than 2026-06-03 08:00 | Зорькин В |  |  |
| 428 | 1.190.6 | сборка в мастерской |  | 4h | 2026-10-08 11:00 | 2026-10-08 16:00 | 427FS+1d |  |  | 112.59d | 0d | start no earlier than 2026-06-15 09:00 | Тимофеев В | 4h |  |
| 429 | 1.190.7 | монтаж на линию |  | 2h | 2026-10-09 16:00 | 2026-10-09 18:00 | 428FS+1d |  |  | 112.59d |  | start no earlier than 2026-06-03 08:00 | Тимофеев В | 2h |  |
| 430 | 1.191 | **установить автоматику запуска шнека + смеситель по датчику уровня сырья в бункере экструдера** |  | 26d? | 2026-11-02 09:00 A | 2026-12-01 18:00 |  |  | 25.89d? | 70.59d |  |  |  | 19.17h | 0.08h |
| 431 | 1.191.1 | разработка схема / компановка (составить список материалов) |  | 1h | 2026-11-02 09:00 | 2026-11-02 10:00 |  |  |  | 96.22d | 0d | start no earlier than 2026-11-02 09:00 | Дедов В | 1h |  |
| 432 | 1.191.2 | заявка датчики / пускатели / эл щит |  | 2h | 2026-11-02 10:00 | 2026-11-02 12:00 | 431 |  |  | 96.22d |  | start no earlier than 2026-06-04 09:00 | Домоводов К | 2h |  |
| 433 | 1.191.3 | доставка контроль |  | 5min | 2026-11-09 12:00 A | 2026-11-09 12:05 A | 432FS+7d | 100% |  |  |  | start no earlier than 2026-06-03 08:00 | Зорькин В | 0.08h | 0.08h |
| 434 | 1.191.4 | контроль поставки |  | 5min | 2026-11-10 12:05 | 2026-11-10 12:10 | 433FS+1d |  |  | 86.2d | 15.6d | start no earlier than 2026-06-03 08:00 | Зорькин В | 0.08h |  |
| 435 | 1.191.5 | сборка ШУ |  | 1d? | 2026-11-30 09:00 | 2026-11-30 18:00 | 434 |  |  | 70.59d | 0d | start no earlier than 2026-11-30 09:00 | Дедов В | 8h |  |
| 436 | 1.191.6 | монтаж в линию |  | 1d? | 2026-12-01 09:00 | 2026-12-01 18:00 | 435 |  |  | 70.59d |  | start no earlier than 2026-06-03 08:00 | Дедов В | 8h |  |
| 437 | 1.192 | поставить на двигатели накопительных столов тепловые реле |  | 2h | 2026-06-15 09:00 | 2026-06-15 11:00 |  |  |  | 205.34d |  | start no earlier than 2026-06-15 09:00 | Дедов В | 2h |  |
| 438 | 1.193 | влагоотделитель крышки загрузки квадропак треснул- замена |  | 1h | 2026-06-10 09:00 | 2026-06-10 10:00 |  |  |  | 208.47d |  | start no earlier than 2026-06-10 09:00 | Дедов В | 1h |  |
| 439 | 1.194 | установка ПЧ на насос жира 2 линия |  | 2h | 2026-06-02 09:00 A | 2026-06-02 11:00 A |  | 100% |  |  |  | start no earlier than 2026-06-02 09:00 | Дедов В | 2h | 2h |
| 440 | 1.195 | установка ПЧ на барабаны жиров 1 и 2 линия |  | 2h | 2026-06-02 09:00 A | 2026-06-02 11:00 A |  | 100% |  |  |  | start no earlier than 2026-06-02 09:00 | Дедов В | 2h | 2h |
| 441 | 1.196 | **рассекатели после шлюзовика 1 и 2 линия сделать, чтобы корм равномерно ложился по поверхности сетки** |  | 5.25d | 2026-06-03 09:00 A | 2026-06-10 11:00 A |  | 100% |  |  |  |  |  | 11h | 11h |
| 442 | 1.196.1 | после обеда будет остановка 2 линия- модернизация рассекателя |  | 1h | 2026-06-03 09:00 A | 2026-06-03 10:00 A |  | 100% |  |  |  | start no earlier than 2026-06-03 09:00 | Бундин В | 1h | 1h |

| ID | WBS | Task | Duration | Start | Finish | Predecessors | Complete | Remaining | Total slack | Constraint | Resources | Work | Actual work |
| --- | --- | --- | --- | --- | --- | --- | --- | --- | --- | --- | --- | --- | --- |
| 443 | 1.196.2 | **установить зубчатую пластину для выравнивания слоя на входе в печь** | 5.25d | 2026-06-03 09:00 A | 2026-06-10 11:00 A |  | 100% |  |  |  |  | 10h | 10h |
| 444 | 1.196.2.1 | подготовиьт чертеж | 2h | 2026-06-03 09:00 A | 2026-06-03 11:00 A |  | 100% |  |  | start no earlier than 2026-06-03 08:00 | Домоводов К | 2h | 2h |
| 445 | 1.196.2.2 | изготовить | 6h | 2026-06-05 09:00 A | 2026-06-05 16:00 A | 444 | 100% |  |  | start no earlier than 2026-06-05 09:00 | Бундин В | 6h | 6h |
| 446 | 1.196.2.3 | монтаж | 2h | 2026-06-10 09:00 A | 2026-06-10 11:00 A | 445 | 100% |  |  | start no earlier than 2026-06-10 09:00 | Некрасов А | 2h | 2h |
| 447 | 1.197 | **монтаж 2х прожекторов на барабаны жиров** | 0.25d | 2026-06-02 09:00 A | 2026-06-02 11:00 A |  | 100% |  |  |  |  | 2h | 2h |
| 448 | 1.197.1 | подключить в ШУ самого транспортера на автомат | 2h | 2026-06-02 09:00 A | 2026-06-02 11:00 A |  | 100% |  |  | start no earlier than 2026-06-02 09:00 | Макаревич А | 2h | 2h |
| 449 | 1.198 | **проверка вентилятор упавший в зимний период. Тест на месте** | 6.25d | 2026-06-05 09:00 A | 2026-06-15 11:00 A |  | 100% |  |  |  |  | 10h | 10h |
| 450 | 1.198.1 | изготовить подиум под улитку | 6h | 2026-06-05 09:00 A | 2026-06-05 16:00 A |  | 100% |  |  | start no earlier than 2026-06-05 09:00 | Тимофеев В | 6h | 6h |
| 451 | 1.198.2 | перенос вентилятора | 2h | 2026-06-15 09:00 A | 2026-06-15 11:00 A |  | 100% |  |  | start no earlier than 2026-06-15 09:00 | Тимофеев В; Некрасов А | 4h | 4h |
| 452 | 1.199 | прачка 1ц замена светильник | 1h | 2026-05-29 09:00 A | 2026-05-29 10:00 A |  | 100% |  |  | start no earlier than 2026-05-29 08:00 | Бундин В | 1h | 1h |
| 453 | 1.200 | запайщик замена нихром | 1h | 2026-05-29 09:00 A | 2026-05-29 10:00 A |  | 100% |  |  | start no earlier than 2026-05-29 08:00 | Бундин В | 1h | 1h |
| 454 | 1.201 | устранить провисание патрубка подачи ГДЗ линия 2 | 1h | 2026-08-31 09:00 A | 2026-08-31 10:00 A |  | 100% |  |  | start no earlier than 2026-08-31 09:00 | Тимофеев В | 1h | 1h |
| 455 | 1.202 | крепеление РР магистраль ф20 воздух в склад гдз | 15min | 2026-05-27 09:00 A | 2026-05-27 09:15 A |  | 100% |  |  | start no earlier than 2026-05-27 09:00 | Бундин В | 0.25h | 0.25h |
| 456 | 1.203 | **перевод насосов ГДЗ на канистры с трассой на насос > 1/2** | 3.25d | 2026-05-28 09:00 A | 2026-06-02 11:00 |  | 50% | 1.62d | 214.34d |  |  | 4h | 2h |
| 457 | 1.203.1 | подготовка канистры установить штуцер, подготовить шланг + фитинги на насос | 2h | 2026-05-28 09:00 A | 2026-05-28 11:00 A |  | 100% |  |  | start no earlier than 2026-05-28 09:00 | Бундин В | 2h | 2h |
| 458 | 1.203.2 | монаж на линию 1 | 2h | 2026-06-02 09:00 | 2026-06-02 11:00 | 457 |  |  | 214.34d | start no earlier than 2026-06-02 09:00 | Бундин В | 2h |  |
| 459 | 1.204 | **с тена печей осыпается оребрение, попадая в продукт** | 10.5d | 2026-05-27 09:00 A | 2026-06-10 13:00 A |  | 100% |  |  |  |  | 11h | 11h |
| 460 | 1.204.1 | осмотр тенов печей линия 1 и линия 2 на предмет отслоения оребрения. Очистка / замена | 3h | 2026-05-27 09:00 A | 2026-05-27 12:00 A |  | 100% |  |  | start no earlier than 2026-05-27 09:00 | Некрасов А | 3h | 3h |
| 461 | 1.204.2 | замена неисправных тенов линия 2, по диагностике Некрасова 27.05 (токи) 2 линия | 4h | 2026-06-02 09:00 A | 2026-06-02 13:00 A |  | 100% |  |  | start no earlier than 2026-06-02 09:00 | Некрасов А | 4h | 4h |
| 462 | 1.204.3 | замена прогнувшихся тен | 4h | 2026-06-10 09:00 A | 2026-06-10 13:00 A |  | 100% |  |  | start no earlier than 2026-06-10 09:00 | Некрасов А | 4h | 4h |
| 463 | 1.205 | перенести частотный привод ШУ печи 1л для доступа обслуживания | 2h | 2026-06-02 09:00 A | 2026-06-02 11:00 A |  | 100% |  |  | start no earlier than 2026-06-02 09:00 | Дедов В | 2h | 2h |
| 464 | 1.206 | нет фазы линия 2 печь оперативно | 1h | 2026-05-26 09:00 A | 2026-05-26 10:00 A |  | 100% |  |  | start no earlier than 2026-05-26 09:00 | Тимофеев В; Бундин В | 2h | 2h |
| 465 | 1.207 | замена твердотельное реле фаза В 2шт (найти пробитый) | 30min | 2026-05-27 09:00 A | 2026-05-27 09:30 A |  | 100% |  |  | start no earlier than 2026-05-27 09:00 | Бундин В | 0.5h | 0.5h |
| 466 | 1.208 | выравнивание потенциалов ШУ тв реле печей 1 и 2 | 1h | 2026-05-27 09:00 A | 2026-05-27 10:00 A |  | 100% |  |  | start no earlier than 2026-05-27 09:00 | Бундин В | 1h | 1h |

| ID | WBS | Task | Type | Duration | Start | Finish | Predecessors | Complete | Constraint | Resources | Work | Actual work |
| --- | --- | --- | --- | --- | --- | --- | --- | --- | --- | --- | --- | --- |
| 467 | 1.209 | **заменить фитинги с гайками (они на складе) на жирах 1 + 2 линия** |  | 28d | 2026-05-27 09:00 A | 2026-07-04 11:00 A |  | 100% |  |  | 6.08h | 6.08h |
| 468 | 1.209.1 | доставка шланг 8х12мм. Контроль |  | 5min | 2026-05-27 09:00 A | 2026-05-27 09:05 A |  | 100% | start no earlier than 2026-05-27 09:00 | Шуранов Ю | 0.08h | 0.08h |
| 469 | 1.209.2 | замена 2 линия |  | 2h | 2026-05-27 09:00 A | 2026-05-27 11:00 A |  | 100% | start no earlier than 2026-05-27 09:00 | Тимофеев В | 2h | 2h |
| 470 | 1.209.3 | замена 1 линия |  | 2h | 2026-06-15 09:00 A | 2026-06-15 11:00 A |  | 100% | start no earlier than 2026-06-15 09:00 | Тимофеев В | 2h | 2h |
| 471 | 1.209.4 | проверить где не поставлены фитинги с гайками- поменять | manual | 2h | 2026-07-04 09:00 A | 2026-07-04 11:00 A |  | 100% | start no earlier than 2026-07-04 09:00 | Тимофеев В | 2h | 2h |
| 472 | 1.210 | подключить Sаvema на теко 0,4 через ИБП (ибп на складе) |  | 1h | 2026-05-26 09:00 A | 2026-05-26 10:00 A |  | 100% | start no earlier than 2026-05-26 09:00 | Дедов В | 1h | 1h |
| 473 | 1.211 | найти и закрутить мотор-редукторы на транспортерах и отписаться на каких были не прикручены и не законтрогаек. |  | 1h | 2026-05-25 09:00 A | 2026-05-25 10:00 A |  | 100% | start no earlier than 2026-05-25 09:00 | Макаревич А | 1h | 1h |
| 474 | 1.212 | транспортер с жиров на виброохладитель- поменять кнопку стоп 2 линия | manual | 1h | 2026-05-27 09:00 A | 2026-05-27 10:00 A |  | 100% | start no earlier than 2026-05-27 09:00 | Дедов В | 1h | 1h |
| 475 | 1.213 | демонтировать на накопительном столе квадропака силиконовую резинку по диаметру | manual | 1h | 2026-05-24 09:00 A | 2026-05-24 10:00 A |  | 100% | start no earlier than 2026-05-24 09:00 | Макаревич А | 1h | 1h |
| 476 | 1.214 | **конв №2 линия 2 нижний вал нет защиты подшипников (был фетр)** |  | 9.16d | 2026-08-19 09:00 A | 2026-09-01 10:15 A |  | 100% |  |  | 5.25h | 5.25h |
| 477 | 1.214.1 | разборка, ревизия, подбор / чертеж уплотнеия |  | 2h | 2026-08-26 09:00 A | 2026-08-26 11:00 A |  | 100% | start no earlier than 2026-08-26 09:00 | Тимофеев В | 2h | 2h |
| 478 | 1.214.2 | заявка уплотнение |  | 1h | 2026-08-19 09:00 A | 2026-08-19 10:00 A |  | 100% | start no earlier than 2026-08-19 09:00 | Шуранов Ю | 1h | 1h |
| 479 | 1.214.3 | контроль поставки |  | 15min | 2026-09-01 10:00 A | 2026-09-01 10:15 A | 478FS+10d | 100% | start no earlier than 2026-08-12 09:00 | Шуранов Ю | 0.25h | 0.25h |
| 480 | 1.214.4 | монтаж уплотнения |  | 2h | 2026-08-31 09:00 A | 2026-08-31 11:00 A | 479FS+1d | 100% | start no earlier than 2026-08-12 09:00 | Тимофеев В | 2h | 2h |
| 481 | 1.215 | вентилятор на охладителе верхний краний слишком большой - переделать крепление |  | 1h | 2026-08-26 09:00 A | 2026-08-26 10:00 A |  | 100% | start no earlier than 2026-08-26 09:00 | Тимофеев В | 1h | 1h |
| 482 | 1.216 | устанить утечку на мойке зона экструдера |  | 1h | 2023-03-10 09:00 A | 2023-03-10 10:00 A |  | 100% |  | Бобренок В | 1h | 1h |
| 483 | 1.217 | выдать шестигранные болты и шайбы на ножевой узел экструдерщикам (штук 20) |  | 1h | 2026-05-21 09:00 A | 2026-05-21 10:00 A |  | 100% | start no earlier than 2026-05-21 08:00 | Бундин В | 1h | 1h |
| 484 | 1.218 | приварить болты к заслонке подачи гранулы на квадропаке (остановить, с мастером согласовать) |  | 1h | 2026-05-26 09:00 A | 2026-05-26 10:00 A |  | 100% | start no earlier than 2026-05-26 09:00 | Бобренок В | 1h | 1h |
| 485 | 1.219 | увеличить диаметр отверстия, чтобы горловина подачи сух. Гидрализата проходила (жиротопка) |  | 1h | 2026-05-20 09:00 A | 2026-05-20 10:00 A |  | 100% | start no earlier than 2026-05-20 09:00 | Некрасов А | 1h | 1h |
| 486 | 1.220 | посмотреть приточку, выпадает часто в аварию по насосу |  | 2h | 2026-05-18 08:00 A | 2026-05-18 11:00 A |  | 100% | start no earlier than 2026-05-18 08:00 | Дедов В | 2h | 2h |
| 487 | 1.221 | замена светильника в зоне завоза навесок (работа на высоте) |  | 2h | 2026-05-15 09:00 A | 2026-05-15 11:00 A |  | 100% | start no earlier than 2026-05-15 09:00 | Некрасов А; Труфанов А | 4h | 4h |
| 488 | 1.222 | закрепить встиряхиватель полного пакета №1 квадропак |  | 1h | 2026-05-14 08:00 A | 2026-05-14 10:00 A |  | 100% | start no earlier than 2026-05-14 08:00 | Бобренок В | 1h | 1h |
| 489 | 1.223 | замена лампа светильник гардероб М = на короткий. |  | 1h | 2026-05-13 09:00 A | 2026-05-13 10:00 A |  | 100% | start no earlier than 2026-05-13 09:00 | Бундин В | 1h | 1h |
| 490 | 1.224 | устранить потерю мощности печи в 2х фазах |  | 2h | 2026-05-12 08:00 A | 2026-05-12 11:00 A |  | 100% | start no earlier than 2026-05-12 08:00 | Тимофеев В; Бобренок В | 4h | 4h |
| 491 | 1.225 | квадропак изготовить и заменить текстолит на термоноже |  | 2h | 2026-05-12 09:00 A | 2026-05-12 11:00 A |  | 100% | start no earlier than 2026-05-12 08:00 | Некрасов А | 2h | 2h |

| ID | WBS | Task | Type | Duration | Start | Finish | Predecessors | Complete | Constraint | Resources | Work | Actual work |
| --- | --- | --- | --- | --- | --- | --- | --- | --- | --- | --- | --- | --- |
| 492 | 1.226 | **бак стабилизации воды-утечка** |  | 0.25d | 2026-05-22 09:00 A | 2026-05-22 11:00 A |  | 100% |  | Тимофеев В | 4h | 4h |
| 493 | 1.226.1 | монтаж подачи воды 2 линия в прекондиционер |  | 2h | 2026-05-22 09:00 A | 2026-05-22 11:00 A |  | 100% | start no earlier than 2026-05-22 09:00 | Тимофеев В | 2h | 2h |
| 494 | 1.227 | **парогенератор 1ц ремонт по гарантии** |  | 30d? | 2026-04-27 09:00 A | 2026-06-05 18:00 A |  | 100% |  |  | 11.33h | 11.33h |
| 495 | 1.227.1 | отправить ПГ на ремонт орг курьера |  | 10min | 2026-04-27 09:00 A | 2026-04-27 09:10 A |  | 100% | start no earlier than 2026-04-27 08:00 | Шуранов Ю | 0.17h | 0.17h |
| 496 | 1.227.2 | контроль ремонт |  | 10min | 2026-05-04 09:10 A | 2026-05-04 09:20 A | 495FS+5d | 100% | start no earlier than 2026-04-27 08:00 | Шуранов Ю | 0.17h | 0.17h |
| 497 | 1.227.3 | нужно посмотреть парогенератор там релюха не щелкает- может разберешься, он находиться на складе у Веры |  | 2h | 2026-05-11 09:00 A | 2026-05-11 11:00 A |  | 100% | start no earlier than 2026-05-11 09:00 | Дедов В | 2h | 2h |
| 498 | 1.227.4 | орг ремонт по гарантии |  | 1h | 2026-05-13 09:00 A | 2026-05-13 10:00 A |  | 100% | start no earlier than 2026-05-13 09:00 | Шуранов Ю | 1h | 1h |
| 499 | 1.227.5 | контроль возврата |  | 1d? | 2026-06-05 09:00 A | 2026-06-05 18:00 A |  | 100% | start no earlier than 2026-06-05 09:00 | Шуранов Ю | 8h | 8h |
| 500 | 1.228 | проверить мотор-редуктор на накопительном столе фасовка и | manual | 4h | 2026-05-11 09:00 A | 2026-05-11 13:00 A |  | 100% | start no earlier than 2026-05-11 09:00 | Бундин В | 4h | 4h |
| 501 | 1.229 | прикрутить ножку на 2 столе (ножка у Луговских в кабинете) |  | 1h | 2026-05-12 09:00 A | 2026-05-12 10:00 A |  | 100% | start no earlier than 2026-05-12 08:00 | Бундин В | 1h | 1h |
| 502 | 1.230 | **отодвинуть миксер подачи сухого гидрализата, чтобы сыпал не на ребра барабана, а на обод выхода** |  | 0.38d | 2026-05-08 08:00 A | 2026-05-08 12:00 A |  | 100% |  |  | 3h | 3h |
| 503 | 1.230.1 | перекрутить платформу миксера подачи сухого гидрализата снизу, чтобы дуло не задевало барабан |  | 3h | 2026-05-08 08:00 A | 2026-05-08 12:00 A |  | 100% | start no earlier than 2026-05-08 08:00 | Макаревич А | 3h | 3h |
| 504 | 1.231 | монтаж светильник в районе ВРУ сверху (зона экструдера) |  | 2h | 2026-05-16 09:00 A | 2026-05-18 11:00 A |  | 100% | start no earlier than 2026-05-16 09:00 | Макаревич А | 2h | 2h |
| 505 | 1.232 | закрепить трубу п/п на фасовке в углу, где стеллаж на клипсы к стене |  | 1h | 2026-05-07 08:00 A | 2026-05-07 10:00 A |  | 100% | start no earlier than 2026-05-07 08:00 | Бобренок В | 1h | 1h |
| 506 | 1.233 | прикрутить пускатели запуска вытяжки перед лестницей на 2 этаж зона экструдера и розетки |  | 2h | 2026-05-06 08:00 A | 2026-05-06 11:00 A |  | 100% | start no earlier than 2026-05-06 08:00 | Бобренок В | 2h | 2h |
| 507 | 1.234 | нет напряжения в розетке для инсектицидного светильника, корридор где вывозят готовую продукцию |  | 1h | 2026-05-07 09:00 A | 2026-05-07 10:00 A |  | 100% | start no earlier than 2026-05-07 09:00 | Бобренок В | 1h | 1h |
| 508 | 1.235 | подключить через счетчик подачу жира |  | 2h | 2026-05-05 08:00 A | 2026-05-05 11:00 A |  | 100% | start no earlier than 2026-05-05 08:00 | Тимофеев В | 2h | 2h |
| 509 | 1.236 | **повесить на места светильники инсектицидные (замена ламп)** |  | 0.38d | 2026-05-05 09:00 A | 2026-05-05 12:00 A |  | 100% |  |  | 3h | 3h |
| 510 | 1.236.1 | заменить инсектицидные лампы в светильниках (количество, которое поменял -записать) |  | 3h | 2026-05-05 09:00 A | 2026-05-05 12:00 A |  | 100% | start no earlier than 2026-05-05 08:00 | Бундин В | 3h | 3h |
| 511 | 1.237 | на жиротопке установить газ лифты (они на складе) |  | 1h | 2026-05-05 08:00 A | 2026-05-05 10:00 A |  | 100% | start no earlier than 2026-05-05 08:00 | Бобренок В | 1h | 1h |
| 512 | 1.238 | **дверь вход в столовую вкрыть заглушки и установить личинку с ключами (взять на складе)** |  | 14.12d | 2026-05-13 09:00 A | 2026-06-02 10:00 A |  | 100% |  |  | 42.5h | 42.5h |
| 513 | 1.238.1 | заказать ручку / ответ |  | 30min | 2026-05-13 09:00 A | 2026-05-13 09:30 A |  | 100% | start no earlier than 2026-05-13 09:00 | Шуранов Ю | 0.5h | 0.5h |
| 514 | 1.238.2 | конроль |  | 5d | 2026-05-18 09:00 A | 2026-05-22 18:00 A | 513 | 100% | start no earlier than 2026-05-18 09:00 | Карабанов | 40h | 40h |
| 515 | 1.238.3 | замена |  | 1h | 2026-05-30 09:00 A | 2026-06-01 10:00 A | 514 | 100% | start no earlier than 2026-05-30 09:00 | Тимофеев В | 1h | 1h |
| 516 | 1.238.4 | перевернуть замок ручкой вверх, личика переворачивается в любую сторону |  | 1h | 2026-06-02 09:00 A | 2026-06-02 10:00 A |  | 100% | start no earlier than 2026-06-02 09:00 | Макаревич А | 1h | 1h |
| 517 | 1.239 | поставить шпонки на питатель в слесарке |  | 1h | 2026-05-04 09:00 A | 2026-05-04 10:00 A |  | 100% | start no earlier than 2026-05-04 08:00 | Тимофеев В | 1h | 1h |
| 518 | 1.240 | установить транспортер на 1 линии |  | 1h | 2026-05-04 08:00 A | 2026-05-04 10:00 A |  | 100% | start no earlier than 2026-05-04 08:00 | Дедов В | 1h | 1h |
| 519 | 1.241 | собрать транспортер ковшевой (валы приехали, фетр на складе) |  | 4h | 2026-04-30 08:00 A | 2026-04-30 13:00 A |  | 100% | start no earlier than 2026-04-30 08:00 | Дедов В | 4h | 4h |

| ID | WBS | Task | Type | Duration | Start | Finish | Predecessors | Complete | Constraint | Resources | Work | Actual work |
| --- | --- | --- | --- | --- | --- | --- | --- | --- | --- | --- | --- | --- |
| 520 | 1.242 | **со старой ленты снять ковши в слесарке** |  | 0.5d | 2026-05-05 09:00 A | 2026-05-05 13:00 A |  | 100% |  |  | 4h | 4h |
| 521 | 1.242.1 | подготовить ленту с ковшами (150 мм между ковшами) лента на складе 5120мм в кольце и унести на желтый склад |  | 4h | 2026-05-05 09:00 A | 2026-05-05 13:00 A |  | 100% | start no earlier than 2026-05-05 09:00 | Бундин В | 4h | 4h |
| 522 | 1.243 | **разбираем улитки циклон и печи, замена подшипников** |  | 1d? | 2026-06-03 09:00 A | 2026-06-03 18:00 A |  | 100% |  | Тимофеев В; Бундин В | 16h | 16h |
| 523 | 1.243.1 | проверка подшипников на улитках печей |  | 1d? | 2026-06-03 09:00 A | 2026-06-03 18:00 A |  | 100% | start no earlier than 2026-06-03 09:00 |  |  |  |
| 524 | 1.244 | ТО Теко 1,5 (чистка тен, смазка штоков пневмоцилиндров, подшипников) |  | 3h | 2026-04-28 09:00 A | 2026-04-28 12:00 A |  | 100% | start no earlier than 2026-04-28 09:00 | Дедов В | 3h | 3h |
| 525 | 1.245 | ТО Теко 0,4 (чистка тен, смазка штоков пневмоцилиндров, подшипников) |  | 3h | 2026-04-28 09:00 A | 2026-04-28 12:00 A |  | 100% | start no earlier than 2026-04-28 09:00 | Дедов В | 3h | 3h |
| 526 | 1.246 | полное ТО квадропака (чистка тен, смазка штоков пневмоцилиндров, шприцевание подшипников, протяжка болтовых соединений) |  | 3h | 2026-04-28 09:00 A | 2026-04-28 12:00 A |  | 100% | start no earlier than 2026-04-28 09:00 | Дедов В | 3h | 3h |
| 527 | 1.247 | **модернизация трассы слива зона мойки экструдеров** |  | 20d? | 2026-04-27 09:00 A | 2026-05-23 10:00 A |  | 100% |  |  | 15.5h | 15.5h |
| 528 | 1.247.1 | заявка соединения и гидрозатвор |  | 15min | 2026-04-27 09:00 A | 2026-04-27 09:15 A |  | 100% | start no earlier than 2026-04-27 08:00 | Шуранов Ю | 0.25h | 0.25h |
| 529 | 1.247.2 | контроль доставки |  | 15min | 2026-05-04 09:15 A | 2026-05-04 09:30 A | 528FS+5d | 100% | start no earlier than 2026-04-27 08:00 | Шуранов Ю | 0.25h | 0.25h |
| 530 | 1.247.3 | монтаж |  | 1d? | 2026-05-06 09:30 A | 2026-05-07 09:30 A | 529FS+2d | 100% | start no earlier than 2026-04-27 08:00 | Тимофеев В | 8h | 8h |
| 531 | 1.247.4 | заявка на бурить стену / получить счет |  | 1h | 2026-04-28 09:00 A | 2026-04-28 10:00 A |  | 100% | start no earlier than 2026-04-28 09:00 | Зорькин В | 1h | 1h |
| 532 | 1.247.5 | расчет угла бурения. Замер + зхарисовать схему |  | 4h | 2026-05-13 09:00 A | 2026-05-13 13:00 A | 531 | 100% | start no earlier than 2026-05-13 09:00 | Зорькин В | 4h | 4h |
| 533 | 1.247.6 | орг работу подрядчика по бурению |  | 1h | 2026-05-20 09:00 A | 2026-05-20 10:00 A | 532 | 100% | start no earlier than 2026-05-20 09:00 | Зорькин В | 1h | 1h |
| 534 | 1.247.7 | запенить стыки в месте бурения | manual | 1h | 2026-05-23 09:00 A | 2026-05-23 10:00 A |  | 100% | start no earlier than 2026-05-23 09:00 | Бобренок В | 1h | 1h |
| 535 | 1.248 | взять на складе 2 гофросифона и заменить на мойке экструдер |  | 1h | 2026-04-24 09:00 A | 2026-04-24 10:00 A |  | 100% | start no earlier than 2026-04-24 08:00 | Бундин В | 1h | 1h |
| 536 | 1.249 | заменить монтажную коробку на 150х200мм -она у них на стяжках. Коробка новая на складе | manual | 1h | 2026-04-26 09:00 A | 2026-04-26 10:00 A |  | 100% | start no earlier than 2026-04-26 09:00 | Бобренок В | 1h | 1h |
| 537 | 1.250 | под мойкой в зоне экструдера на слив 3 греющего кабеля, нужно разобраться |  | 1h | 2026-04-24 09:00 A | 2026-04-24 10:00 A |  | 100% | start no earlier than 2026-04-24 08:00 | Шуранов Ю | 1h | 1h |
| 538 | 1.251 | жиротопка течет сальник, проверить и устранить течи везде. Чистка фильтров. |  | 2h | 2026-04-28 09:00 A | 2026-04-28 11:00 A |  | 100% | start no earlier than 2026-04-28 09:00 | Тимофеев В | 2h | 2h |
| 539 | 1.252 | ТО печи линия 1 ( вскрыть, ревизия- замена перемычек и т.д.) |  | 4h | 2026-04-23 09:00 A | 2026-04-23 13:00 A |  | 100% | start no earlier than 2026-04-23 08:00 | Бундин В | 4h | 4h |
| 540 | 1.253 | протянуть кабель UTP от столя Луговских до шкафа серверного (расскажу как протянуть по звонку) |  | 4h | 2026-04-23 09:00 A | 2026-04-23 13:00 A |  | 100% | start no earlier than 2026-04-23 08:00 | Бундин В | 4h | 4h |
| 541 | 1.254 | **подключить приточку как было** |  | 0.25d | 2026-04-29 09:00 A | 2026-04-29 11:00 A |  | 100% |  | Дедов В | 4h | 4h |
| 542 | 1.254.1 | подключить сервопривод на шибер и подключить |  | 2h | 2026-04-29 09:00 A | 2026-04-29 11:00 A |  | 100% | start no earlier than 2026-04-29 09:00 | Дедов В | 2h | 2h |
| 543 | 1.255 | **замена ленты на транспортере тип 2 2 линия (дособрать)** |  | 1.5d | 2026-04-24 09:00 A | 2026-04-27 13:00 A |  | 100% |  |  | 6h | 6h |
| 544 | 1.255.1 | со снятой ленты транспортера тип 2 снять все ковши (готовим для замены на 1 линии) |  | 2h | 2026-04-24 09:00 A | 2026-04-24 11:00 A |  | 100% | start no earlier than 2026-04-24 09:00 | Бундин В | 2h | 2h |
| 545 | 1.255.2 | установка ковшей со старой ленты на новую со склада 400х 5120мм |  | 4h | 2026-04-25 09:00 A | 2026-04-27 13:00 A |  | 100% | start no earlier than 2026-04-25 09:00 | Макаревич А | 4h | 4h |

| ID | WBS | Task | Duration | Start | Finish | Predecessors | Complete | Constraint | Resources | Work | Actual work |
| --- | --- | --- | --- | --- | --- | --- | --- | --- | --- | --- | --- |
| 546 | 1.256 | **система угольной фильтрации вытяжных газов с печей и пневотранспорта** | 0.25d | 2026-04-21 09:00 A | 2026-04-21 11:00 A |  | 100% |  |  | 3h | 3h |
| 547 | 1.256.1 | подготовить пластины 200*200 5мм для анкерения колон к полу ф12 6шт | 2h | 2026-04-21 09:00 A | 2026-04-21 11:00 A |  | 100% | start no earlier than 2026-04-21 09:00 | Бундин В | 2h | 2h |
| 548 | 1.256.2 | подготовить пластины 100*100 5мм для анкерения колон к стене 8шт | 1h | 2026-04-21 09:00 A | 2026-04-21 10:00 A |  | 100% | start no earlier than 2026-04-21 09:00 | Бундин В | 1h | 1h |
| 549 | 1.257 | проверка фильтров воды с редуктором в прекондиционер на ТО | 1h | 2026-04-22 09:00 A | 2026-04-22 10:00 A |  | 100% | start no earlier than 2026-04-22 09:00 | Бундин В | 1h | 1h |
| 550 | 1.258 | **заменить фильтры на жиротопка** | 17.12d | 2026-09-14 09:00 A | 2026-10-01 10:00 A |  | 100% |  |  | 2.25h | 2.25h |
| 551 | 1.258.1 | выяснить тип фильтров, заказ катриджи | 1h | 2026-09-14 09:00 A | 2026-09-14 10:00 A |  | 100% | start no earlier than 2026-09-14 09:00 | Зорькин В | 1h | 1h |
| 552 | 1.258.2 | контроль | 15min | 2026-09-24 10:00 A | 2026-09-24 10:15 A | 551FS+10d | 100% | start no earlier than 2026-04-22 09:00 | Зорькин В | 0.25h | 0.25h |
| 553 | 1.258.3 | замена | 1h | 2026-10-01 09:00 A | 2026-10-01 10:00 A | 552 | 100% | start no earlier than 2026-10-01 09:00 | Бобренок В | 1h | 1h |
| 554 | 1.259 | проверить напряжение в розетке конатушка вывоза готовой продукции | 1h | 2026-04-19 09:00 A | 2026-04-20 10:00 A |  | 100% | start no earlier than 2026-04-19 09:00 | Дедов В | 1h | 1h |
| 555 | 1.260 | **на 1 линии подготовить из оргстекла обратные крышки транспортера тип 2 (ковшевой), согласовать остановка с мастером и установить** | 0.12d | 2026-04-24 09:00 A | 2026-04-24 10:00 A |  | 100% |  | Бобренок В | 2h | 2h |
| 556 | 1.260.1 | перекрутить оргстекло (операторы подскажут в чем проблема) | 1h | 2026-04-24 09:00 A | 2026-04-24 10:00 A |  | 100% | start no earlier than 2026-04-24 09:00 | Бобренок В | 1h | 1h |
| 557 | 1.261 | проверить гидроаккумуляторы парогенераторов 1 и 2 линия и 100литровый в комнате стабилизации воды, если нужно качаем 2 очка. | 2h | 2026-04-19 09:00 A | 2026-04-20 11:00 A |  | 100% | start no earlier than 2026-04-19 09:00 | Макаревич А | 2h | 2h |
| 558 | 1.262 | проверка фильтров на редукторы экструдеров | 1h | 2026-04-24 09:00 A | 2026-04-24 10:00 A |  | 100% | start no earlier than 2026-04-24 09:00 | Тимофеев В | 1h | 1h |
| 559 | 1.263 | проверка токов, всех перемычек, шприцевание всех подшипников печи №2 | 3h | 2026-04-23 09:00 A | 2026-04-23 12:00 A |  | 100% | start no earlier than 2026-04-24 09:00 | Бобренок В | 3h | 3h |
| 560 | 1.264 | на питателе заменить втулки линия 1 и 2 | 2h | 2026-04-15 08:00 A | 2026-04-15 11:00 A |  | 100% | start no earlier than 2026-04-15 08:00 | Бобренок В | 2h | 2h |
| 561 | 1.265 | проверить радиатор приточки (протечки, есть ли подача горячей воды), если нет - выключить приточку, чтобы не разморозить! | 1h | 2026-04-14 09:00 A | 2026-04-14 10:00 A |  | 100% | start no earlier than 2026-04-14 08:00 | Труфанов А | 1h | 1h |
| 562 | 1.266 | приварить левую ногу мезонина на фасовке (штабелером сместили) | 1h | 2026-04-15 09:00 A | 2026-04-15 10:00 A |  | 100% | start no earlier than 2026-04-15 09:00 | Бобренок В | 1h | 1h |
| 563 | 1.267 | на печи №1 прошприцевать подшипники, проверить токи, если нужно вскрываем на ревизию перемычек | 3h | 2026-04-14 09:00 A | 2026-04-14 12:00 A |  | 100% | start no earlier than 2026-04-14 08:00 | Труфанов А | 3h | 3h |
| 564 | 1.268 | замена электродной группы на парогенераторе линия №1 (электроды подготовили в слесарке) | 4h | 2026-04-14 09:00 A | 2026-04-14 13:00 A |  | 100% | start no earlier than 2026-04-14 08:00 | Труфанов А | 4h | 4h |
| 565 | 1.269 | на квадропаке тена выставить в параллель | 1h | 2026-04-13 09:00 A | 2026-04-13 10:00 A |  | 100% | start no earlier than 2026-04-13 08:00 | Труфанов А | 1h | 1h |
| 566 | 1.270 | покрасить подиум под циклонами линия 1 и 2 | 2h | 2026-04-22 09:00 A | 2026-04-22 11:00 A |  | 100% | start no earlier than 2026-04-22 09:00 | Бундин В | 2h | 2h |
| 567 | 1.271 | подготовить лекало на приемный лоток транспортера тип 2 (у них в работе картонка, можно по ней и сделать), если будет остановка приварить | 1h | 2026-04-27 09:00 A | 2026-04-27 10:00 A |  | 100% | start no earlier than 2026-04-27 09:00 | Тимофеев В | 1h | 1h |
| 568 | 1.272 | на пнемоулитку поставить пистолет (зона экструдера) | 1h | 2026-04-11 09:00 A | 2026-04-13 10:00 A |  | 100% | start no earlier than 2026-04-11 09:00 | Макаревич А | 1h | 1h |
| 569 | 1.273 | установить фильтр на кондиционер между печками (фильтр у Луговских) | 1h | 2026-04-22 09:00 A | 2026-04-22 10:00 A |  | 100% | start no earlier than 2026-04-22 09:00 | Труфанов А | 1h | 1h |

| ID | WBS | Task | Type | Duration | Start | Finish | Predecessors | Complete | Remaining | Actual start | Actual finish | Total slack | Constraint | Resources | Work | Actual work |
| --- | --- | --- | --- | --- | --- | --- | --- | --- | --- | --- | --- | --- | --- | --- | --- | --- |
| 570 | 1.274 | **зафиксировать ручку в туалет (закрутить)** |  | 856.12d | 2023-03-22 09:00 A | 2026-04-22 10:00 |  | 100% |  |  | 2026-05-05 10:00 |  |  |  | 2h | 2h |
| 571 | 1.274.1 | заказать ручки |  | 1h | 2023-03-22 09:00 A | 2023-03-22 10:00 A |  | 100% |  |  |  |  |  | Шуранов Ю | 1h | 1h |
| 572 | 1.274.2 | установка (заменить ручку, взять на складе) |  | 1h | 2026-05-05 09:00 A | 2026-05-05 10:00 A |  | 100% |  |  |  |  | start no earlier than 2026-05-05 09:00 | Бобренок В | 1h | 1h |
| 573 | 1.275 | ТО теко 1,5 (чистка тен, смазка штоков пневмоцилиндров, подшипников) | manual | 3h | 2026-04-25 09:00 A | 2026-04-25 12:00 A |  | 100% |  |  |  |  | start no earlier than 2026-04-25 09:00 | Труфанов А | 3h | 3h |
| 574 | 1.276 | слить конденсат с компрессора, чистка фильтров и радиаторов | manual | 2h | 2026-04-12 09:00 A | 2026-04-12 11:00 A |  | 100% |  |  |  |  | start no earlier than 2026-04-12 09:00 | Макаревич А | 2h | 2h |
| 575 | 1.277 | **заказать газлифт жиротопка** |  | 11.12d? | 2026-04-22 09:00 A | 2026-05-06 10:00 |  | 100% |  |  | 2026-08-18 09:20 |  |  |  | 84.08h | 84.08h |
| 576 | 1.277.1 | доставка |  | 10d | 2026-04-22 09:00 A | 2026-05-05 18:00 A |  | 100% |  |  |  |  | start no earlier than 2026-04-22 09:00 | Карабанов | 80h | 80h |
| 577 | 1.277.2 | **установка газ лифт** |  | 69.04d | 2026-05-13 09:00 A | 2026-08-18 09:20 A |  | 100% |  |  |  |  |  |  | 4.08h | 4.08h |
| 578 | 1.277.2.1 | контроль поставки / размер |  | 20min | 2026-08-18 09:00 A | 2026-08-18 09:20 A |  | 100% |  |  |  |  | start no earlier than 2026-08-18 09:00 | Шуранов Ю | 0.33h | 0.33h |
| 579 | 1.277.2.2 | наварить уголок для площадки упора газлифта |  | 1h | 2026-05-13 09:00 A | 2026-05-13 10:00 A |  | 100% |  |  |  |  | start no earlier than 2026-05-13 09:00 | Труфанов А; Некрасов А | 2h | 2h |
| 580 | 1.277.2.3 | заявка газлифт с меньшей усилием/ выяснить координата |  | 30min | 2026-05-27 09:00 A | 2026-05-27 09:30 A |  | 100% |  |  |  |  | start no earlier than 2026-05-27 09:00 | Зорькин В | 0.5h | 0.5h |
| 581 | 1.277.2.4 | доставка контроль |  | 15min | 2026-08-12 09:00 A | 2026-08-12 09:15 A | 580FS+10d | 100% |  |  |  |  | start no earlier than 2026-05-13 09:00 | Зорькин В | 0.25h | 0.25h |
| 582 | 1.277.2.5 | замена |  | 1h | 2026-08-12 09:00 A | 2026-08-12 10:00 A |  | 100% |  |  |  |  | start no earlier than 2026-08-12 09:00 | Бобренок В | 1h | 1h |
| 583 | 1.278 | убрать диммер за еврокубом, где завозят навески (провода заизолировать и спрятать в кабель-канал) |  | 1h | 2026-04-10 08:00 A | 2026-04-10 10:00 A |  | 100% |  |  |  |  | start no earlier than 2026-04-10 08:00 | Бобренок В | 1h | 1h |
| 584 | 1.279 | закрыть монтажную коробку над дверью зона жиров выход |  | 1h | 2026-04-09 08:00 A | 2026-04-09 10:00 A |  | 100% |  |  |  |  | start no earlier than 2026-04-09 08:00 | Бобренок В | 1h | 1h |
| 585 | 1.280 | **на аппликаторе установить принтер (взять на складе)** |  | 3h? | 2026-04-10 09:00 | 2026-04-10 12:00 |  | 100% |  | 2026-04-09 08:00 | 2026-05-14 10:00 |  |  |  | 5h | 5h |
| 586 | 1.280.1 | монтаж витой пары от аппликатора до шкафа где вывозят ГП справа |  | 4h | 2026-04-09 08:00 A | 2026-04-09 13:00 A |  | 100% |  |  |  |  | start no earlier than 2026-04-09 08:00 | Бобренок В | 4h | 4h |
| 587 | 1.280.2 | тест принтера |  | 1h | 2026-05-14 09:00 A | 2026-05-14 10:00 A |  | 100% |  |  |  |  | start no earlier than 2026-05-14 09:00 | Зорькин В | 1h | 1h |
| 588 | 1.281 | замена шнек+гильзы (б/у) на 2 линии |  | 4h | 2026-04-09 08:00 A | 2026-04-09 13:00 A |  | 100% |  |  |  |  | start no earlier than 2026-04-09 08:00 | Тимофеев В | 4h | 4h |
| 589 | 1.282 | закрепить светильник в комнатке перед выходом, где вывозят готовую продукцию справа, оторвался | manual | 1h | 2026-04-08 09:00 A | 2026-04-08 10:00 A |  | 100% |  |  |  |  | start no earlier than 2026-04-08 08:00 | Бундин В | 1h | 1h |
| 590 | 1.283 | **замена лент на аппликаторе, подумать какой сделать отражатель для фотометки, чтобы не цепляло пакеты в работе** |  | 0.5d | 2026-05-27 09:00 | 2026-05-27 13:00 |  | 100% |  | 2026-10-12 09:00 | 2026-10-12 13:00 |  |  |  | 4h | 4h |
| 591 | 1.283.1 | замена ленеты |  | 4h | 2026-10-12 09:00 A | 2026-10-12 13:00 A |  | 100% |  |  |  |  | start no earlier than 2026-10-12 09:00 | Тимофеев В | 4h | 4h |
| 592 | 1.284 | **замена ленты пролистывателя** |  | 60.5d | 2026-09-18 09:00 A | 2026-11-27 13:00 |  | 32% | 41.19d |  |  | 0d |  |  | 11.75h | 3.75h |
| 593 | 1.284.1 | Полная дефектовка пролистывателя, снятие лент/замена |  | 3h | 2026-09-18 09:00 A | 2026-09-18 12:00 A |  | 100% |  |  |  |  | start no earlier than 2026-09-18 09:00 | Тимофеев В | 3h | 3h |
| 594 | 1.284.2 | заявка на ремень клиновый для ленты + клей |  | 30min | 2026-09-18 12:00 A | 2026-09-18 12:30 A | 593 | 100% |  |  |  |  | start no earlier than 2026-09-18 08:00 | Зорькин В | 0.5h | 0.5h |
| 595 | 1.284.3 | контроль доставки |  | 15min | 2026-09-25 12:30 A | 2026-09-25 12:45 A | 594FS+7d | 100% |  |  |  |  | start no earlier than 2026-09-18 08:00 | Зорькин В | 0.25h | 0.25h |
| 596 | 1.284.4 | склеить ремень с лентой, ремень на складе (отправить ленту организации, которая когда-то приезжала и склеивала ленты) | manual | 4h | 2026-11-27 09:00 | 2026-11-27 13:00 | 595FS+1d |  |  |  |  |  | start no earlier than 2026-11-27 09:00 | Тимофеев В | 4h |  |
| 597 | 1.284.5 | замена лент | manual | 4h | 2026-11-21 09:00 | 2026-11-21 13:00 | 596FS+1d |  |  |  |  |  | start no earlier than 2026-11-21 09:00 | Тимофеев В | 4h |  |
| 598 | 1.285 | подготовить электродную группу для парогенератора (собрать) |  | 2h | 2026-04-08 09:00 A | 2026-04-08 11:00 A |  | 100% |  |  |  |  | start no earlier than 2026-04-08 08:00 | Бундин В | 2h | 2h |

| ID | WBS | Task | Type | Duration | Start | Finish | Predecessors | Complete | Constraint | Resources | Work | Actual work |
| --- | --- | --- | --- | --- | --- | --- | --- | --- | --- | --- | --- | --- |
| 599 | 1.286 | **просыпается гранула на пересыпке с барабана в конвейер** |  | 0.5d | 2026-04-08 09:00 A | 2026-04-08 13:00 A |  | 100% |  |  | 6h | 6h |
| 600 | 1.286.1 | пододвинуть ближе к барабану конвейер + охладитель + вентилятор |  | 2h | 2026-04-08 09:00 A | 2026-04-08 11:00 A |  | 100% | start no earlier than 2026-04-08 09:00 | Бобренок В | 2h | 2h |
| 601 | 1.286.2 | доработка приемного лотка конвейера |  | 4h | 2026-04-08 09:00 A | 2026-04-08 13:00 A |  | 100% | start no earlier than 2026-04-08 09:00 | Некрасов А | 4h | 4h |
| 602 | 1.287 | забрать 2 рохли с пандуса, снять колеса в зип (зад- перед), а сами рохли в контейнер |  | 3h | 2026-04-04 09:00 A | 2026-04-06 12:00 A |  | 100% | start no earlier than 2026-04-04 09:00 | Труфанов А | 3h | 3h |
| 603 | 1.288 | **квадропак модернизация регулировки пластины нажима роликов для захвата пакета** |  | 2.12d | 2026-04-15 09:00 A | 2026-04-17 10:00 A |  | 100% |  |  | 3h | 3h |
| 604 | 1.288.1 | регулировочной тягой отвезти нажимную площадку на 5мм (остановить работу на 10 минут, согласовать с мастером) |  | 1h | 2026-04-17 09:00 A | 2026-04-17 10:00 A |  | 100% | start no earlier than 2026-04-17 09:00 | Бобренок В | 1h | 1h |
| 605 | 1.288.2 | изготовление пластины на ногу по аналогии как на первой ноге |  | 1h | 2026-04-15 09:00 A | 2026-04-15 10:00 A | 604 | 100% | start no earlier than 2026-04-15 09:00 | Бобренок В | 1h | 1h |
| 606 | 1.288.3 | монтаж |  | 1h | 2026-04-15 10:00 A | 2026-04-15 11:00 A | 605 | 100% | start no earlier than 2026-04-10 09:00 | Бобренок В | 1h | 1h |
| 607 | 1.289 | изготовить крышку на приямок слива канализации под раковинами зона экструдер. Из нерж, с ручкой. |  | 4h | 2026-04-02 08:00 A | 2026-04-02 13:00 A |  | 100% | start no earlier than 2026-04-02 08:00 | Бобренок В | 4h | 4h |
| 608 | 1.290 | выпрямить погнутые роль-ворота на рампе - в сторону слесарки (нужно откутить левую направляшку и вставить воротину на место) |  | 1h | 2026-04-02 08:00 A | 2026-04-02 10:00 A |  | 100% | start no earlier than 2026-04-02 08:00 | Бобренок В | 1h | 1h |
| 609 | 1.291 | **выключатель света на входе в гидролизатную закрепить сам рычаг переключения, проскальзывает** |  | 15.12d | 2026-04-06 09:00 A | 2026-04-27 10:00 A |  | 100% |  | Макаревич А | 123h | 123h |
| 610 | 1.291.1 | заказать выключатель |  | 1h | 2026-04-06 09:00 A | 2026-04-06 10:00 A |  | 100% | start no earlier than 2026-04-06 08:00 | Шуранов Ю | 1h | 1h |
| 611 | 1.291.2 | замена выключателя (выключатель в слесарке тебе показывал) |  | 1h | 2026-04-25 09:00 A | 2026-04-27 10:00 A |  | 100% | start no earlier than 2026-04-25 09:00 | Бобренок В | 1h | 1h |
| 612 | 1.292 | на пандусе 1 цеха справа - пометить шнеки и гильзы что они рабочие и вывести в контейнер |  | 2h | 2026-04-01 08:00 A | 2026-04-01 11:00 A |  | 100% | start no earlier than 2026-04-01 08:00 | Бобренок В | 2h | 2h |
| 613 | 1.293 | взять с контейнера пысос- проверить рабочий или нет (если работает выдать в 1 цех) |  | 2h | 2026-04-01 08:00 A | 2026-04-01 11:00 A |  | 100% | start no earlier than 2026-04-01 08:00 | Бобренок В | 2h | 2h |
| 614 | 1.294 | заменить плату интерфейса RS485 |  | 1h | 2026-04-04 09:00 A | 2026-04-06 10:00 A |  | 100% | start no earlier than 2026-04-04 09:00 | Труфанов А | 1h | 1h |
| 615 | 1.295 | замена шнеки 1 линия |  | 4h | 2026-03-31 08:00 A | 2026-03-31 13:00 A |  | 100% | start no earlier than 2026-03-31 08:00 | Тимофеев В; Бобренок В | 8h | 8h |
| 616 | 1.296 | замер износ шнеков |  | 1h | 2026-03-31 08:00 A | 2026-03-31 10:00 A |  | 100% | start no earlier than 2026-03-31 08:00 | Тимофеев В; Бобренок В; Зорькин В | 3h | 3h |
| 617 | 1.297 | почистить канальные вентиляторы вытяжки в курилке |  | 2h | 2026-03-28 09:00 A | 2026-03-30 11:00 A |  | 100% | start no earlier than 2026-03-28 09:00 | Бундин В | 2h | 2h |
| 618 | 1.298 | монтаж розетки на ногу нотис справа для подключения весов |  | 2h | 2026-03-27 09:00 A | 2026-03-27 11:00 A |  | 100% | start no earlier than 2026-03-27 09:00 | Труфанов А | 2h | 2h |
| 619 | 1.299 | добавить вибрации на виброохладителе линия 2 (согласовать с мастером, если будет остановка) |  | 2h | 2026-04-30 09:00 A | 2026-04-30 11:00 A | 628 | 100% |  | Бундин В | 2h | 2h |
| 620 | 1.300 | **замена ленты конвейер 2 линия 2** |  | 12.38d | 2026-04-07 09:00 A | 2026-04-23 12:00 A |  | 100% |  |  | 15h | 15h |
| 621 | 1.300.1 | взять ленту 400мм и начать крепить ковши для транспортера тип 2 (посчитать количество на транспортере) | manual | 9h | 2026-04-07 09:00 A | 2026-04-08 10:00 A |  | 100% | start no earlier than 2026-04-07 09:00 | Тимофеев В | 9h | 9h |
| 622 | 1.300.2 | замена ленты |  | 3h | 2026-04-23 09:00 A | 2026-04-23 12:00 A |  | 100% | start no earlier than 2026-04-23 09:00 | Тимофеев В; Бундин В | 6h | 6h |
| 623 | 1.301 | заменить на штабелере второй АКБ в зоне экструдера |  | 1h | 2026-03-28 09:00 A | 2026-03-30 10:00 A |  | 100% | start no earlier than 2026-03-28 09:00 | Дедов В | 1h | 1h |
| 624 | 1.302 | на кпп №1 опустить на 10см кабель в гофре для камер видеонаблюдения | manual | 2h | 2026-03-28 09:00 A | 2026-03-28 11:00 A |  | 100% | start no earlier than 2026-03-28 09:00 | Бундин В | 2h | 2h |
| 625 | 1.303 | вход охладителя 1 линии - нужно на среднем лотке между уровнями сделать сбоков шторки (фото скину) |  | 2h | 2026-03-28 09:00 A | 2026-03-30 11:00 A |  | 100% | start no earlier than 2026-03-28 09:00 | Бундин В | 2h | 2h |
| 626 | 1.304 | на первой линии под выходом из печи прикрутить на стенку оргстекло (Слава готовил по размерам оргстекло) |  | 1h | 2026-03-28 09:00 A | 2026-03-30 10:00 A |  | 100% | start no earlier than 2026-03-28 09:00 | Труфанов А | 1h | 1h |
| 627 | 1.305 | На пробниках оторвали разъем питания, нужно припаять |  | 2h | 2026-03-27 09:00 A | 2026-03-27 11:00 A |  | 100% | start no earlier than 2026-03-27 09:00 | Дедов В | 2h | 2h |
| 628 | 1.306 | подготовить 1 ленты с ковшами для транспортера тип 2 (зип) |  | 1d? | 2026-04-29 09:00 A | 2026-04-29 18:00 A |  | 100% | start no earlier than 2026-04-29 09:00 | Шуранов Ю | 8h | 8h |
| 629 | 1.307 | замена на старые капролонновые втулки в питателе линия 1 |  | 1h | 2026-03-26 09:00 A | 2026-03-26 10:00 A |  | 100% | start no earlier than 2026-03-26 09:00 | Тимофеев В | 1h | 1h |
| 630 | 1.308 | сделать на 2 линии вставыш на ленту транспортера тип 2 и установить на транспортер |  | 4h | 2026-03-25 09:00 A | 2026-03-25 13:00 A |  | 100% | start no earlier than 2026-03-25 09:00 | Некрасов А; Бобренок В | 8h | 8h |
| 631 | 1.309 | герметизация мезонина подачи навесок по шву |  | 1h | 2026-04-15 09:00 A | 2026-04-15 10:00 A |  | 100% | start no earlier than 2026-04-15 09:00 | Бобренок В | 1h | 1h |

| ID | WBS | Task | Type | Duration | Start | Finish | Complete | Remaining | Actual start | Actual finish | Constraint | Resources | Work | Actual work |
| --- | --- | --- | --- | --- | --- | --- | --- | --- | --- | --- | --- | --- | --- | --- |
| 632 | 1.310 | **на 2 линии на хомуты закрепить горловину к бункеру подачи сухого гидрализата (все расскажу)** |  | 0.25d | 2026-04-27 09:00 A | 2026-04-27 11:00 A | 100% |  |  |  |  | Некрасов А | 4h | 4h |
| 633 | 1.310.1 | на горловине подачи сухого гидрализата приварить выход под углом 45 градусов (углы из нерж есть в 3 цехе) |  | 2h | 2026-04-27 09:00 A | 2026-04-27 11:00 A | 100% |  |  |  | start no earlier than 2026-04-27 09:00 | Макаревич А | 2h | 2h |
| 634 | 1.311 | **разобрать с двух сторон питатель 2 линия - ревизия шестеренок и втулок спереди (оставить все разобранное)** |  | 2h | 2026-03-24 09:00 | 2026-03-24 11:00 | 100% |  | 2026-03-26 09:00 | 2026-03-26 11:00 |  |  | 2h | 2h |
| 635 | 1.311.1 | собрать питатель, ревизия втулок, подшипников, шнеков, шестеренок. Подогнать капролонновые втулки |  | 2h | 2026-03-26 09:00 A | 2026-03-26 11:00 A | 100% |  |  |  | start no earlier than 2026-03-26 09:00 | Тимофеев В | 2h | 2h |
| 636 | 1.312 | пульт управления кондиционером в зоне экструдера- закрепить гофру и заизолировать разрыв гофры, закрепить к стенке |  | 1h | 2026-03-24 08:00 A | 2026-03-24 10:00 A | 100% |  |  |  | start no earlier than 2026-03-24 08:00 | Бобренок В | 1h | 1h |
| 637 | 1.313 | блок питания для весов на жирах развалился, стянуть изолентой |  | 1h | 2026-03-24 08:00 A | 2026-03-24 10:00 A | 100% |  |  |  | start no earlier than 2026-03-24 08:00 | Бобренок В | 1h | 1h |
| 638 | 1.314 | **ремонт /отключить 2 вентилятора охладитель 1 линия** |  | 801d | 2023-06-21 09:00 A | 2026-07-15 18:00 A | 100% |  |  |  |  | Тимофеев В | 12801h | 12801h |
| 639 | 1.314.1 | заказать в зип |  | 6392h | 2023-06-21 09:00 A | 2026-07-15 18:00 A | 100% |  |  |  |  | Шуранов Ю | 6392h | 6392h |
| 640 | 1.314.2 | заменить 2 вентилятора |  | 1h | 2026-04-04 09:00 A | 2026-04-06 10:00 A | 100% |  |  |  |  | Макаревич А | 1h | 1h |
| 641 | 1.315 | демонтаж крышка лотка в проеме между краем площадки вентиляции приточной и проемом ворот вход в кооридор завода навесок |  | 383520min | 2023-06-21 09:00 A | 2026-07-15 18:00 A | 100% |  |  |  |  | Труфанов А | 6392h | 6392h |
| 642 | 1.316 | стук шнек 2 линия - проверить, при необходимости разобрать |  | 3h | 2026-04-27 09:00 A | 2026-04-27 12:00 A | 100% |  |  |  | start no earlier than 2026-04-27 09:00 | Тимофеев В; Бобренок В | 6h | 6h |
| 643 | 1.317 | слить конденсат и продуть все радиаторы компрессор |  | 1h | 2026-03-21 09:00 A | 2026-03-23 10:00 A | 100% |  |  |  | start no earlier than 2026-03-21 09:00 | Дедов В | 1h | 1h |
| 644 | 1.318 | закрепить аварийную кнопку в гидролизатной (фото в чате будет) / пожарный выключатель |  | 1h | 2026-03-22 09:00 A | 2026-03-23 10:00 A | 100% |  |  |  | start no earlier than 2026-03-22 09:00 | Бобренок В | 1h | 1h |
| 645 | 1.319 | кнопки на управление ворот зона жиров поднять и закпепить выше |  | 2h | 2026-03-18 08:00 A | 2026-03-18 11:00 A | 100% |  |  |  | start no earlier than 2026-03-18 08:00 | Макаревич А | 2h | 2h |
| 646 | 1.320 | закрепить все отбойники где завозят навески экструдерщики |  | 2h | 2026-03-18 08:00 A | 2026-03-18 11:00 A | 100% |  |  |  | start no earlier than 2026-03-18 08:00 | Макаревич А | 2h | 2h |
| 647 | 1.321 | закрыить все электро шкафы |  | 30min | 2026-03-17 08:00 A | 2026-03-17 09:30 A | 100% |  |  |  | start no earlier than 2026-03-17 08:00 | Бобренок В | 0.5h | 0.5h |
| 648 | 1.322 | поломоечная машинка устранить течь |  | 1h | 2026-03-17 08:00 A | 2026-03-17 10:00 A | 100% |  |  |  | start no earlier than 2026-03-17 08:00 | Бобренок В | 1h | 1h |
| 649 | 1.323 | закрыить крышку на пробниках, задняя стенка прикрутить |  | 30min | 2026-03-17 08:00 A | 2026-03-17 09:30 A | 100% |  |  |  | start no earlier than 2026-03-17 08:00 | Бобренок В | 0.5h | 0.5h |
| 650 | 1.324 | продувка кабельного лотка |  | 2h | 2026-03-18 09:00 A | 2026-03-18 11:00 A | 100% |  |  |  | start no earlier than 2026-03-18 09:00 | Труфанов А; Некрасов А | 4h | 4h |
| 651 | 1.325 | монтаж крючков под халаты. Получить у мастера |  | 1h | 2026-03-17 08:00 A | 2026-03-17 10:00 A | 100% |  |  |  | start no earlier than 2026-03-17 08:00 | Бобренок В | 1h | 1h |
| 652 | 1.326 | **установить расходомеры пара на ПГ** |  | 0.38d | 2026-04-01 09:00 | 2026-04-01 12:00 |  | 0.38d | 2026-10-12 09:00 |  |  |  | 3h |  |
| 653 | 1.326.1 | монтаж 1 линия расходомер / кабель / блок питания | manual | 3h | 2026-10-12 09:00 A | 2026-10-12 12:00 |  | 3h |  |  | start no earlier than 2026-10-12 09:00 | Некрасов А | 3h |  |
| 654 | 1.327 | **монтаж регистратор данных линия 1 и 2:** |  | 0.25d | 2026-03-18 09:00 A | 2026-03-18 11:00 A | 100% |  |  |  |  |  | 2h | 2h |
| 655 | 1.327.1 | подключение линия 1 |  | 2h | 2026-03-18 09:00 A | 2026-03-18 11:00 A | 100% |  |  |  | start no earlier than 2026-03-18 09:00 | Домоводов К | 2h | 2h |
| 656 | 1.328 | бойлер на экструдере - установить трубку на клапан сброса и смонтировать её ы раковину |  | 1h | 2026-03-14 09:00 A | 2026-03-16 10:00 A | 100% |  |  |  | start no earlier than 2026-03-14 09:00 | Бундин В | 1h | 1h |
| 657 | 1.329 | смазать дверную ручку (входную) |  | 1h | 2026-03-15 09:00 A | 2026-03-16 10:00 A | 100% |  |  |  | start no earlier than 2026-03-15 09:00 | Бундин В | 1h | 1h |
| 658 | 1.330 | сделать ручку дверную (вход на упаковку) |  | 1h | 2026-03-15 09:00 A | 2026-03-16 10:00 A | 100% |  |  |  | start no earlier than 2026-03-15 09:00 | Бундин В | 1h | 1h |
| 659 | 1.331 | дверная ручка в туалет (подкрутить) |  | 1h | 2026-03-15 09:00 A | 2026-03-16 10:00 A | 100% |  |  |  | start no earlier than 2026-03-15 09:00 | Бундин В | 1h | 1h |
| 660 | 1.332 | штабелер экструдера натянуть цепь |  | 1h | 2026-03-13 08:00 A | 2026-03-13 10:00 A | 100% |  |  |  | start no earlier than 2026-03-13 08:00 | Дедов В | 1h | 1h |
| 661 | 1.333 | установить розетку возле роутера. Место монтажа фото от Шуранова |  | 2h | 2026-03-14 09:00 A | 2026-03-16 11:00 A | 100% |  |  |  | start no earlier than 2026-03-14 09:00 | Бундин В | 2h | 2h |
| 662 | 1.334 | линия 1 лоток охладителя под конвейером (по фото) - поднять на 3см, что бы не цеплял сетку. Снять / пересверлить крепеж |  | 2h | 2026-03-14 09:00 A | 2026-03-16 11:00 A | 100% |  |  |  | start no earlier than 2026-03-14 09:00 | Бундин В | 2h | 2h |
| 663 | 1.335 | изготовтиь полочку для роутера с "крышей. Двух скатная". |  | 4h | 2026-03-14 09:00 A | 2026-03-16 13:00 A | 100% |  |  |  | start no earlier than 2026-03-14 09:00 | Бундин В | 4h | 4h |

| ID | WBS | Task | Type | Duration | Start | Finish | Predecessors | Complete | Constraint | Resources | Work | Actual work |
| --- | --- | --- | --- | --- | --- | --- | --- | --- | --- | --- | --- | --- |
| 664 | 1.336 | **АКБ штабелер на навесках** |  | 43d | 2026-03-13 08:00 A | 2026-05-12 18:00 A |  | 100% |  |  | 2h | 2h |
| 665 | 1.336.1 | заявка на новые АКБ, отправить | milestone | 0d | 2026-03-13 08:00 A | 2026-03-13 08:00 A |  | 100% | start no earlier than 2026-03-13 08:00 | Шуранов Ю |  |  |
| 666 | 1.336.2 | получить счет | milestone | 0d | 2026-03-16 09:00 A | 2026-03-16 09:00 A | 665 | 100% | start no earlier than 2026-03-16 09:00 | Шуранов Ю |  |  |
| 667 | 1.336.3 | доставыка\ |  | 40d | 2026-03-16 09:00 A | 2026-05-12 18:00 A | 666 | 100% | start no earlier than 2026-03-13 08:00 |  |  |  |
| 668 | 1.336.4 | замена (получить на складе 2 АКБ и поменять на штабелере) |  | 2h | 2026-03-25 09:00 A | 2026-03-25 11:00 A |  | 100% | start no earlier than 2026-03-25 09:00 | Бобренок В | 2h | 2h |
| 669 | 1.337 | замена шнеков на 1 линии по команде. Подготовить / старые увезти |  | 1h | 2026-03-14 09:00 A | 2026-03-16 10:00 A |  | 100% | start no earlier than 2026-03-14 09:00 | Бобренок В; Некрасов А | 2h | 2h |
| 670 | 1.338 | **заменить мятый профлист коррдиор подачи навесок** |  | 32.25d | 2026-03-13 09:00 A | 2026-04-28 11:00 A |  | 100% |  |  | 85h | 85h |
| 671 | 1.338.1 | расчет материал / заявка |  | 1h | 2026-03-13 09:00 A | 2026-03-13 10:00 A |  | 100% | start no earlier than 2026-03-13 09:00 | Шуранов Ю | 1h | 1h |
| 672 | 1.338.2 | доставка |  | 10d | 2026-03-13 10:00 A | 2026-03-27 10:00 A | 671 | 100% | start no earlier than 2026-03-12 08:00 | Карабанов | 80h | 80h |
| 673 | 1.338.3 | замена |  | 2h | 2026-04-28 09:00 A | 2026-04-28 11:00 A | 672 | 100% | start no earlier than 2026-04-28 09:00 | Некрасов А; Труфанов А | 4h | 4h |
| 674 | 1.339 | **заменить аллюминевый скотч на швах вентиляции** |  | 18.25d | 2026-03-12 09:00 A | 2026-04-07 11:00 A |  | 100% |  |  | 82.33h | 82.33h |
| 675 | 1.339.1 | заявка |  | 20min | 2026-03-12 09:00 A | 2026-03-12 09:20 A |  | 100% | start no earlier than 2026-03-12 08:00 | Зорькин В | 0.33h | 0.33h |
| 676 | 1.339.2 | доставка |  | 10d | 2026-03-12 09:20 A | 2026-03-26 09:20 A | 675 | 100% | start no earlier than 2026-03-12 08:00 | Карабанов | 80h | 80h |
| 677 | 1.339.3 | замена (также на улитках печей, циклона, стык регулировки шибера улитки) | manual | 2h | 2026-04-07 09:00 A | 2026-04-07 11:00 A | 676 | 100% | start no earlier than 2026-04-07 09:00 | Бундин В | 2h | 2h |
| 678 | 1.340 | **замена скорлупа утеплитель горячих труб печи** |  | 16d | 2026-03-13 09:00 A | 2026-04-05 11:00 A |  | 100% |  |  | 83h | 83h |
| 679 | 1.340.1 | заявка |  | 1h | 2026-03-13 09:00 A | 2026-03-13 10:00 A |  | 100% | start no earlier than 2026-03-13 09:00 | Зорькин В | 1h | 1h |
| 680 | 1.340.2 | доставка |  | 10d | 2026-03-13 10:00 A | 2026-03-27 10:00 A | 679 | 100% | start no earlier than 2026-03-12 08:00 | Карабанов | 80h | 80h |
| 681 | 1.340.3 | замена | manual | 2h | 2026-04-05 09:00 A | 2026-04-05 11:00 A | 680 | 100% | start no earlier than 2026-04-05 09:00 | Бундин В | 2h | 2h |
| 682 | 1.341 | **купить прокатный запайщик** |  | 85.12d? | 2026-03-16 09:00 A | 2026-07-13 10:00 A |  | 100% |  |  | 11h | 11h |
| 683 | 1.341.1 | поиск / заявка |  | 2h | 2026-03-16 09:00 A | 2026-03-16 11:00 A |  | 100% | start no earlier than 2026-03-16 09:00 | Зорькин В | 2h | 2h |
| 684 | 1.341.2 | получить счет + договор |  | 1h | 2026-05-12 09:00 A | 2026-05-12 10:00 A | 683 | 100% | start no earlier than 2026-05-12 09:00 | Зорькин В | 1h | 1h |
| 685 | 1.341.3 | оплата | milestone | 0d | 2026-05-12 10:00 A | 2026-05-12 10:00 A | 684 | 100% | start no earlier than 2026-03-12 08:00 | Домоводов К |  |  |
| 686 | 1.341.4 | доставка |  | 40d | 2026-05-12 10:00 A | 2026-07-13 10:00 A | 685 | 100% | start no earlier than 2026-03-12 08:00 |  |  |  |
| 687 | 1.341.5 | приемка / сборка |  | 1d? | 2026-06-29 09:00 A | 2026-06-29 18:00 A | 686 | 100% | start no earlier than 2026-03-12 08:00 | Тимофеев В | 8h | 8h |
| 688 | 1.342 | сборка рохли 2шт |  | 1h | 2026-03-13 09:00 A | 2026-03-13 10:00 A |  | 100% | start no earlier than 2026-03-13 09:00 | Тимофеев В | 1h | 1h |
| 689 | 1.343 | изготовить герметичную крышку на подачку гидролизата |  | 2h | 2026-05-20 09:00 A | 2026-05-20 11:00 A |  | 100% | start no earlier than 2026-05-20 09:00 | Дедов В; Шуранов Ю | 4h | 4h |

| ID | WBS | Task | Type | Duration | Start | Finish | Predecessors | Complete | Actual start | Actual finish | Constraint | Resources | Work | Actual work |
| --- | --- | --- | --- | --- | --- | --- | --- | --- | --- | --- | --- | --- | --- | --- |
| 690 | 1.344 | **установить крышку печи торцевую с стороны экструдера на шарниры** |  | 12.5d | 2026-03-25 09:00 | 2026-04-10 13:00 |  | 100% | 2026-03-06 09:00 | 2026-09-11 13:00 |  |  | 88.08h | 88.08h |
| 691 | 1.344.1 | заказ шарниры |  | 5min | 2026-03-06 09:00 A | 2026-03-06 09:05 A |  | 100% |  |  | start no earlier than 2026-03-06 08:00 | Шуранов Ю | 0.08h | 0.08h |
| 692 | 1.344.2 | доставка |  | 10d | 2026-03-06 09:05 A | 2026-03-20 09:05 A | 691 | 100% |  |  | start no earlier than 2026-03-06 08:00 | Карабанов | 80h | 80h |
| 693 | 1.344.3 | монтаж линия 1 |  | 4h | 2026-05-13 09:00 A | 2026-05-13 13:00 A | 692 | 100% |  |  | start no earlier than 2026-05-13 09:00 | Бобренок В | 4h | 4h |
| 694 | 1.344.4 | монтаж линия 1 и 2 печи (чтобы открывалась и не мешала открыванию лотку сверху) | manual | 4h | 2026-09-11 09:00 A | 2026-09-11 13:00 A | 692 | 100% |  |  | start no earlier than 2026-09-11 09:00 | Макаревич А | 4h | 4h |
| 695 | 1.345 | **квадропак заменить пружины на лапках** |  | 10.12d | 2026-03-18 09:00 A | 2026-04-01 10:00 A |  | 100% |  |  |  |  | 3h | 3h |
| 696 | 1.345.1 | попытка заменить |  | 1h | 2026-03-18 09:00 A | 2026-03-18 10:00 A |  | 100% |  |  | start no earlier than 2026-03-18 09:00 | Дедов В | 1h | 1h |
| 697 | 1.345.2 | проврить ролики на износ / заказать |  | 1h | 2026-03-19 09:00 A | 2026-03-19 10:00 A |  | 100% |  |  | start no earlier than 2026-03-19 08:00 | Зорькин В | 1h | 1h |
| 698 | 1.345.3 | проверить / разрабоать полпн прижимная пластина регулировка |  | 1h | 2026-04-01 09:00 A | 2026-04-01 10:00 A |  | 100% |  |  | start no earlier than 2026-04-01 09:00 | Шуранов Ю | 1h | 1h |
| 699 | 1.346 | **звонок на ворота по привозу навесок** |  | 37.25d | 2026-03-05 09:00 A | 2026-04-27 11:00 A |  | 100% |  |  |  |  | 82.5h | 82.5h |
| 700 | 1.346.1 | заявка на сирену / звонок |  | 30min | 2026-03-05 09:00 A | 2026-03-05 09:30 A |  | 100% |  |  | start no earlier than 2026-03-05 09:00 | Шуранов Ю | 0.5h | 0.5h |
| 701 | 1.346.2 | доставка |  | 10d | 2026-03-12 09:00 A | 2026-03-25 18:00 A | 700 | 100% |  |  | start no earlier than 2026-03-12 08:00 | Карабанов | 80h | 80h |
| 702 | 1.346.3 | монтаж кнопка и звонок на складе (кнопку устанавливаем справа от ворот- звонок возле ВРУ слева |  | 2h | 2026-04-25 09:00 A | 2026-04-27 11:00 A | 701 | 100% |  |  | start no earlier than 2026-04-25 09:00 | Бобренок В | 2h | 2h |
| 703 | 1.347 | **установить профлист на левую стену** |  | 47d? | 2026-03-12 09:00 A | 2026-05-15 18:00 A |  | 100% |  |  |  |  | 185.5h | 185.5h |
| 704 | 1.347.1 | расчет материал с Олегом |  | 1h | 2026-03-12 09:00 A | 2026-03-12 10:00 A |  | 100% |  |  | start no earlier than 2026-03-12 09:00 | Шуранов Ю | 1h | 1h |
| 705 | 1.347.2 | заявка |  | 30min | 2026-03-19 09:00 A | 2026-03-19 09:30 A | 704 | 100% |  |  | start no earlier than 2026-03-19 09:00 | Шуранов Ю | 0.5h | 0.5h |
| 706 | 1.347.3 | доставка |  | 10d | 2026-03-19 09:30 A | 2026-04-02 09:30 A | 705 | 100% |  |  | start no earlier than 2026-03-04 08:00 | Карабанов | 80h | 80h |
| 707 | 1.347.4 | монтаж пробный ряд |  | 4h | 2026-04-22 09:00 A | 2026-04-22 13:00 A |  | 100% |  |  | start no earlier than 2026-04-22 09:00 | Некрасов А; Олег; Труфанов А | 12h | 12h |
| 708 | 1.347.5 | монтаж каркас |  | 1d? | 2026-04-23 14:00 A | 2026-04-24 13:00 A | 706, 707FS+1d | 100% |  |  | start no earlier than 2026-04-22 09:00 | Некрасов А; Труфанов А | 16h | 16h |
| 709 | 1.347.6 | монтаж лист |  | 6h | 2026-04-28 09:00 A | 2026-04-28 16:00 A | 708 | 100% |  |  | start no earlier than 2026-04-28 09:00 | Некрасов А; Труфанов А | 12h | 12h |
| 710 | 1.347.7 | монтаж уровень 2 |  | 4d | 2026-05-12 09:00 A | 2026-05-15 18:00 A |  | 100% |  |  | start no earlier than 2026-05-12 08:00 | Некрасов А; Труфанов А | 64h | 64h |
| 711 | 1.348 | **модернизация вентиляции** |  | 135.5d | 2026-03-13 09:00 A | 2026-09-15 13:00 A |  | 100% |  |  |  |  | 14.5h | 14.5h |
| 712 | 1.348.1 | заявка врезки для отбора проб |  | 15min | 2026-08-21 09:00 A | 2026-08-21 09:15 A |  | 100% |  |  | start no earlier than 2026-08-21 09:00 | Зорькин В | 0.25h | 0.25h |
| 713 | 1.348.2 | контроль доставки врезки для отбора проб |  | 15min | 2026-09-09 09:00 A | 2026-09-09 09:15 A | 712FS+7d | 100% |  |  | start no earlier than 2026-09-09 09:00 | Зорькин В | 0.25h | 0.25h |
| 714 | 1.348.3 | монтаж врезки для отбора проб |  | 4h | 2026-09-15 09:00 A | 2026-09-15 13:00 A | 713FS+1d | 100% |  |  | start no earlier than 2026-09-15 09:00 | Некрасов А; Труфанов А | 8h | 8h |
| 715 | 1.348.4 | составить схему, расчет |  | 2h | 2026-03-13 09:00 A | 2026-03-13 11:00 A |  | 100% |  |  | start no earlier than 2026-03-13 09:00 | Домоводов К | 2h | 2h |
| 716 | 1.348.5 | монтаж вентиляторов |  | 4h | 2026-05-12 09:00 A | 2026-05-12 13:00 A |  | 100% |  |  | start no earlier than 2026-05-12 08:00 | оплот | 4h | 4h |

| ID | WBS | Task | Type | Duration | Start | Finish | Predecessors | Complete | Constraint | Resources | Work | Actual work |
| --- | --- | --- | --- | --- | --- | --- | --- | --- | --- | --- | --- | --- |
| 717 | 1.349 | **заменаить фитинги на жирах** |  | 44.12d | 2026-02-19 09:00 A | 2026-04-22 10:00 A |  | 100% |  |  | 81.5h | 81.5h |
| 718 | 1.349.1 | заявка |  | 30min | 2026-02-19 09:00 A | 2026-02-19 09:30 A |  | 100% | start no earlier than 2026-02-19 09:00 | Шуранов Ю | 0.5h | 0.5h |
| 719 | 1.349.2 | доставка |  | 10d | 2026-02-19 09:30 A | 2026-03-05 09:30 A | 718 | 100% |  | Карабанов | 80h | 80h |
| 720 | 1.349.3 | контроль поставки | milestone | 0d | 2026-03-12 08:00 A | 2026-03-12 08:00 A | 719 | 100% | start no earlier than 2026-03-12 08:00 | Шуранов Ю |  |  |
| 721 | 1.349.4 | контроль. Пришли опять не те | milestone | 0min | 2026-03-12 09:00 A | 2026-03-12 09:00 A | 719, 720 | 100% | start no earlier than 2026-03-12 09:00 | Зорькин В |  |  |
| 722 | 1.349.5 | контроль | milestone | 0d | 2026-04-01 09:00 A | 2026-04-01 09:00 A |  | 100% | start no earlier than 2026-04-01 09:00 | Зорькин В |  |  |
| 723 | 1.349.6 | замена |  | 1h | 2026-04-22 09:00 A | 2026-04-22 10:00 A | 721FS+2d | 100% | start no earlier than 2026-04-22 09:00 | Бобренок В | 1h | 1h |
| 724 | 1.350 | **жиротопка замена воздухоотводчиков** |  | 24.12d | 2026-03-04 09:00 A | 2026-04-07 10:00 A |  | 100% |  |  | 41.25h | 41.25h |
| 725 | 1.350.1 | заявка |  | 15min | 2026-03-04 09:00 A | 2026-03-04 09:15 A |  | 100% | start no earlier than 2026-03-04 09:00 | Зорькин В | 0.25h | 0.25h |
| 726 | 1.350.2 | доставка |  | 5d | 2026-03-04 09:15 A | 2026-03-11 09:15 A | 725 | 100% | start no earlier than 2026-02-27 08:00 | Карабанов | 40h | 40h |
| 727 | 1.350.3 | замена |  | 1h | 2026-04-07 09:00 A | 2026-04-07 10:00 A | 726 | 100% | start no earlier than 2026-04-07 09:00 | Бундин В | 1h | 1h |
| 728 | 1.351 | **увеличить освещение в зоне квадропака** |  | 11.12d | 2026-03-04 09:00 A | 2026-03-19 10:00 A |  | 100% |  |  | 83.5h | 83.5h |
| 729 | 1.351.1 | составить список мматериал для монтажа |  | 30min | 2026-03-04 09:00 A | 2026-03-04 09:30 A |  | 100% | start no earlier than 2026-03-04 09:00 | Зорькин В; Шуранов Ю | 1h | 1h |
| 730 | 1.351.2 | заявка трос, светильники |  | 30min | 2026-03-04 09:30 A | 2026-03-04 10:00 A | 729 | 100% | start no earlier than 2026-02-27 08:00 | Шуранов Ю | 0.5h | 0.5h |
| 731 | 1.351.3 | доставка |  | 10d | 2026-03-05 10:00 A | 2026-03-19 10:00 A | 730FS+1d | 100% | start no earlier than 2026-02-27 08:00 | Карабанов | 80h | 80h |
| 732 | 1.351.4 | монтаж |  | 2h | 2026-03-06 09:00 A | 2026-03-06 11:00 A |  | 100% | start no earlier than 2026-03-06 09:00 | Бобренок В | 2h | 2h |
| 733 | 1.352 | **установить орг стекло/нерж на обратный ход ленты на раму конвейера** |  | 38.25d | 2026-03-03 09:00 A | 2026-04-24 11:00 A |  | 100% |  |  | 83.5h | 83.5h |
| 734 | 1.352.1 | заявка нерж |  | 30min | 2026-03-03 09:00 A | 2026-03-03 09:30 A |  | 100% | start no earlier than 2026-03-03 09:00 | Зорькин В | 0.5h | 0.5h |
| 735 | 1.352.2 | доставка |  | 10d | 2026-03-03 09:30 A | 2026-03-17 09:30 A | 734 | 100% | start no earlier than 2026-03-02 09:00 | Карабанов | 80h | 80h |
| 736 | 1.352.3 | подготовка материала в размер по аналогии 2 линии |  | 1h | 2026-04-15 09:00 A | 2026-04-15 10:00 A | 735 | 100% | start no earlier than 2026-04-15 09:00 | Бундин В | 1h | 1h |
| 737 | 1.352.4 | установка на остановке 1 линии (переустановить) |  | 2h | 2026-04-24 09:00 A | 2026-04-24 11:00 A |  | 100% | start no earlier than 2026-04-24 09:00 | Бобренок В | 2h | 2h |
| 738 | 1.353 | **установить роутер в зону экструдера для регистрации данных** |  | 2.12d | 2026-03-02 09:00 A | 2026-03-04 10:00 A |  | 100% |  |  | 10.17h | 10.17h |
| 739 | 1.353.1 | монтаж кабель / розетка, роутер |  | 4h | 2026-03-02 09:00 A | 2026-03-02 13:00 A |  | 100% | start no earlier than 2026-03-02 09:00 | Некрасов А; Труфанов А | 8h | 8h |
| 740 | 1.353.2 | Монтаж розетки для роутера |  | 1h | 2026-03-03 09:00 A | 2026-03-03 10:00 A |  | 100% | start no earlier than 2026-03-03 09:00 | Тимофеев В | 1h | 1h |
| 741 | 1.353.3 | Заявка Айтишнику на монтаж наконечников |  | 10min | 2026-03-03 09:00 A | 2026-03-03 09:10 A |  | 100% | start no earlier than 2026-03-03 09:00 | Зорькин В | 0.17h | 0.17h |
| 742 | 1.353.4 | Монтаж штекеров на кабель |  | 1h | 2026-03-04 09:00 A | 2026-03-04 10:00 A |  | 100% | start no earlier than 2026-03-04 09:00 | Коленкоров | 1h | 1h |

| ID | WBS | Task | Duration | Start | Finish | Predecessors | Complete | Constraint | Resources | Work | Actual work |
| --- | --- | --- | --- | --- | --- | --- | --- | --- | --- | --- | --- |
| 743 | 1.354 | **ремонт приточной вентиляции** | 47.25d | 2026-02-26 09:00 A | 2026-05-04 11:00 A |  | 100% |  |  | 334.5h | 334.5h |
| 744 | 1.354.1 | заявка калорифер | 30min | 2026-03-04 09:00 A | 2026-03-04 09:30 A |  | 100% | start no earlier than 2026-03-04 09:00 | Зорькин В | 0.5h | 0.5h |
| 745 | 1.354.2 | доставка | 10d | 2026-03-04 09:30 A | 2026-03-20 09:30 A | 744 | 100% |  | Карабанов | 80h | 80h |
| 746 | 1.354.3 | замена калорифер | 4h | 2026-03-11 09:00 A | 2026-03-11 13:00 A |  | 100% | start no earlier than 2026-03-11 09:00 | Некрасов А; Труфанов А | 8h | 8h |
| 747 | 1.354.4 | дать фото насоса | 20min | 2026-02-26 09:00 A | 2026-02-26 09:20 A |  | 100% | start no earlier than 2026-02-26 08:00 | Бундин В | 0.33h | 0.33h |
| 748 | 1.354.5 | заявка насос вода | 30min | 2026-03-02 09:30 A | 2026-03-02 10:00 A | 744, 747 | 100% | start no earlier than 2026-02-26 08:00 | Зорькин В | 0.5h | 0.5h |
| 749 | 1.354.6 | доставка | 10d | 2026-03-02 10:00 A | 2026-03-16 10:00 A | 748 | 100% | start no earlier than 2026-02-26 08:00 | Карабанов | 80h | 80h |
| 750 | 1.354.7 | контроль доставки насос и заслонка | 10min | 2026-03-24 09:00 A | 2026-03-24 09:10 A |  | 100% | start no earlier than 2026-03-24 08:00 | Зорькин В | 0.17h | 0.17h |
| 751 | 1.354.8 | замена насоса | 1h | 2026-03-25 09:10 A | 2026-03-25 10:10 A | 750FS+1d | 100% | start no earlier than 2026-03-24 09:00 | Труфанов А | 1h | 1h |
| 752 | 1.354.9 | заявка привод заслонки | 30min | 2026-03-04 09:00 A | 2026-03-04 09:30 A | 748 | 100% | start no earlier than 2026-03-04 09:00 | Зорькин В | 0.5h | 0.5h |
| 753 | 1.354.10 | доставка | 10d | 2026-03-04 09:30 A | 2026-03-18 09:30 A | 752 | 100% | start no earlier than 2026-02-26 08:00 | Карабанов | 80h | 80h |
| 754 | 1.354.11 | замена привода заслонки | 1h | 2026-05-04 09:00 A | 2026-05-04 10:00 A | 750FS+1d | 100% | start no earlier than 2026-05-04 09:00 | Бобренок В | 1h | 1h |
| 755 | 1.354.12 | заявка фильтры на приточная вентиляция | 30min | 2026-03-04 09:00 A | 2026-03-04 09:30 A |  | 100% | start no earlier than 2026-03-04 09:00 | Зорькин В | 0.5h | 0.5h |
| 756 | 1.354.13 | доставка | 10d | 2026-03-04 09:30 A | 2026-03-18 09:30 A | 755 | 100% | start no earlier than 2026-02-27 08:00 | Карабанов | 80h | 80h |
| 757 | 1.354.14 | замена | 2h | 2026-05-04 09:00 A | 2026-05-04 11:00 A | 756 | 100% | start no earlier than 2026-05-04 09:00 | Некрасов А | 2h | 2h |
| 758 | 1.355 | **монтаж регистратор данных линия 1 и 2:** | 1.12d | 2026-02-24 09:00 A | 2026-02-25 10:00 A |  | 100% |  |  | 5h | 5h |
| 759 | 1.355.1 | установить розетку и автомат для для блока питания в ШУ экструдера, без подключения | 2h | 2026-02-24 09:00 A | 2026-02-24 11:00 A |  | 100% | start no earlier than 2026-02-24 09:00 | Дедов В | 2h | 2h |
| 760 | 1.355.2 | монтаж безподключения кабель RS485 по аналогии с линия 3 - только часотный привод. На складе. | 1h | 2026-02-24 09:00 A | 2026-02-24 10:00 A |  | 100% | start no earlier than 2026-02-24 09:00 | Дедов В | 1h | 1h |
| 761 | 1.355.3 | подключение розеток для блока питания в ШУ | 1h | 2026-02-25 09:00 A | 2026-02-25 10:00 A |  | 100% | start no earlier than 2026-02-25 09:00 | Некрасов А | 1h | 1h |
| 762 | 1.355.4 | монтаж пультов управления и индикации регистратор, по аналогии с линия 3 | 1h | 2026-02-25 09:00 A | 2026-02-25 10:00 A |  | 100% | start no earlier than 2026-02-25 09:00 | Некрасов А | 1h | 1h |
| 763 | 1.356 | заменить пластик втулку на металл деталь уплотнение вала прекондицинера 2 линия | 1d? | 2025-09-08 09:00 A | 2025-09-08 18:00 A |  | 100% | start no earlier than 2025-09-08 09:00 |  |  |  |
| 764 | 1.357 | **баки жир 2 линия устноавить наконечники. От 23.05.25** | 265.25d | 2025-04-16 09:00 A | 2026-04-22 11:00 A |  | 100% |  |  | 42.5h | 42.5h |
| 765 | 1.357.1 | заявка на наконечнки | 30min | 2025-04-16 09:00 A | 2025-04-16 09:30 A |  | 100% | start no earlier than 2025-04-16 09:00 | Зорькин В | 0.5h | 0.5h |
| 766 | 1.357.2 | доставка | 5d | 2025-04-16 09:30 A | 2025-04-23 09:30 A | 765 | 100% | start no earlier than 2025-04-14 09:00 | Мультан | 40h | 40h |
| 767 | 1.357.3 | ТО каблей, клемников | 2h | 2026-04-22 09:00 A | 2026-04-22 11:00 A | 766 | 100% | start no earlier than 2026-04-22 09:00 | Труфанов А | 2h | 2h |

| ID | WBS | Task | Duration | Start | Finish | Predecessors | Complete | Actual finish | Constraint | Resources | Work | Actual work |
| --- | --- | --- | --- | --- | --- | --- | --- | --- | --- | --- | --- | --- |
| 768 | 1.358 | **установить фильтры на жир** | 89.12d? | 2025-05-14 09:00 A | 2025-09-16 10:00 A |  | 100% |  |  |  | 50h | 50h |
| 769 | 1.358.1 | изготовить переходники токарь разместить | 1h | 2025-09-08 09:00 A | 2025-09-08 10:00 A |  | 100% |  | start no earlier than 2025-09-08 09:00 | Зорькин В | 1h | 1h |
| 770 | 1.358.2 | контроль доставки | 5d | 2025-09-08 10:00 A | 2025-09-15 10:00 A | 769 | 100% |  | start no earlier than 2025-09-08 09:00 | Зорькин В | 40h | 40h |
| 771 | 1.358.3 | замена | 1d? | 2025-09-15 10:00 A | 2025-09-16 10:00 A | 770 | 100% |  | start no earlier than 2025-09-08 09:00 | Тимофеев В | 8h | 8h |
| 772 | 1.358.4 | установить фильтры на жир 2шт через краны на тройник | 1h | 2025-05-14 09:00 A | 2025-05-14 10:00 A |  | 100% |  | start no earlier than 2025-05-14 09:00 | Тимофеев В | 1h | 1h |
| 773 | 1.359 | **палетные ворота подача навесок + подача жир** | 14d? | 2025-07-17 09:00 A | 2025-08-05 18:00 A |  | 100% |  |  |  | 32h | 32h |
| 774 | 1.359.1 | подготовить чертеж | 1d? | 2025-07-17 09:00 A | 2025-07-17 18:00 A |  | 100% |  | start no earlier than 2025-07-17 09:00 | Зорькин В | 8h | 8h |
| 775 | 1.359.2 | сборка рамы | 2d | 2025-07-25 09:00 A | 2025-07-28 18:00 A | 774 | 100% |  | start no earlier than 2025-07-25 09:00 | Некрасов А | 16h | 16h |
| 776 | 1.359.3 | монтаж | 1d? | 2025-08-05 09:00 A | 2025-08-05 18:00 A | 775 | 100% |  | start no earlier than 2025-08-05 09:00 | Некрасов А | 8h | 8h |
| 777 | 1.360 | защита подшипников паронтом + подготовка | 4h | 2025-06-18 09:00 A | 2025-06-18 13:00 A |  | 100% |  | start no earlier than 2025-06-18 09:00 | Тимофеев В | 4h | 4h |
| 778 | 1.361 | **квадропак ТО + составить карту смазки и ТО + составить список ЗИП** | 0.5d | 2025-04-02 09:00 A | 2025-04-02 13:00 A |  | 100% |  |  |  | 4h | 4h |
| 779 | 1.361.1 | оформить карту ТО | 4h | 2025-04-02 09:00 A | 2025-04-02 13:00 A |  | 100% |  | start no earlier than 2025-04-02 09:00 | Зорькин В | 4h | 4h |
| 780 | 1.362 | **квадропак некрасивый шов - золотинка** | 104.25d | 2025-01-13 09:00 A | 2025-06-06 11:00 |  | 100% | 2025-04-17 16:30 |  |  | 8h | 8h |
| 781 | 1.362.1 | **изготовление термоножа с вставкойвставкой** | 0.12d | 2025-01-13 09:00 A | 2025-01-13 10:00 A |  | 100% |  |  |  | 1h | 1h |
| 782 | 1.362.1.1 | чертеж | 1h | 2025-01-13 09:00 A | 2025-01-13 10:00 A |  | 100% |  | start no earlier than 2025-01-13 09:00 | Зорькин В | 1h | 1h |
| 783 | 1.362.2 | **установка тефлона на термонож** | 42.25d | 2025-04-17 09:00 A | 2025-06-06 11:00 |  | 100% | 2025-04-17 16:30 |  |  | 7h | 7h |
| 784 | 1.362.2.1 | разработать метод крепления | 30min | 2025-04-17 09:00 A | 2025-04-17 09:30 A |  | 100% |  | start no earlier than 2025-04-17 09:00 | Зорькин В; Шуранов Ю | 1h | 1h |
| 785 | 1.362.2.2 | чертеж | 4h | 2025-04-17 09:30 A | 2025-04-17 14:30 A | 784 | 100% |  | start no earlier than 2025-01-17 09:00 | Зорькин В | 4h | 4h |
| 786 | 1.362.2.3 | орг изготовление деталей | 2h | 2025-04-17 14:30 A | 2025-04-17 16:30 A | 785 | 100% |  | start no earlier than 2025-04-16 09:00 | Шуранов Ю | 2h | 2h |
| 787 | 1.363 | **режет кабель ЛУКАС силовой в лотке эстакада у КПП** | 444.5d | 2024-08-02 09:00 A | 2026-04-16 13:00 A |  | 100% |  |  |  | 4.5h | 4.5h |
| 788 | 1.363.1 | решение о переговорах ГП | 30min | 2024-08-02 09:00 A | 2024-08-02 09:30 A |  | 100% |  | start no earlier than 2024-08-02 09:00 | Домоводов К | 0.5h | 0.5h |
| 789 | 1.363.2 | перекладка кабель | 4h | 2026-04-16 09:00 A | 2026-04-16 13:00 A |  | 100% |  | start no earlier than 2026-04-16 08:00 | Олег | 4h | 4h |
| 790 | 1.364 | **ШР2.2 замена автомат на циклон на номинальный** | 5.06d | 2026-04-10 09:00 A | 2026-04-17 09:30 A |  | 100% |  |  |  | 41.5h | 41.5h |
| 791 | 1.364.1 | прорверить какой стоит / заявка по мощности мотора | 30min | 2026-04-10 09:00 A | 2026-04-10 09:30 A |  | 100% |  | start no earlier than 2026-04-10 09:00 | Тимофеев В | 0.5h | 0.5h |
| 792 | 1.364.2 | достьавка | 5d | 2026-04-10 09:30 A | 2026-04-17 09:30 A | 791 | 100% |  | start no earlier than 2024-03-04 09:00 | Малинина М | 40h | 40h |
| 793 | 1.364.3 | замена | 1h | 2026-04-16 09:30 A | 2026-04-16 10:30 A | 792 | 100% |  | start no earlier than 2026-04-06 09:00 | Шуранов Ю | 1h | 1h |

| ID | WBS | Task | Type | Duration | Start | Finish | Predecessors | Complete | Remaining | Total slack | Free slack | Constraint | Resources | Work | Actual work |
| --- | --- | --- | --- | --- | --- | --- | --- | --- | --- | --- | --- | --- | --- | --- | --- |
| 794 | 1.365 | **кронштейн фотометки ТЕКО усилить** |  | 10.12d | 2024-09-11 09:00 A | 2024-09-25 10:00 A |  | 100% |  |  |  |  |  | 82h | 82h |
| 795 | 1.365.1 | поиск заявка кронштейна для датчика с регулировкой в3 плоскостях |  | 1h | 2024-09-11 09:00 A | 2024-09-11 10:00 A |  | 100% |  |  |  | start no earlier than 2024-09-11 09:00 | Зорькин В | 1h | 1h |
| 796 | 1.365.2 | доставка |  | 10d | 2024-09-11 10:00 A | 2024-09-25 10:00 A | 795 | 100% |  |  |  | start no earlier than 2024-09-11 09:00 | Мультан | 80h | 80h |
| 797 | 1.365.3 | замена |  | 1h | 2024-09-21 10:00 A | 2024-09-23 10:00 A | 796 | 100% |  |  |  | start no earlier than 2024-09-11 09:00 | Тимофеев В | 1h | 1h |
| 798 | 1.366 | **квадропак греет пневмоцилиндр термоножа** |  | 14.5d | 2024-09-12 09:00 A | 2024-10-02 13:00 A |  | 100% |  |  |  |  |  | 85h | 85h |
| 799 | 1.366.1 | решение о применении теплоизоляц пластины / заявка |  | 1h | 2024-09-12 09:00 A | 2024-09-12 10:00 A |  | 100% |  |  |  | start no earlier than 2024-09-12 09:00 | Зорькин В | 1h | 1h |
| 800 | 1.366.2 | доставка |  | 10d | 2024-09-12 10:00 A | 2024-09-26 10:00 A | 799 | 100% |  |  |  | start no earlier than 2024-09-11 09:00 | Мультан | 80h | 80h |
| 801 | 1.366.3 | замена |  | 4h | 2024-10-02 09:00 A | 2024-10-02 13:00 A | 800 | 100% |  |  |  | start no earlier than 2024-10-02 09:00 | Тимофеев В | 4h | 4h |
| 802 | 1.367 | **ремонт комппрессора - сдать по гарантии** |  | 739.12d | 2023-10-31 09:00 A | 2026-08-31 10:00 A |  | 100% |  |  |  |  |  | 2h | 2h |
| 803 | 1.367.1 | контроль снабжения - отправитьт поставщику |  | 1h | 2023-10-31 09:00 A | 2023-10-31 10:00 A |  | 100% |  |  |  | start no earlier than 2023-10-31 09:00 | Лобанов И | 1h | 1h |
| 804 | 1.367.2 | контроль возврата |  | 1h | 2026-08-31 09:00 A | 2026-08-31 10:00 A | 803 | 100% |  |  |  | start no earlier than 2026-08-31 09:00 | Зорькин В | 1h | 1h |
| 805 | 1.368 | режет металлом изоляцию кабеля в прорходе стены в 1 цех угол комппрессора - обезвредить |  | 1h | 2023-12-28 09:00 A | 2023-12-28 10:00 A |  | 100% |  |  |  | start no earlier than 2023-12-28 09:00 | Бобренок В; Дедов В | 2h | 2h |
| 806 | 1.369 | **карантин и потом удалить** |  | 206.25d? | 2026-03-13 09:00 A | 2026-12-09 11:00 |  | 68% | 65.7d? | 65.34d |  |  |  | 264.17h | 180.42h |
| 807 | 1.369.1 | **замена сетка печи линия 1** |  | 44.09d? | 2026-08-12 09:00 A | 2026-10-02 09:45 |  | 8% | 40.52d? | 119.5d |  |  |  | 9.5h | 1h |
| 808 | 1.369.1.1 | замерить параметры сетки |  | 15min | 2026-08-12 09:00 A | 2026-08-12 09:15 A |  | 100% |  |  |  | start no earlier than 2026-08-12 09:00 | Домоводов К; Тимофеев В | 0.5h | 0.5h |
| 809 | 1.369.1.2 | получить счет на сетку КИТАЙ |  | 15min | 2026-08-17 09:00 A | 2026-08-17 09:15 A | 808 | 100% |  |  |  | start no earlier than 2026-08-17 09:00 | Зорькин В | 0.25h | 0.25h |
| 810 | 1.369.1.3 | контроль оплата | milestone | 0d | 2026-08-21 09:00 A | 2026-08-21 09:00 A | 809FS+2d | 100% |  |  |  | start no earlier than 2026-08-21 09:00 | Зорькин В |  |  |
| 811 | 1.369.1.4 | контроль доставки |  | 15min | 2026-09-30 09:00 A | 2026-09-30 09:15 A | 810FS+30d | 100% |  |  |  | start no earlier than 2026-09-30 09:00 | Зорькин В | 0.25h | 0.25h |
| 812 | 1.369.1.5 | приемка |  | 30min | 2026-09-30 09:15 | 2026-09-30 09:45 | 811 |  |  | 119.5d | 0d | start no earlier than 2026-08-10 08:00 | Зорькин В | 0.5h |  |
| 813 | 1.369.1.6 | замена |  | 1d? | 2026-10-01 09:45 | 2026-10-02 09:45 | 812FS+1d |  |  | 119.5d |  | start no earlier than 2026-09-26 09:00 | Тимофеев В | 8h |  |
| 814 | 1.369.2 | **зависает диспелей на расходомере 2л** |  | 59.06d | 2026-08-11 09:00 A | 2026-10-20 09:30 |  | 82% | 10.74d | 105.53d |  |  |  | 2.75h | 2.25h |
| 815 | 1.369.2.1 | контроль поставки |  | 15min | 2026-08-11 09:00 A | 2026-08-11 09:15 A |  | 100% |  |  |  | start no earlier than 2026-08-11 09:00 | Домоводов К | 0.25h | 0.25h |
| 816 | 1.369.2.2 | замена кабель к монитору |  | 30min | 2026-08-19 09:00 A | 2026-08-19 09:30 A | 815 | 100% |  |  |  | start no earlier than 2026-08-19 09:00 | Домоводов К | 0.5h | 0.5h |
| 817 | 1.369.2.3 | объеденить минус шину контроллера с нулевым проводом оборудования ч/з резистор 10 Ом |  | 30min | 2026-10-20 09:00 | 2026-10-20 09:30 |  |  |  | 105.53d |  | start no earlier than 2026-10-20 09:00 | Дедов В | 0.5h |  |
| 818 | 1.369.2.4 | замена кабель от ЧП к контроллеру на экранированный |  | 30min | 2026-08-24 09:00 A | 2026-08-24 09:30 A |  | 100% |  |  |  | start no earlier than 2026-08-24 09:00 | Домоводов К | 0.5h | 0.5h |
| 819 | 1.369.2.5 | замена блок питания 5в |  | 1h | 2026-08-13 09:00 A | 2026-08-13 10:00 A |  | 100% |  |  |  | start no earlier than 2026-08-13 09:00 | Труфанов А | 1h | 1h |

| ID | WBS | Task | Duration | Start | Finish | Predecessors | Complete | Remaining | Total slack | Free slack | Constraint | Resources | Work | Actual work |
| --- | --- | --- | --- | --- | --- | --- | --- | --- | --- | --- | --- | --- | --- | --- |
| 820 | 1.369.3 | **ревизия красного смесителя 2 линия (просыпается мука)** | 34.03d | 2026-08-17 09:00 A | 2026-09-25 09:15 |  | 92% | 2.62d | 126.56d |  |  |  | 3.25h | 3h |
| 821 | 1.369.3.1 | подтянуть торцевое уплотнение смесителя | 30min | 2026-08-17 09:00 A | 2026-08-17 09:30 A |  | 100% |  |  |  | start no earlier than 2026-08-17 09:00 | Бундин В | 0.5h | 0.5h |
| 822 | 1.369.3.2 | запрос штатное уплотнеие у производителя / заявка | 30min | 2026-08-19 09:00 A | 2026-08-19 09:30 A |  | 100% |  |  |  | start no earlier than 2026-08-19 09:00 | Шуранов Ю | 0.5h | 0.5h |
| 823 | 1.369.3.3 | контроль поставки уплотнение торцевое вала | 15min | 2026-09-25 09:00 | 2026-09-25 09:15 | 822FS+5d |  |  | 126.56d |  | start no earlier than 2026-09-25 09:00 | Зорькин В | 0.25h |  |
| 824 | 1.369.3.4 | замена | 2h | 2026-09-01 09:00 A | 2026-09-01 11:00 A | 823FS+1d | 100% |  |  |  | start no earlier than 2026-09-04 09:00 | Тимофеев В | 2h | 2h |
| 825 | 1.369.4 | **выполнить смотровые люки состояния цепи средниий и верхние этажи. На торцевой крышке с стороны экструдера.** | 37d | 2026-07-14 09:00 A | 2026-09-02 18:00 |  | 13% | 32.29d | 147.59d |  |  |  | 9.17h | 1.17h |
| 826 | 1.369.4.1 | заявка шарниры нерж + бугельный зажим | 1h | 2026-07-14 09:00 A | 2026-07-14 10:00 A |  | 100% |  |  |  | start no earlier than 2026-07-14 08:00 | Домоводов К | 1h | 1h |
| 827 | 1.369.4.2 | контроль доставка | 10min | 2026-08-17 09:00 A | 2026-08-17 09:10 A | 826FS+7d | 100% |  |  |  | start no earlier than 2026-08-17 09:00 | Шуранов Ю | 0.17h | 0.17h |
| 828 | 1.369.4.3 | монтаж 1 линия | 4h | 2026-09-02 09:00 | 2026-09-02 13:00 | 827FS+1d |  |  | 147.59d | 0d | start no earlier than 2026-09-02 09:00 | Макаревич А | 4h |  |
| 829 | 1.369.4.4 | монтаж 2 линия | 4h | 2026-09-02 14:00 | 2026-09-02 18:00 | 828 |  |  | 147.59d |  | start no earlier than 2026-07-14 08:00 | Макаревич А | 4h |  |
| 830 | 1.369.5 | **сборка раковина нерж для мойки конвейер** | 7.25d? | 2026-11-30 09:00 | 2026-12-09 11:00 |  |  |  | 65.34d |  |  |  | 34h |  |
| 831 | 1.369.5.1 | подготовить данные, оформить как проект / инициировать совещание | 2h | 2026-11-30 09:00 | 2026-11-30 11:00 |  |  |  | 65.34d | 0d | start no earlier than 2026-11-30 09:00 | Зорькин В | 2h |  |
| 832 | 1.369.5.2 | совещание с руководителями / фиксация решения | 1d? | 2026-12-01 11:00 | 2026-12-02 11:00 | 831FS+1d |  |  | 65.34d | 0d | start no earlier than 2026-08-31 09:00 | Зорькин В | 8h |  |
| 833 | 1.369.5.3 | подготовить чертеж раковины, проверить материал | 1d? | 2026-12-03 11:00 | 2026-12-04 11:00 | 832FS+1d |  |  | 65.34d | 0d | start no earlier than 2026-09-08 09:00 | Зорькин В | 8h |  |
| 834 | 1.369.5.4 | сборка | 2d | 2026-12-07 11:00 | 2026-12-09 11:00 | 833FS+1d |  |  | 65.34d |  | start no earlier than 2026-07-14 08:00 | Бундин В | 16h |  |
| 835 | 1.369.6 | **изготовить шило для экструдерщиков, они подскажут** | 1h? | 2026-06-26 09:00 | 2026-06-26 10:00 |  |  |  |  |  |  |  | 0.25h |  |
| 836 | 1.369.6.1 | заказать спицы не пустые | 15min | 2026-09-01 09:00 | 2026-09-01 09:15 |  |  |  | 149.56d |  | start no earlier than 2026-09-01 09:00 | Шуранов Ю | 0.25h |  |
| 837 | 1.369.7 | модернизация опроры пневмоцилиндра встряживателя №1 квадропак | 4h | 2026-10-21 09:00 | 2026-10-21 13:00 |  |  |  | 104.09d |  | start no earlier than 2026-10-21 09:00 | Некрасов А | 4h |  |
| 838 | 1.369.8 | **установка фосунок - подача жира 1 линия** | 22.12d? | 2026-06-05 09:00 A | 2026-07-07 10:00 |  | 17% | 18.44d? | 189.47d |  |  |  | 4h | 2h |
| 839 | 1.369.8.1 | сборка кронштейн для фильтров + счетчик/ покраска | 1h | 2026-06-05 09:00 A | 2026-06-05 10:00 A |  | 100% |  |  |  | start no earlier than 2026-06-05 09:00 | Тимофеев В | 1h | 1h |
| 840 | 1.369.8.2 | установка | 1d? | 2026-07-06 09:00 | 2026-07-06 18:00 |  |  |  | 189.59d |  | start no earlier than 2026-07-06 09:00 |  |  |  |
| 841 | 1.369.8.3 | монтаж в линию | 2h | 2026-07-06 09:00 | 2026-07-06 11:00 |  |  |  | 190.34d |  | start no earlier than 2026-07-06 09:00 | Тимофеев В | 2h |  |
| 842 | 1.369.8.4 | монтаж розетка для блок питания 5в для регистратора | 1h | 2026-07-07 09:00 A | 2026-07-07 10:00 A |  | 100% |  |  |  | start no earlier than 2026-07-07 09:00 | Тимофеев В | 1h | 1h |
| 843 | 1.369.9 | **обслуживание инсекьюеров, утлизация отработанных ламп** | 127.12d | 2026-04-21 08:00 A | 2026-10-05 10:00 |  | 98% | 2.84d | 117.47d |  |  |  | 89.5h | 87.5h |
| 844 | 1.369.9.1 | Составить список ламп по цехам и передать Зорькину | 2h | 2026-04-21 08:00 A | 2026-04-21 11:00 A |  | 100% |  |  |  | start no earlier than 2026-04-21 08:00 | Тимофеев В | 2h | 2h |
| 845 | 1.369.9.2 | Заказать новые лампы | 30min | 2026-04-21 10:00 A | 2026-04-21 10:30 A | 844 | 100% |  |  |  | start no earlier than 2026-04-21 08:00 | Зорькин В | 0.5h | 0.5h |
| 846 | 1.369.9.3 | доставка | 10d | 2026-04-21 10:30 A | 2026-05-05 10:30 A | 845 | 100% |  |  |  | start no earlier than 2026-04-21 08:00 | Карабанов | 80h | 80h |
| 847 | 1.369.9.4 | снять все светильники мухоловки, извлечь лампы, уложить аккуратно в коробку (оставить в слесарке отработанные) светильники снятые передать мастеру смены для мытья | 2h | 2026-05-05 10:30 A | 2026-05-05 12:30 A | 846 | 100% |  |  |  | start no earlier than 2026-05-01 09:00 | Бобренок В | 2h | 2h |
| 848 | 1.369.9.5 | после чистки установить лампы в светильники, тусклые замнеить | 2h | 2026-05-12 09:00 A | 2026-05-12 11:00 A | 847 | 100% |  |  |  | start no earlier than 2026-05-12 09:00 | Бундин В | 2h | 2h |
| 849 | 1.369.9.6 | сообщить кол-во замененных ламп нач цехов | 1h | 2026-05-12 11:00 A | 2026-05-12 12:00 A | 848 | 100% |  |  |  | start no earlier than 2026-05-01 09:00 | Шуранов Ю | 1h | 1h |
| 850 | 1.369.9.7 | запрос договор на утилизацию ламп | 1h | 2026-09-14 09:00 | 2026-09-14 10:00 |  |  |  | 137.34d | 19.88d | start no earlier than 2026-09-14 09:00 | Домоводов К | 1h |  |
| 851 | 1.369.9.8 | подготовить лампы к утилизации | 1h | 2026-10-05 09:00 | 2026-10-05 10:00 | 849, 850 |  |  | 117.47d |  | start no earlier than 2026-10-05 09:00 | Тимофеев В | 1h |  |

| ID | WBS | Task | Duration | Start | Finish | Predecessors | Complete | Remaining | Actual start | Total slack | Constraint | Resources | Work | Actual work |
| --- | --- | --- | --- | --- | --- | --- | --- | --- | --- | --- | --- | --- | --- | --- |
| 852 | 1.369.10 | **установить принтер датаматрикс на пролистыватель** | 151d? | 2026-03-13 09:00 A | 2026-09-30 18:00 |  | 20% | 120.8d? |  | 120.59d |  |  | 11h | 3h |
| 853 | 1.369.10.1 | разработка крепления принтера | 1h | 2026-03-13 09:00 A | 2026-03-13 10:00 A |  | 100% |  |  |  | start no earlier than 2026-03-13 08:00 | Зорькин В; Шуранов Ю | 2h | 2h |
| 854 | 1.369.10.2 | настройка ПО с агрегатором | 1d? | 2026-09-30 09:00 | 2026-09-30 18:00 |  |  |  |  | 120.59d | start no earlier than 2026-09-30 09:00 | Домоводов К | 8h |  |
| 855 | 1.369.10.3 | изучение документации | 1h | 2026-05-28 09:00 A | 2026-05-28 10:00 A |  | 100% |  |  |  | start no earlier than 2026-05-28 09:00 | Домоводов К | 1h | 1h |
| 856 | 1.369.11 | **заменить плинтус стена вдольпечи 2** | 11.06d? | 2026-03-26 09:00 | 2026-04-10 09:30 |  | 91% | 1d? | 2026-03-13 09:00 |  |  |  | 96.5h | 80.5h |
| 857 | 1.369.11.1 | заявка | 30min | 2026-03-13 09:00 A | 2026-03-13 09:30 A |  | 100% |  |  |  | start no earlier than 2026-03-13 09:00 | Шуранов Ю | 0.5h | 0.5h |
| 858 | 1.369.11.2 | доставка | 10d | 2026-03-13 09:30 A | 2026-03-27 09:30 A | 857 | 100% |  |  |  | start no earlier than 2026-03-12 08:00 | Карабанов | 80h | 80h |
| 859 | 1.369.11.3 | замена | 1d? | 2026-10-12 09:00 | 2026-10-12 18:00 | 858 |  |  |  | 111.59d | start no earlier than 2026-10-12 09:00 | Некрасов А; Олег | 16h |  |
| 860 | 1.369.12 | **убрать кабеля с пола на упаковке 1 цех** | 0.02d | 2026-09-01 09:00 | 2026-09-01 09:10 |  |  |  |  | 149.57d |  |  | 0.17h |  |
| 861 | 1.369.12.1 | проверить на актуальность | 10min | 2026-09-01 09:00 | 2026-09-01 09:10 |  |  |  |  | 149.57d | start no earlier than 2026-09-01 09:00 | Зорькин В | 0.17h |  |
| 862 | 1.369.13 | **убрать кабеля с пола и заменить переноски штатными розетками - участок жира 1 цех** | 0.01d | 2026-09-01 09:00 | 2026-09-01 09:05 |  |  |  |  | 149.58d |  |  | 0.08h |  |
| 863 | 1.369.13.1 | проверить на актуальность | 5min | 2026-09-01 09:00 | 2026-09-01 09:05 |  |  |  |  | 149.58d | start no earlier than 2026-09-01 09:00 | Зорькин В | 0.08h |  |
| 864 | 1.370 | изготовить ключь для ТП | 2h | 2023-06-21 09:00 A | 2023-06-21 11:00 A |  | 100% |  |  |  | start no earlier than 2023-06-21 09:00 | Домоводов К | 2h | 2h |
| 865 | 1.371 | заменитьт автомат 63С кондиционер 1 цех | 1h | 2023-06-22 09:00 A | 2023-06-22 10:00 A |  | 100% |  |  |  | start no earlier than 2023-06-22 09:00 | Тимофеев В | 1h | 1h |
| 866 | 1.372 | **Барабаны 2 линия дражжировка** | 18d | 2026-04-21 09:00 A | 2026-05-14 18:00 A |  | 100% |  |  |  |  |  | 94.5h | 94.5h |
| 867 | 1.372.1 | Проработать модернизацию форсунок | 3h | 2026-04-22 09:00 A | 2026-04-22 12:00 A |  | 100% |  |  |  | start no earlier than 2026-04-22 09:00 | Зорькин В; Домоводов К | 6h | 6h |
| 868 | 1.372.2 | сделать заявку на доп форсунки, расходники | 30min | 2026-04-22 09:00 A | 2026-04-22 09:30 A |  | 100% |  |  |  | start no earlier than 2026-04-22 09:00 | Зорькин В | 0.5h | 0.5h |
| 869 | 1.372.3 | доставка | 10d | 2026-04-30 09:00 A | 2026-05-14 18:00 A |  | 100% |  |  |  | start no earlier than 2026-04-30 09:00 | Карабанов | 80h | 80h |
| 870 | 1.372.4 | Внедрение и монтаж | 2h | 2026-05-08 09:00 A | 2026-05-08 11:00 A |  | 100% |  |  |  | start no earlier than 2026-05-08 09:00 | Зорькин В; Тимофеев В | 4h | 4h |
| 871 | 1.372.5 | **Парогенератор** | 0.25d | 2026-04-21 09:00 A | 2026-04-21 11:00 A |  | 100% |  |  |  |  |  | 4h | 4h |
| 872 | 1.372.5.1 | Проверить термадатчик (панельтемпературы) TC4R на корректность работы, скачет температура, по необходимости заменить | 2h | 2026-04-21 09:00 A | 2026-04-21 11:00 A |  | 100% |  |  |  | start no earlier than 2026-04-21 08:00 | Бундин В; Зорькин В | 4h | 4h |
| 873 | 1.373 | **Звонок на экструдер** | 14.12d | 2026-04-07 09:00 A | 2026-04-27 10:00 A |  | 100% |  |  |  |  |  | 6h | 6h |
| 874 | 1.373.1 | Протяжка кабеля от ворот к экструдерщикам | 4h | 2026-04-07 09:00 A | 2026-04-07 13:00 A |  | 100% |  |  |  | start no earlier than 2026-04-22 09:00 | Дедов В | 4h | 4h |
| 875 | 1.373.2 | монтаж звонка | 1h | 2026-04-25 09:00 A | 2026-04-27 10:00 A | 874 | 100% |  |  |  | start no earlier than 2026-04-25 09:00 | Дедов В | 1h | 1h |
| 876 | 1.373.3 | монтаж кнопки за воротами | 1h | 2026-04-25 10:00 A | 2026-04-27 10:00 A | 875 | 100% |  |  |  | start no earlier than 2026-04-21 08:00 | Дедов В | 1h | 1h |

| ID | WBS | Task | Type | Duration | Start | Finish | Predecessors | Complete | Actual start | Actual finish | Constraint | Resources | Work | Actual work |
| --- | --- | --- | --- | --- | --- | --- | --- | --- | --- | --- | --- | --- | --- | --- |
| 877 | 1.374 | **Насос гидролизата** |  | 28.01d | 2026-08-04 09:00 A | 2026-09-10 09:05 A |  | 100% |  |  |  |  | 0.42h | 0.42h |
| 878 | 1.374.1 | Заказать ремкомплект шнек, резинка, трубка, связаться с производителем |  | 20min | 2026-08-04 09:00 A | 2026-08-04 09:20 A |  | 100% |  |  | start no earlier than 2026-08-04 09:00 | Зорькин В | 0.33h | 0.33h |
| 879 | 1.374.2 | Доставка контроль сам насос шетсрен |  | 5min | 2026-09-10 09:00 A | 2026-09-10 09:05 A |  | 100% |  |  | start no earlier than 2026-09-10 09:00 | Зорькин В | 0.08h | 0.08h |
| 880 | 1.375 | **Дражжировка конвейер №1 после печки** |  | 122.12d | 2026-04-22 08:00 A | 2026-09-30 10:00 A |  | 100% |  |  |  |  | 13.08h | 13.08h |
| 881 | 1.375.1 | Поставить резьбовые клепки на боковой кожух, где кончается лента |  | 1h | 2026-09-30 09:00 A | 2026-09-30 10:00 A |  | 100% |  |  | start no earlier than 2026-09-30 09:00 | Тимофеев В | 1h | 1h |
| 882 | 1.375.2 | Ремонт насоса от 2 линии 1 цех, статор взять на складе |  | 2h | 2026-09-10 09:00 A | 2026-09-10 11:00 A |  | 100% |  |  | start no earlier than 2026-09-10 09:00 | Некрасов А | 2h | 2h |
| 883 | 1.375.3 | контроль героторная пара оплата |  | 5min | 2026-08-21 09:00 A | 2026-08-21 09:05 A |  | 100% |  |  | start no earlier than 2026-08-21 09:00 | Зорькин В | 0.08h | 0.08h |
| 884 | 1.375.4 | Замена сальника на поворотном столе/проверить |  | 1h | 2026-07-23 09:00 A | 2026-07-23 10:00 A |  | 100% |  |  | start no earlier than 2026-07-23 08:00 | Бундин В | 1h | 1h |
| 885 | 1.375.5 | **дражжировка** |  | 0.62d | 2026-04-22 08:00 A | 2026-04-22 15:00 A |  | 100% |  |  |  |  | 9h | 9h |
| 886 | 1.375.5.1 | Установка рамы для фильтров |  | 3h | 2026-04-22 08:00 A | 2026-04-22 12:00 A |  | 100% |  |  | start no earlier than 2026-04-22 08:00 | Тимофеев В | 3h | 3h |
| 887 | 1.375.5.2 | установка счетчика |  | 1h | 2026-04-22 11:00 A | 2026-04-22 12:00 A | 886 | 100% |  |  | start no earlier than 2026-04-22 08:00 | Тимофеев В | 1h | 1h |
| 888 | 1.375.5.3 | кронштейн под пульт расходомера |  | 2h | 2026-04-22 12:00 A | 2026-04-22 15:00 A | 887 | 100% |  |  | start no earlier than 2026-04-22 08:00 | Тимофеев В | 2h | 2h |
| 889 | 1.375.5.4 | **Парогенератор** |  | 0.38d | 2026-04-22 09:00 A | 2026-04-22 12:00 A |  | 100% |  |  |  |  | 3h | 3h |
| 890 | 1.375.5.4.1 | чистка парогенераторов 1 и 2 линия |  | 3h | 2026-04-22 09:00 A | 2026-04-22 12:00 A |  | 100% |  |  | start no earlier than 2026-04-22 08:00 | Бундин В | 3h | 3h |
| 891 | 1.376 | **отмена** |  | 70.75d? | 2026-04-22 09:00 | 2026-07-29 16:00 A |  | 100% | 2026-07-08 09:00 |  |  |  | 12.33h | 12.33h |
| 892 | 1.376.1 | **Парогенератор** |  | 27.5d? | 2026-04-22 09:00 | 2026-05-25 13:00 |  | 100% | 2026-07-08 09:00 | 2026-07-29 16:00 |  |  | 12.33h | 12.33h |
| 893 | 1.376.1.1 | Замена говротрубы 1 линия |  | 1h | 2026-07-08 09:00 A | 2026-07-08 10:00 A |  | 100% |  |  | start no earlier than 2026-07-08 09:00 | Бобренок В | 1h | 1h |
| 894 | 1.376.1.2 | Осмотр стоек где стоит реле давления до расширительного бачка |  | 30min | 2026-07-27 09:00 A | 2026-07-27 09:30 A |  | 100% |  |  | start no earlier than 2026-07-27 09:00 | Тимофеев В | 0.5h | 0.5h |
| 895 | 1.376.1.3 | Составить список материала для ремонта и изготовления стоек |  | 30min | 2026-07-27 09:30 A | 2026-07-27 10:00 A | 894 | 100% |  |  | start no earlier than 2026-05-27 09:00 | Тимофеев В | 0.5h | 0.5h |
| 896 | 1.376.1.4 | Заказать недостающий материал |  | 20min | 2026-07-27 09:00 A | 2026-07-27 09:20 A |  | 100% |  |  | start no earlier than 2026-07-27 09:00 | Зорькин В | 0.33h | 0.33h |
| 897 | 1.376.1.5 | Изготовление стоек |  | 3h | 2026-07-29 09:00 A | 2026-07-29 12:00 A | 895 | 100% |  |  | start no earlier than 2026-07-29 09:00 | Некрасов А | 3h | 3h |
| 898 | 1.376.1.6 | Замена стойки под реле давления |  | 3h | 2026-07-29 12:00 A | 2026-07-29 16:00 A | 897 | 100% |  |  | start no earlier than 2026-05-27 09:00 | Некрасов А | 3h | 3h |
| 899 | 1.376.1.7 | Составить список материалов или заключение по 2-м частотникам из 1 цеха от теко 0,4 (поворотный стол и конвейер) |  | 1h | 2026-07-27 08:00 A | 2026-07-27 10:00 A |  | 100% |  |  | start no earlier than 2026-07-27 08:00 | Дедов В | 1h | 1h |
| 900 | 1.376.1.8 | Взять трубку в нашем кабинете и насверлить по всей длине симметрично отверстия самым маленьким сверлом которое у нас есть (по этому заданию позвонить) |  | 3h | 2026-07-28 08:00 A | 2026-07-28 12:00 A |  | 100% |  |  | start no earlier than 2026-07-28 08:00 | Макаревич А | 3h | 3h |
| 901 | 1.377 | Демонтаж разборка/сборка редукторы шлюз. Питателей циклона 1 и 2 линия | manual | 3h | 2026-04-24 09:00 A | 2026-04-24 12:00 A |  | 100% |  |  | start no earlier than 2026-04-24 09:00 | Бундин В | 3h | 3h |

| ID | WBS | Task | Type | Duration | Start | Finish | Complete | Remaining | Actual start | Total slack | Constraint | Resources | Work | Actual work |
| --- | --- | --- | --- | --- | --- | --- | --- | --- | --- | --- | --- | --- | --- | --- |
| 902 | 1.378 | **Теко 0,4** |  | 0.38d | 2026-04-03 09:00 A | 2026-04-03 12:00 A | 100% |  |  |  |  |  | 3h | 3h |
| 903 | 1.378.1 | замена ковшей | manual | 3h | 2026-04-03 09:00 A | 2026-04-03 12:00 A | 100% |  |  |  | start no earlier than 2026-04-03 09:00 | Макаревич А | 3h | 3h |
| 904 | 2 | **2 цех** |  | 249d? | 2023-11-16 09:00 | 2024-10-29 18:00 | 89% | 27.57d? | 2024-01-08 09:00 |  |  |  | 3077.5h | 2742.25h |
| 905 | 2.1 | Ремонт фартука поломоечной машины (впаять проволоку в фронтальный разрыв, по периметру обклеить космофеном с содой, дополнитьльно армировать стеклотканью) |  | 3h | 2026-11-24 09:00 | 2026-11-24 12:00 |  |  |  | 76.22d | start no earlier than 2026-11-24 08:00 | Николаев | 3h |  |
| 906 | 2.2 | Замена автомата в печи, не работает |  | 1h | 2026-11-24 09:00 | 2026-11-24 10:00 |  |  |  | 76.47d | start no earlier than 2026-11-24 09:00 | Дедов В | 1h |  |
| 907 | 2.3 | Осмотр вентиляции, жалуются на вонь |  | 1h | 2026-11-19 09:00 A | 2026-11-19 10:00 A | 100% |  |  |  | start no earlier than 2026-11-19 09:00 | Труфанов А; Некрасов А | 2h | 2h |
| 908 | 2.4 | состаивть инструкцию по эксплуатации на пролистыватель |  | 4h | 2026-11-17 09:00 | 2026-11-17 13:00 |  |  |  | 81.09d | start no earlier than 2026-11-17 09:00 | Зорькин В | 4h |  |
| 909 | 2.5 | заменаить лопатки на прекондиционере |  | 4h | 2026-11-20 09:00 A | 2026-11-20 13:00 A | 100% |  |  |  | start no earlier than 2026-11-20 09:00 | Тимофеев В; Макаревич А | 8h | 8h |
| 910 | 2.6 | ремонт ручка двери заявка битрикс |  | 1h | 2026-11-13 09:00 A | 2026-11-13 10:00 A | 100% |  |  |  | start no earlier than 2026-11-17 09:00 | Дедов В | 1h | 1h |
| 911 | 2.7 | Найти на синем складе лопатки от прекондиционера LT 85 |  | 1h | 2026-11-19 09:00 A | 2026-11-19 10:00 A | 100% |  |  |  | start no earlier than 2026-11-19 09:00 | Тимофеев В | 1h | 1h |
| 912 | 2.8 | Повешать болер, горизонтальный, на мойке, где экструдер. Попросить помощи пацанов на экструдере |  | 1h | 2026-11-12 09:00 A | 2026-11-12 10:00 A | 100% |  |  |  | start no earlier than 2026-11-12 08:00 | Бундин В | 1h | 1h |
| 913 | 2.9 | Повесить на кухне информационный стенд |  | 1h | 2026-11-11 09:00 A | 2026-11-11 10:00 A | 100% |  |  |  | start no earlier than 2026-11-11 08:00 | Дедов В | 1h | 1h |
| 914 | 2.10 | течь редуктор смесителя с стороны эл мотора - разборка /замена сальник\ |  | 4h | 2026-11-12 09:00 A | 2026-11-12 13:00 A | 100% |  |  |  | start no earlier than 2026-11-12 09:00 | Тимофеев В | 4h | 4h |
| 915 | 2.11 | Замена и ремонт инсектицидных ламп 7 шт (сделана 1шт) подробная информация состояния и что нужно |  | 3h | 2026-11-18 09:00 A | 2026-11-18 12:00 A | 100% |  |  |  | start no earlier than 2026-11-18 09:00 | Дедов В | 3h | 3h |
| 916 | 2.12 | Замена подшипника на прекондиционере передний на остановке |  | 2h | 2026-11-05 09:00 A | 2026-11-05 11:00 A | 100% |  |  |  | start no earlier than 2026-11-05 08:00 | Дедов В | 2h | 2h |
| 917 | 2.13 | Проверить приточку, проконтролировать работу и теплового узла |  | 1h | 2026-11-03 09:00 A | 2026-11-03 10:00 A | 100% |  |  |  | start no earlier than 2026-11-03 08:00 | Дедов В | 1h | 1h |
| 918 | 2.14 | Заземление пролистывателя/кусается/устранить, найти где пробивает на корпус |  | 2h | 2026-11-03 09:00 A | 2026-11-03 11:00 A | 100% |  |  |  | start no earlier than 2026-11-03 08:00 | Дедов В | 2h | 2h |
| 919 | 2.15 | Подключить частотник приточной вентиляции к калориферу |  | 1h | 2026-11-03 09:00 A | 2026-11-03 10:00 A | 100% |  |  |  | start no earlier than 2026-11-03 08:00 | Дедов В | 1h | 1h |
| 920 | 2.16 | Ремонт дегистра в лаборатории |  | 2h | 2026-11-03 09:00 A | 2026-11-03 11:00 A | 100% |  |  |  | start no earlier than 2026-11-03 09:00 | Тимофеев В | 2h | 2h |
| 921 | 2.17 | Установка и пусконаладка пролистывателя и апликатора | manual | 4h | 2026-11-02 09:00 A | 2026-11-02 13:00 A | 100% |  |  |  | start no earlier than 2026-11-02 09:00 | Дедов В | 4h | 4h |
| 922 | 2.18 | повесить светильник в корридоре по пути на экструдер, установить на высоте с которой можно достать со стремянки |  | 2h | 2026-10-30 09:00 A | 2026-10-30 11:00 A | 100% |  |  |  | start no earlier than 2026-10-30 08:00 | Бобренок В | 2h | 2h |
| 923 | 2.19 | Ремонт звонка зона навесок, разобраться, почему не звенит/устранить |  | 1h | 2026-10-30 09:00 A | 2026-10-30 10:00 A | 100% |  |  |  | start no earlier than 2026-10-30 08:00 | Бобренок В | 1h | 1h |
| 924 | 2.20 | Ремонт доводчика 2 цех, зона навесок |  | 1h | 2026-10-30 09:00 A | 2026-10-30 10:00 A | 100% |  |  |  | start no earlier than 2026-10-30 08:00 | Бобренок В | 1h | 1h |
| 925 | 2.21 | Замена бактерицидных ламп. (косте ты платы не отдавал, ищи разъемы) | manual | 30min | 2026-10-31 09:00 A | 2026-10-31 09:30 A | 100% |  |  |  | start no earlier than 2026-10-31 09:00 | Дедов В | 0.5h | 0.5h |
| 926 | 2.22 | На КПП №2 сделать штуцер для набора кубов |  | 1h | 2026-10-30 09:00 A | 2026-10-30 10:00 A | 100% |  |  |  | start no earlier than 2026-10-30 09:00 | Труфанов А; Некрасов А | 2h | 2h |
| 927 | 2.23 | Перекрыть на складе воду питающую 2 цех, переключить бочку в реверс во 2 цеху, вода должна течь в обратку, запитать экструдер через байпас |  | 1h | 2026-10-30 09:00 A | 2026-10-30 10:00 A | 100% |  |  |  | start no earlier than 2026-10-30 09:00 | Труфанов А; Некрасов А | 2h | 2h |
| 928 | 2.24 | Скомплектовать что нужно для безопасного отвода пара на парогенераторе на подрывном клапане написать смской |  | 1h | 2026-11-19 09:00 A | 2026-11-19 10:00 A | 100% |  |  |  | start no earlier than 2026-11-19 09:00 | Труфанов А; Некрасов А | 2h | 2h |
| 929 | 2.25 | поменять лампу на этаже кабинетов в коридоре |  | 1h | 2026-10-28 09:00 A | 2026-10-28 10:00 A | 100% |  |  |  | start no earlier than 2026-10-28 08:00 | Бундин В | 1h | 1h |
| 930 | 2.26 | замена ножек на полибоксах под которые не заезжает рохля |  | 2h | 2026-10-30 09:00 A | 2026-10-30 11:00 A | 100% |  |  |  | start no earlier than 2026-10-30 09:00 | Бобренок В | 2h | 2h |
| 931 | 2.27 | переключить сигнализацию ПГ на независимое питание, что бы не отключалась при откл ПГ |  | 2h | 2026-10-28 09:00 A | 2026-10-28 11:00 A | 100% |  |  |  | start no earlier than 2026-10-28 09:00 | Бобренок В | 2h | 2h |
| 932 | 2.28 | Запустить отопление на экструдере |  | 1h | 2026-10-26 09:00 A | 2026-10-26 10:00 A | 100% |  |  |  | start no earlier than 2026-10-26 08:00 | Дедов В | 1h | 1h |
| 933 | 2.29 | закрепить воздушные шланги на упаковке водль стены на подобии как в ГДЗ |  | 2h | 2026-10-20 09:00 A | 2026-10-20 11:00 A | 100% |  |  |  | start no earlier than 2026-10-20 09:00 | Бундин В | 2h | 2h |
| 934 | 2.30 | установить вентилятор на охладитель который отсутсвует, должен быть снятый с 3ц |  | 1h | 2026-10-20 09:00 A | 2026-10-20 10:00 A | 100% |  |  |  | start no earlier than 2026-10-20 09:00 | Тимофеев В; Николаев | 2h | 2h |
| 935 | 2.31 | резервный кабель у компрессора убрать в лоток |  | 20min | 2026-10-20 09:00 A | 2026-10-20 09:20 A | 100% |  |  |  | start no earlier than 2026-10-20 09:00 | Бундин В | 0.33h | 0.33h |

| ID | WBS | Task | Type | Duration | Start | Finish | Predecessors | Complete | Constraint | Resources | Work | Actual work |
| --- | --- | --- | --- | --- | --- | --- | --- | --- | --- | --- | --- | --- |
| 936 | 2.32 | **замена трубки на насос гидролизат** |  | 8.25d | 2026-10-20 09:00 A | 2026-10-30 11:00 A |  | 100% |  |  | 2.75h | 2.75h |
| 937 | 2.32.1 | по очереди установить на насосах трубку 12/10 |  | 30min | 2026-10-20 09:00 A | 2026-10-20 09:30 A |  | 100% | start no earlier than 2026-10-20 09:00 | Тимофеев В | 0.5h | 0.5h |
| 938 | 2.32.2 | контроль поставки фитингов под гайку 12/10 |  | 15min | 2026-10-20 09:00 A | 2026-10-20 09:15 A |  | 100% | start no earlier than 2026-10-20 09:00 | Зорькин В | 0.25h | 0.25h |
| 939 | 2.32.3 | замена всех трубок на 12/10 |  | 2h | 2026-10-30 09:00 A | 2026-10-30 11:00 A |  | 100% | start no earlier than 2026-10-30 09:00 | Тимофеев В | 2h | 2h |
| 940 | 2.33 | **получить образцы пакет мешок на БЕСТРОМ на пленке PE** |  | 1d | 2026-10-22 09:00 A | 2026-10-22 18:00 A |  | 100% |  |  | 21h | 21h |
| 941 | 2.33.1 | Установка оснастки на бестром, которую привезете. Старую снимаем и вешаем на специальную стойку, ее подготовить |  | 2h | 2026-10-22 09:00 A | 2026-10-22 11:00 A |  | 100% | start no earlier than 2026-10-22 09:00 | Труфанов А; Некрасов А | 4h | 4h |
| 942 | 2.33.2 | транспортировка штабелер |  | 1h | 2026-10-22 09:00 A | 2026-10-22 10:00 A |  | 100% | start no earlier than 2026-10-22 09:00 | Труфанов А | 1h | 1h |
| 943 | 2.33.3 | замена головы / настройка / тесты |  | 8h | 2026-10-22 09:00 A | 2026-10-22 18:00 A |  | 100% | start no earlier than 2026-10-22 09:00 | Зорькин В; Труфанов А | 16h | 16h |
| 944 | 2.34 | Поставить зарядку для поломоечной машинки |  | 1h | 2026-10-14 09:00 A | 2026-10-14 10:00 A |  | 100% | start no earlier than 2026-10-14 08:00 | Бобренок В | 1h | 1h |
| 945 | 2.35 | Ремонт светильника на углу здания, со стороны склада упаковки |  | 1h | 2026-10-20 09:00 A | 2026-10-20 10:00 A |  | 100% | start no earlier than 2026-10-20 09:00 | Тимофеев В; Николаев | 2h | 2h |
| 946 | 2.36 | **Борьба с запахом корма на антрисоли офисы** |  | 7.25d | 2026-10-13 09:00 A | 2026-10-21 11:00 A |  | 100% |  |  | 2.33h | 2.33h |
| 947 | 2.36.1 | Заказать пистолет и очиститель для пены |  | 10min | 2026-10-13 09:00 A | 2026-10-13 09:10 A |  | 100% | start no earlier than 2026-10-13 09:00 | Зорькин В | 0.17h | 0.17h |
| 948 | 2.36.2 | Контроль |  | 10min | 2026-10-20 09:00 A | 2026-10-20 09:10 A | 947 | 100% | start no earlier than 2026-10-20 09:00 | Зорькин В | 0.17h | 0.17h |
| 949 | 2.36.3 | Под потолком в корридоре кабинетов дополнительно запенить балку |  | 2h | 2026-10-21 09:00 A | 2026-10-21 11:00 A | 948 | 100% | start no earlier than 2026-10-21 09:00 | Бобренок В | 2h | 2h |
| 950 | 2.37 | С 3 цеха притащить плитку армстронг и заменить на целую на втором этаже в корридоре, при необходимости вырезать в размер |  | 2h | 2026-10-13 09:00 A | 2026-10-13 11:00 A |  | 100% | start no earlier than 2026-10-13 08:00 | Бобренок В | 2h | 2h |
| 951 | 2.38 | Сфотать шильдик компрессора (попросить пацанов с фасовки) и скинуть Зорькину |  | 1h | 2026-10-12 09:00 A | 2026-10-12 10:00 A |  | 100% | start no earlier than 2026-10-12 08:00 | Бундин В | 1h | 1h |
| 952 | 2.39 | Слить весь антифриз с приточки в вентиляции, перемотать соединения ПП к колориферу и насос |  | 2h | 2026-10-12 09:00 A | 2026-10-12 11:00 A |  | 100% | start no earlier than 2026-10-12 08:00 | Бундин В | 2h | 2h |
| 953 | 2.40 | Открыть приточку под потолком, где кабинеты в корридоре (по возможности найти диффузор и установить его, либо подумать, как ограничить поток) |  | 2h | 2026-10-12 09:00 A | 2026-10-12 11:00 A |  | 100% | start no earlier than 2026-10-12 08:00 | Бундин В | 2h | 2h |
| 954 | 2.41 | Бежит со стыка в раковине с сифоном, проверить/исправить на жирах |  | 1h | 2026-10-12 09:00 A | 2026-10-12 10:00 A |  | 100% | start no earlier than 2026-10-12 08:00 | Бундин В | 1h | 1h |
| 955 | 2.42 | Поставить воздухоотводчик с боковым отводом на котел с которого бежало | manual | 1h | 2026-10-12 09:00 A | 2026-10-12 10:00 A | 956 | 100% |  | Бобренок В | 1h | 1h |
| 956 | 2.43 | Поставить сливной шланг на поломоечную машинку, должен быть на ней | manual | 30min | 2026-10-10 09:00 A | 2026-10-10 09:30 A |  | 100% | start no earlier than 2026-10-10 09:00 | Бундин В | 0.5h | 0.5h |
| 957 | 2.44 | Собрать новый электрод для парогенератора из цельного нерж прутка, конец немного закруглить лепестковым диском |  | 4h | 2026-10-12 10:00 A | 2026-10-12 15:00 A | 955 | 100% |  | Бобренок В; Зорькин В | 8h | 8h |
| 958 | 2.45 | Сделать штекер поломоечной машинки. Склеить или взять со старого зарядного и приделать в замен нынешнего, проявить смекалку как это можно сделать. Созвониться с зорькиным |  | 2h | 2026-10-06 09:00 A | 2026-10-06 11:00 A |  | 100% | start no earlier than 2026-10-06 08:00 | Бобренок В | 2h | 2h |
| 959 | 2.46 | При запуске отопления приточки, как будет давление в системе проверить антифриз, долить |  | 1h | 2026-11-03 09:00 A | 2026-11-03 10:00 A |  | 100% | start no earlier than 2026-11-03 09:00 | Труфанов А; Некрасов А | 2h | 2h |
| 960 | 2.47 | Устранить течь в вентялиционной, проверить количество антифриза |  | 1h | 2026-10-06 09:00 A | 2026-10-06 10:00 A |  | 100% | start no earlier than 2026-10-06 09:00 | Бобренок В | 1h | 1h |
| 961 | 2.48 | Перебрать ножевой узел, понять причину люфта/устранить |  | 2h | 2026-10-06 09:00 A | 2026-10-06 11:00 A |  | 100% | start no earlier than 2026-10-06 09:00 | Бобренок В | 2h | 2h |
| 962 | 2.49 | Откалибровать смеситель |  | 1h | 2026-10-09 09:00 A | 2026-10-09 10:00 A |  | 100% | start no earlier than 2026-10-09 09:00 | Дедов В | 1h | 1h |

| ID | WBS | Task | Type | Duration | Start | Finish | Predecessors | Complete | Remaining | Total slack | Free slack | Constraint | Resources | Work | Actual work |
| --- | --- | --- | --- | --- | --- | --- | --- | --- | --- | --- | --- | --- | --- | --- | --- |
| 963 | 2.50 | **востановить работу пирометра печи** |  | 26.25d | 2026-10-21 09:00 A | 2026-11-20 11:00 |  | 67% | 8.75d | 78.34d |  |  |  | 8h | 4h |
| 964 | 2.50.1 | монтаж кабель сигнальный RS485 от пирометра к регистратору на экструдере. Паралельно витой паре - по ней останется питание датчика. |  | 4h | 2026-10-21 09:00 A | 2026-10-21 13:00 A |  | 100% |  |  |  | start no earlier than 2026-10-21 08:00 | Бобренок В | 4h | 4h |
| 965 | 2.50.2 | Подключить кабель датчика пирометра с печи, разобраться, где что |  | 2h | 2026-11-20 09:00 | 2026-11-20 11:00 |  |  |  | 78.34d |  | start no earlier than 2026-11-20 09:00 | Дедов В; Домоводов К | 4h |  |
| 966 | 2.51 | Восстановление платы от рециркуляторной лампы, составление списка комплектующих, подбор аналога платы |  | 3h | 2026-10-07 09:00 A | 2026-10-07 12:00 A |  | 100% |  |  |  | start no earlier than 2026-10-07 09:00 | Дедов В | 3h | 3h |
| 967 | 2.52 | Ремонт шпингалета на воротох, где навески, получить у мастеров, если нет, звони Зорькину | manual | 1h | 2026-10-03 09:00 A | 2026-10-03 10:00 A |  | 100% |  |  |  | start no earlier than 2026-10-03 09:00 | Бобренок В | 1h | 1h |
| 968 | 2.53 | Замена дырявой трубы под парогенератором |  | 1h | 2026-10-08 09:00 A | 2026-10-08 10:00 A |  | 100% |  |  |  | start no earlier than 2026-10-08 09:00 |  |  |  |
| 969 | 2.54 | Плата связи RS485 замена |  | 1h | 2026-10-01 09:00 A | 2026-10-01 10:00 A |  | 100% |  |  |  | start no earlier than 2026-10-01 08:00 | Дедов В | 1h | 1h |
| 970 | 2.55 | Ремонт электрики Бестром (в случае если не будет работать) |  | 4h | 2026-10-07 09:00 A | 2026-10-07 13:00 A |  | 100% |  |  |  | start no earlier than 2026-10-07 09:00 | Дедов В | 4h | 4h |
| 971 | 2.56 | Изготовить пластину для удобного сбора гранулы лопатой, позвонить зорькину | manual | 2h | 2026-10-06 09:00 A | 2026-10-06 11:00 A |  | 100% |  |  |  | start no earlier than 2026-10-06 09:00 | Бобренок В | 2h | 2h |
| 972 | 2.57 | Посмотреть ручки на складе, по возможности замена, если их нет ,сообщить какие закупить. Если ничего нет и ремонт невозможен, фиксируем язычок или убираем его. | manual | 1h | 2026-10-03 09:00 A | 2026-10-03 10:00 A |  | 100% |  |  |  | start no earlier than 2026-10-03 09:00 | Бобренок В | 1h | 1h |
| 973 | 2.58 | Посмотреть пылесос от второго цеха, должен быть в слесарке, если нет, забрать | manual | 1h | 2026-09-29 09:00 A | 2026-09-29 10:00 A |  | 100% |  |  |  | start no earlier than 2026-09-29 09:00 | Бобренок В | 1h | 1h |
| 974 | 2.59 | Включить отопление в лабораторию |  | 1h | 2026-10-02 09:00 A | 2026-10-02 10:00 A |  | 100% |  |  |  | start no earlier than 2026-10-02 09:00 |  |  |  |
| 975 | 2.60 | **Ремонт бактерицидной лампы возле компрессора** |  | 18.25d | 2026-10-02 09:00 A | 2026-10-26 11:00 A |  | 100% |  |  |  |  |  | 3.17h | 3.17h |
| 976 | 2.60.1 | Заявка на плату управления лампы |  | 1h | 2026-10-02 09:00 A | 2026-10-02 10:00 A |  | 100% |  |  |  | start no earlier than 2026-10-02 08:00 | Зорькин В | 1h | 1h |
| 977 | 2.60.2 | контроль |  | 10min | 2026-10-22 09:00 A | 2026-10-22 09:10 A |  | 100% |  |  |  | start no earlier than 2026-10-22 09:00 | Зорькин В | 0.17h | 0.17h |
| 978 | 2.60.3 | Ремонт |  | 2h | 2026-10-26 09:00 A | 2026-10-26 11:00 A | 977 | 100% |  |  |  | start no earlier than 2026-10-26 09:00 | Дедов В | 2h | 2h |
| 979 | 2.61 | **пыление при загрузке при высыпании из мешка в бункер дозатора** |  | 22.53d | 2026-10-01 09:00 A | 2026-10-29 14:15 |  | 11% | 20.16d | 98.06d |  |  |  | 4.75h | 0.5h |
| 980 | 2.61.1 | **изготовить рукав на дозатор для помещения в него мешка из гибкого герметичного матриала** |  | 22.53d | 2026-10-01 09:00 A | 2026-10-29 14:15 |  | 11% | 20.16d | 98.06d |  |  |  | 4.75h | 0.5h |
| 981 | 2.61.1.1 | заявка на силикон/брезент полотно |  | 30min | 2026-10-01 09:00 A | 2026-10-01 09:30 A |  | 100% |  |  |  | start no earlier than 2026-10-01 09:00 | Зорькин В | 0.5h | 0.5h |
| 982 | 2.61.1.2 | доставка контроль |  | 15min | 2026-10-28 09:00 | 2026-10-28 09:15 | 981FS+12d |  |  | 98.06d | 0d | start no earlier than 2026-10-28 09:00 | Зорькин В | 0.25h |  |
| 983 | 2.61.1.3 | изготовление мешка |  | 4h | 2026-10-29 09:15 | 2026-10-29 14:15 | 982FS+1d |  |  | 98.06d |  | start no earlier than 2026-10-22 09:00 | Тимофеев В | 4h |  |
| 984 | 2.62 | **установить аспирационный рукав в зону бункера + фильтр + выход в цех/или общ обменную вент** |  | 23d? | 2026-11-04 09:00 | 2026-11-30 18:00 |  |  |  | 71.59d |  |  |  | 8.75h |  |
| 985 | 2.62.1 | заявка на аспирацию как в слесарке |  | 30min | 2026-11-04 09:00 | 2026-11-04 09:30 |  |  |  | 77.5d | 0d | start no earlier than 2026-11-04 09:00 | Зорькин В | 0.5h |  |
| 986 | 2.62.2 | доставка контроль |  | 15min | 2026-11-19 09:30 | 2026-11-19 09:45 | 985FS+15d |  |  | 77.5d | 5.91d | start no earlier than 2026-09-30 08:00 | Зорькин В | 0.25h |  |
| 987 | 2.62.3 | монтаж аспирационная установка |  | 1d? | 2026-11-30 09:00 | 2026-11-30 18:00 | 986FS+1d |  |  | 71.59d |  | start no earlier than 2026-11-30 09:00 | Тимофеев В | 8h |  |

| ID | WBS | Task | Duration | Start | Finish | Predecessors | Complete | Remaining | Total slack | Free slack | Constraint | Resources | Work | Actual work |
| --- | --- | --- | --- | --- | --- | --- | --- | --- | --- | --- | --- | --- | --- | --- |
| 988 | 2.63 | **пыление при дозации из шнека на продукт** | 0.38d | 2026-10-01 09:00 A | 2026-10-01 12:00 |  | 40% | 0.23d | 120.22d |  |  |  | 5h | 2h |
| 989 | 2.63.1 | установить пластину НЕРЖ на выход шнека для отклонения порошка ближе к барабану | 2h | 2026-10-01 09:00 A | 2026-10-01 11:00 A |  | 100% |  |  |  | start no earlier than 2026-10-01 09:00 | Тимофеев В | 2h | 2h |
| 990 | 2.63.2 | **изготовить /купить патрубок типа 90 колено сантех** | 0.38d | 2026-10-01 09:00 | 2026-10-01 12:00 |  |  |  | 120.22d |  |  |  | 3h |  |
| 991 | 2.63.2.1 | модель + печать на 3д | 2h | 2026-10-01 09:00 | 2026-10-01 11:00 |  |  |  | 120.22d | 0d | start no earlier than 2026-10-01 09:00 | Домоводов К | 2h |  |
| 992 | 2.63.2.2 | монтаж | 1h | 2026-10-01 11:00 | 2026-10-01 12:00 | 991 |  |  | 120.22d |  | start no earlier than 2026-09-30 08:00 | Тимофеев В | 1h |  |
| 993 | 2.64 | **сыпит в одну точку барабана, образуя не нужное кольцо** | 13d | 2026-10-20 09:00 | 2026-11-05 18:00 |  |  |  | 92.59d |  |  |  | 14h |  |
| 994 | 2.64.1 | изготовить отвод на 3д | 4h | 2026-10-20 09:00 | 2026-10-20 13:00 |  |  |  | 104.97d | 1.5d | start no earlier than 2026-10-20 09:00 | Домоводов К | 4h |  |
| 995 | 2.64.2 | монтаж | 1h | 2026-10-22 09:00 | 2026-10-22 10:00 | 994 |  |  | 103.47d |  | start no earlier than 2026-10-22 09:00 | Тимофеев В | 1h |  |
| 996 | 2.64.3 | **перенос дозатора на второй барабан** | 9d | 2026-10-26 09:00 | 2026-11-05 18:00 |  |  |  | 92.59d |  |  |  | 9h |  |
| 997 | 2.64.3.1 | согласовоать с производством технологами старт переноса | 1h | 2026-10-26 09:00 | 2026-10-26 10:00 |  |  |  | 97.47d | 4.88d | start no earlier than 2026-10-26 09:00 | Зорькин В | 1h |  |
| 998 | 2.64.3.2 | изготовить раму - составить чертежи | 2h | 2026-11-04 09:00 | 2026-11-04 11:00 | 997FS+2d |  |  | 92.59d | 0d | start no earlier than 2026-11-04 09:00 | Труфанов А | 2h |  |
| 999 | 2.64.3.3 | сборка рама | 4h | 2026-11-04 11:00 | 2026-11-04 16:00 | 998 |  |  | 92.59d | 0d | start no earlier than 2026-10-02 09:00 | Труфанов А | 4h |  |
| 1000 | 2.64.3.4 | перенос шнека дозатора / переключения | 2h | 2026-11-05 16:00 | 2026-11-05 18:00 | 999FS+1d |  |  | 92.59d |  | start no earlier than 2026-09-30 08:00 | Тимофеев В | 2h |  |
| 1001 | 2.65 | Продуть всю вентиляшку на жирах с люльки | 2h | 2026-09-29 09:00 A | 2026-09-29 11:00 A |  | 100% |  |  |  | start no earlier than 2026-09-29 08:00 | Бундин В | 2h | 2h |
| 1002 | 2.66 | Изготовить носик на подаче сухого гидролизата под уклоном ближе к барабану | 3h | 2026-09-29 09:00 A | 2026-09-29 12:00 A |  | 100% |  |  |  | start no earlier than 2026-09-29 09:00 | Тимофеев В | 3h | 3h |
| 1003 | 2.67 | Изготовление рамы на ножках для переноса всего барабана с сухим гидролизатом к нижнему барабану | 4h | 2026-09-29 09:00 | 2026-09-29 13:00 |  |  |  | 122.09d |  | start no earlier than 2026-09-29 09:00 | Тимофеев В | 4h |  |
| 1004 | 2.68 | изготовить ножки на бункер нории БЕСТРОМ | 3h | 2026-09-26 09:00 A | 2026-09-26 12:00 A |  | 100% |  |  |  | start no earlier than 2026-09-26 09:00 | Бобренок В | 3h | 3h |
| 1005 | 2.69 | **установить 4 трубки с быстросъемами в барабаны жиров** | 3.5d | 2026-09-25 09:00 A | 2026-09-28 13:00 |  | 33% | 2.33d | 123.09d |  |  |  | 6h | 2h |
| 1006 | 2.69.1 | подготовить сменную трубку для подачи жира, насверлить резьбу, отверстия | 2h | 2026-09-25 09:00 A | 2026-09-25 11:00 A |  | 100% |  |  |  | start no earlier than 2026-09-25 09:00 | Тимофеев В | 2h | 2h |
| 1007 | 2.69.2 | подготовить трубку 3 и 4 | 4h | 2026-09-28 09:00 | 2026-09-28 13:00 |  |  |  | 123.09d |  | start no earlier than 2026-09-28 09:00 | Тимофеев В | 4h |  |
| 1008 | 2.70 | кран на жирах нет стопора - вращение на 360 устранить, найти этот кран. | 30min | 2026-09-24 09:00 A | 2026-09-24 09:30 A |  | 100% |  |  |  | start no earlier than 2026-09-24 09:00 | Тимофеев В | 0.5h | 0.5h |
| 1009 | 2.71 | Проверить весы на смесителе прыгают в диапазаоне 40кг | 1h | 2026-09-23 09:00 | 2026-09-23 10:00 |  |  |  | 128.47d |  | start no earlier than 2026-09-23 09:00 | Дедов В | 1h |  |
| 1010 | 2.72 | **лаборатория** | 0.12d | 2026-09-22 09:00 A | 2026-09-22 10:00 A |  | 100% |  |  |  |  |  | 1.5h | 1.5h |
| 1011 | 2.72.1 | Перегорел тэн на дигистре | 30min | 2026-09-22 09:00 A | 2026-09-22 09:30 A |  | 100% |  |  |  | start no earlier than 2026-09-22 09:00 | Тимофеев В | 0.5h | 0.5h |
| 1012 | 2.72.2 | Поставить колбу в лаборотории на бульбуляторе, колба в лаборатории | 1h | 2026-09-22 09:00 A | 2026-09-22 10:00 A |  | 100% |  |  |  | start no earlier than 2026-09-22 09:00 | Тимофеев В | 1h | 1h |
| 1013 | 2.73 | Сделать ручки и щеколду для мусорки на улице | 1h | 2026-09-25 09:00 A | 2026-09-25 10:00 A |  | 100% |  |  |  | start no earlier than 2026-09-25 09:00 | Бундин В | 1h | 1h |
| 1014 | 2.74 | установить трубку жир ф12 - нарезать резьбу под фитинг / сверлить под "струйки" | 2h | 2026-09-24 09:00 A | 2026-09-24 11:00 A |  | 100% |  |  |  | start no earlier than 2026-09-24 09:00 | Тимофеев В | 2h | 2h |

| ID | WBS | Task | Type | Duration | Start | Finish | Predecessors | Complete | Constraint | Resources | Work | Actual work |
| --- | --- | --- | --- | --- | --- | --- | --- | --- | --- | --- | --- | --- |
| 1015 | 2.75 | **система сброса муки с прекондиционера в мешки** |  | 2d? | 2026-09-18 09:00 A | 2026-09-19 18:00 A |  | 100% |  |  | 11h | 11h |
| 1016 | 2.75.1 | Продумать варианты предложить, согласовать с Домоводовым и смонтировать, чтоб можно было вешать мешок на экструдере, под рассекатель потока муки выходящий из прекондиционера, который сделал Макаревич |  | 3h | 2026-09-18 09:00 A | 2026-09-18 12:00 A |  | 100% | start no earlier than 2026-09-18 09:00 | Бобренок В | 3h | 3h |
| 1017 | 2.75.2 | изготовление тележки с креплением для 2х мешков. Покрасить |  | 1d? | 2026-09-19 09:00 A | 2026-09-19 18:00 A |  | 100% | start no earlier than 2026-09-19 09:00 | Бобренок В | 8h | 8h |
| 1018 | 2.76 | Промывка дистилятора в лаборатории |  | 3h | 2026-09-18 09:00 A | 2026-09-18 12:00 A |  | 100% | start no earlier than 2026-09-18 09:00 | Бобренок В | 3h | 3h |
| 1019 | 2.77 | Изготовить стопор для пленки на бестром (Обратиться к пацанам на фасовке или к мастеру, должны подсказать) |  | 2h | 2026-09-16 09:00 A | 2026-09-16 11:00 A |  | 100% | start no earlier than 2026-09-16 08:00 | Бундин В | 2h | 2h |
| 1020 | 2.78 | ремонт лампа бактерициодная (это не инсекюьтер) на ГП (не горит табло). Ревизия. |  | 2h | 2026-09-13 09:00 A | 2026-09-13 11:00 A |  | 100% | start no earlier than 2026-09-13 09:00 | Дедов В | 2h | 2h |
| 1021 | 2.79 | ремонт ворот ГП слетели тросы |  | 2h | 2026-09-11 09:00 A | 2026-09-11 11:00 A |  | 100% | start no earlier than 2026-09-11 08:00 | Бобренок В | 2h | 2h |
| 1022 | 2.80 | ремонт светильник корридор у отк |  | 1h | 2026-09-14 09:00 A | 2026-09-14 10:00 A |  | 100% | start no earlier than 2026-09-14 09:00 | Макаревич А | 1h | 1h |
| 1023 | 2.81 | замена квадрат ручка дверь экструдер |  | 1h | 2026-09-14 09:00 A | 2026-09-14 10:00 A |  | 100% | start no earlier than 2026-09-14 09:00 | Макаревич А | 1h | 1h |
| 1024 | 2.82 | **ревизия сливной шланг моечная машинка** |  | 24.25d | 2026-09-14 09:00 A | 2026-10-09 11:00 A |  | 100% |  |  | 3.5h | 3.5h |
| 1025 | 2.82.1 | ревизия / удлинить |  | 1h | 2026-09-14 09:00 A | 2026-09-14 10:00 A |  | 100% | start no earlier than 2026-09-14 09:00 | Тимофеев В | 1h | 1h |
| 1026 | 2.82.2 | заявка |  | 15min | 2026-09-18 09:00 A | 2026-09-18 09:15 A |  | 100% | start no earlier than 2026-09-18 09:00 | Зорькин В | 0.25h | 0.25h |
| 1027 | 2.82.3 | контроль доставки |  | 15min | 2026-10-07 09:00 A | 2026-10-07 09:15 A | 1026FS+5d | 100% | start no earlier than 2026-10-07 09:00 | Зорькин В | 0.25h | 0.25h |
| 1028 | 2.82.4 | монтаж |  | 2h | 2026-10-09 09:00 A | 2026-10-09 11:00 A | 1027FS+1d | 100% | start no earlier than 2026-10-09 09:00 | Тимофеев В | 2h | 2h |
| 1029 | 2.83 | Проверка системы под давлением, при необходимости заменить шланги на пневматические?? |  | 1h | 2026-09-21 09:00 A | 2026-09-21 10:00 A |  | 100% | start no earlier than 2026-09-22 09:00 | Тимофеев В | 1h | 1h |
| 1030 | 2.84 | Установить трубку на жирах, которую сделал викторович |  | 30min | 2026-09-09 09:00 A | 2026-09-09 09:30 A |  | 100% | start no earlier than 2026-09-09 08:00 | Тимофеев В | 0.5h | 0.5h |
| 1031 | 2.85 | **реверс теплоносителя в приточном калорифере** |  | 28.25d | 2026-08-24 09:00 A | 2026-09-24 11:00 A |  | 100% |  |  | 2.5h | 2.5h |
| 1032 | 2.85.1 | заявка |  | 15min | 2026-08-24 09:00 A | 2026-08-24 09:15 A |  | 100% | start no earlier than 2026-08-24 09:00 | Зорькин В | 0.25h | 0.25h |
| 1033 | 2.85.2 | контроль доставки |  | 15min | 2026-09-14 09:05 A | 2026-09-14 09:20 A | 1245FS+5d | 100% | start no earlier than 2026-09-09 09:00 | Зорькин В | 0.25h | 0.25h |
| 1034 | 2.85.3 | монтаж |  | 2h | 2026-09-24 09:00 A | 2026-09-24 11:00 A | 1246FS+1d | 100% | start no earlier than 2026-09-24 09:00 | Дедов В | 2h | 2h |
| 1035 | 2.86 | востановить потерю токов в печи / ревизия . Замена тенов |  | 4h | 2026-09-09 09:00 A | 2026-09-09 13:00 A |  | 100% | start no earlier than 2026-09-09 09:00 | Бобренок В | 4h | 4h |
| 1036 | 2.87 | Смазка подшипников привода охладителя | manual | 1h | 2026-09-09 09:00 A | 2026-09-09 10:00 A |  | 100% |  | Бобренок В | 1h | 1h |
| 1037 | 2.88 | Обрезать пенку пвх на двери в охладителе ,сделать ее ровной |  | 1h | 2026-09-07 09:00 A | 2026-09-07 10:00 A |  | 100% | start no earlier than 2026-09-05 09:00 | Макаревич А | 1h | 1h |
| 1038 | 2.89 | Переборка парогенератора, поиск неисправности (подключили перемычку между реле времени) |  | 4h | 2026-09-02 09:00 A | 2026-09-02 13:00 A |  | 100% | start no earlier than 2026-09-02 09:00 | Бобренок В | 4h | 4h |

| ID | WBS | Task | Type | Duration | Start | Finish | Predecessors | Complete | Constraint | Resources | Work | Actual work |
| --- | --- | --- | --- | --- | --- | --- | --- | --- | --- | --- | --- | --- |
| 1039 | 2.90 | **Подготовить электрическую часть для подключения второго насоса без частотника (продолжаем эту задачу)** |  | 13.25d | 2026-09-03 09:00 A | 2026-09-17 11:00 A |  | 100% |  |  | 4.17h | 4.17h |
| 1040 | 2.90.1 | установить на линию доп насос (резервный) |  | 1h | 2026-09-10 09:00 A | 2026-09-10 10:00 A |  | 100% | start no earlier than 2026-09-10 09:00 | Тимофеев В | 1h | 1h |
| 1041 | 2.90.2 | монтаж |  | 1h | 2026-09-09 09:00 A | 2026-09-09 10:00 A |  | 100% | start no earlier than 2026-09-09 09:00 | Тимофеев В | 1h | 1h |
| 1042 | 2.90.3 | Переместить розетки со стола, смонтировать площадку к раме и закрепить на эту раму |  | 2h | 2026-09-17 09:00 A | 2026-09-17 11:00 A |  | 100% | start no earlier than 2026-09-17 09:00 | Тимофеев В | 2h | 2h |
| 1043 | 2.90.4 | Подумать место установки автомата |  | 10min | 2026-09-03 09:00 A | 2026-09-03 09:10 A |  | 100% | start no earlier than 2026-09-03 09:00 | Тимофеев В | 0.17h | 0.17h |
| 1044 | 2.91 | Ремонт парогенератора, замена реле давления + отвалился контакт + замена мембраны |  | 1h | 2026-09-02 09:00 A | 2026-09-02 10:00 A |  | 100% | start no earlier than 2026-09-02 08:00 | Труфанов А | 1h | 1h |
| 1045 | 2.92 | Замена редуктора на печи |  | 2h | 2026-09-01 09:00 A | 2026-09-01 11:00 A |  | 100% | start no earlier than 2026-09-01 09:00 | Бундин В | 2h | 2h |
| 1046 | 2.93 | проверка котлов на приточку (замена клапана и тена на большую мощность) | manual | 2h | 2026-09-07 09:00 A | 2026-09-07 11:00 A |  | 100% | start no earlier than 2026-09-07 09:00 | Дедов В | 2h | 2h |
| 1047 | 2.94 | проверка всех котлов на отопление по цеху | manual | 4h | 2026-08-30 09:00 A | 2026-08-30 13:00 A |  | 100% | start no earlier than 2026-08-30 09:00 | Дедов В | 4h | 4h |
| 1048 | 2.95 | закрепить коробку двери снизу (возле ШУ приточка 2 этаж) |  | 2h | 2026-08-28 09:00 A | 2026-08-28 11:00 A |  | 100% | start no earlier than 2026-08-28 09:00 | Макаревич А | 2h | 2h |
| 1049 | 2.96 | **заменить фильтры на воду в цехе (проверить мембрану на гидроаккумуляторе)** |  | 1d? | 2026-08-28 09:00 A | 2026-08-28 18:00 A |  | 100% |  | Бобренок В | 16h | 16h |
| 1050 | 2.96.1 | заказать фильтры |  | 1d? | 2026-08-28 09:00 A | 2026-08-28 18:00 A |  | 100% | start no earlier than 2026-08-28 09:00 | Шуранов Ю | 8h | 8h |
| 1051 | 2.97 | монтаж и подключение розетки для кондиционера в кабинет ОТК |  | 2h | 2026-08-26 08:00 A | 2026-08-26 11:00 A |  | 100% | start no earlier than 2026-08-26 08:00 | Бобренок В | 2h | 2h |
| 1052 | 2.98 | сливной шланг от кондиционеров наш кабинет и Шелепова спрятать в кабель канал 30х25 (он на складе) |  | 2h | 2026-08-26 08:00 A | 2026-08-26 11:00 A |  | 100% | start no earlier than 2026-08-26 08:00 | Бобренок В | 2h | 2h |
| 1053 | 2.99 | сливной шланг от кондиционеров кабинет Сапелина спрятать в кабель канал 30х25 (он на складе) с 10 до 11ч |  | 1h | 2026-08-31 09:00 A | 2026-08-31 10:00 A |  | 100% | start no earlier than 2026-08-31 09:00 | Тимофеев В | 1h | 1h |
| 1054 | 2.100 | замерить токи на оборудование (таблица в слесарке) |  | 3h | 2026-08-27 09:00 A | 2026-08-27 12:00 A |  | 100% | start no earlier than 2026-08-27 09:00 | Бобренок В | 3h | 3h |
| 1055 | 2.101 | **дренаж кондиционеров жир и упаковка установить отдельный насос от жиров** |  | 28.06d | 2026-08-24 09:00 A | 2026-09-24 09:30 A |  | 100% |  |  | 122.5h | 122.5h |
| 1056 | 2.101.1 | заявка насос |  | 30min | 2026-08-24 09:00 A | 2026-08-24 09:30 A |  | 100% | start no earlier than 2026-08-24 09:00 | Шуранов Ю | 0.5h | 0.5h |
| 1057 | 2.101.2 | контроль доставка |  | 15d | 2026-09-02 09:30 A | 2026-09-24 09:30 A | 1056FS+7d | 100% | start no earlier than 2026-08-20 09:00 | Зорькин В | 120h | 120h |
| 1058 | 2.101.3 | Разорвать контур от насоса и сделать слив в раковину | manual | 1h | 2026-09-01 09:00 A | 2026-09-01 10:00 A | 1057FS+1d | 100% | start no earlier than 2026-09-01 09:00 | Некрасов А; Тимофеев В | 2h | 2h |
| 1059 | 2.102 | **бетонирование крыльцо вход в 2ц** |  | 0.02d | 2026-08-31 09:00 A | 2026-08-31 09:10 A |  | 100% |  |  | 0.17h | 0.17h |
| 1060 | 2.102.1 | заявка Олегу |  | 10min | 2026-08-31 09:00 A | 2026-08-31 09:10 A |  | 100% | start no earlier than 2026-08-31 09:00 | Шуранов Ю | 0.17h | 0.17h |
| 1061 | 2.103 | течь кондиционер жиры - контроль работы слива |  | 30min | 2026-08-31 09:00 A | 2026-08-31 09:30 A |  | 100% | start no earlier than 2026-08-31 09:00 | Тимофеев В | 0.5h | 0.5h |
| 1062 | 2.104 | контроль замена фитинги или трубки жир, устранить возможность произвольного срыва |  | 30min | 2026-09-01 09:00 A | 2026-09-01 09:30 A |  | 100% | start no earlier than 2026-09-03 09:00 | Некрасов А; Шуранов Ю | 1h | 1h |

| ID | WBS | Task | Type | Duration | Start | Finish | Predecessors | Complete | Remaining | Total slack | Free slack | Constraint | Resources | Work | Actual work |
| --- | --- | --- | --- | --- | --- | --- | --- | --- | --- | --- | --- | --- | --- | --- | --- |
| 1063 | 2.105 | **разгрузка синего накопителя, в реверс шнек + окно** |  | 5.12d | 2026-08-20 09:00 A | 2026-08-27 10:00 A |  | 100% |  |  |  |  |  | 4h | 4h |
| 1064 | 2.105.1 | выполнить люк в шнеке: вырезать окно, крепеж на шарнир + притвор с уплотнением + застежка | milestone | 0h | 2026-08-20 09:00 A | 2026-08-20 09:00 A |  | 100% |  |  |  | start no earlier than 2026-08-20 09:00 | Некрасов А; Тимофеев В |  |  |
| 1065 | 2.105.2 | быстросъемное крепление |  | 1h | 2026-08-27 09:00 A | 2026-08-27 10:00 A |  | 100% |  |  |  | start no earlier than 2026-08-27 09:00 | Тимофеев В | 1h | 1h |
| 1066 | 2.105.3 | изготовление фланца + труба для крепления гофротрубы ф250 |  | 3h | 2026-08-24 09:00 A | 2026-08-24 12:00 A |  | 100% |  |  |  | start no earlier than 2026-08-24 09:00 | Некрасов А | 3h | 3h |
| 1067 | 2.106 | перенос розетка на стену инсекютер корридор у ОТК |  | 1h | 2026-08-15 09:00 A | 2026-08-17 10:00 A |  | 100% |  |  |  | start no earlier than 2026-08-15 09:00 | Бундин В | 1h | 1h |
| 1068 | 2.107 | перенос инсекютер ниже на фасовке, для возможности доступа операторами |  | 1h | 2026-09-24 09:00 A | 2026-09-24 10:00 A |  | 100% |  |  |  | start no earlier than 2026-09-24 09:00 | Бундин В | 1h | 1h |
| 1069 | 2.108 | изготовить лопатку для датчика сырья, что бы было 2-4 лопасти и ниже на 5-10см |  | 2h | 2026-08-13 09:00 A | 2026-08-13 11:00 A |  | 100% |  |  |  | start no earlier than 2026-08-13 09:00 | Макаревич А | 2h | 2h |
| 1070 | 2.109 | прикрепить план увакуации на место (зона отстоя навесок, стенка мойки) |  | 30min | 2026-08-12 09:00 A | 2026-08-12 09:30 A |  | 100% |  |  |  | start no earlier than 2026-08-12 09:00 | Макаревич А | 0.5h | 0.5h |
| 1071 | 2.110 | ремонт ручка в экструдер 2ц |  | 1h | 2026-08-14 09:00 A | 2026-08-14 10:00 A |  | 100% |  |  |  | start no earlier than 2026-08-14 09:00 | Труфанов А | 1h | 1h |
| 1072 | 2.111 | **установить сифон ф110 в линию слива жиров** |  | 60.31d | 2026-08-12 09:00 A | 2026-10-22 11:30 |  | 29% | 43.08d | 103.28d |  |  |  | 3.5h | 1h |
| 1073 | 2.111.1 | заявка на сифон, планирование монтаж |  | 1h | 2026-08-12 09:00 A | 2026-08-12 10:00 A |  | 100% |  |  |  | start no earlier than 2026-08-12 09:00 | Зорькин В | 1h | 1h |
| 1074 | 2.111.2 | возможно ли убрать сифоны ф50, достаточно ли заслонки без гидрозатвора? Как сделать гидрозатвор ф100 |  | 15min | 2026-10-21 09:00 | 2026-10-21 09:15 |  |  |  | 103.28d | 0d | start no earlier than 2026-10-21 09:00 | Труфанов А | 0.25h |  |
| 1075 | 2.111.3 | решение | milestone | 0d | 2026-10-22 09:15 | 2026-10-22 09:15 | 1074FS+1d |  |  | 103.28d | 0d | start no earlier than 2026-09-08 08:00 | Зорькин В |  |  |
| 1076 | 2.111.4 | контроль доставка |  | 15min | 2026-10-22 09:15 | 2026-10-22 09:30 | 1073FS+7d, 1075 |  |  | 103.28d | 0d | start no earlier than 2026-08-31 09:00 | Зорькин В | 0.25h |  |
| 1077 | 2.111.5 | монтаж |  | 2h | 2026-10-22 09:30 | 2026-10-22 11:30 | 1076 |  |  | 103.28d |  | start no earlier than 2026-09-07 09:00 | Бобренок В | 2h |  |
| 1078 | 2.112 | **установить инсекютер дополнительный на экструдер** |  | 22.25d | 2026-08-21 09:00 A | 2026-09-17 11:00 A |  | 100% |  |  |  |  |  | 2.5h | 2.5h |
| 1079 | 2.112.1 | заявка инстекютер |  | 15min | 2026-08-21 09:00 A | 2026-08-21 09:15 A |  | 100% |  |  |  | start no earlier than 2026-08-21 09:00 | Зорькин В | 0.25h | 0.25h |
| 1080 | 2.112.2 | контроль доставки |  | 15min | 2026-09-09 09:00 A | 2026-09-09 09:15 A | 1079FS+7d | 100% |  |  |  | start no earlier than 2026-09-09 09:00 | Зорькин В | 0.25h | 0.25h |
| 1081 | 2.112.3 | монтаж розетка / кабель |  | 2h | 2026-09-17 09:00 A | 2026-09-17 11:00 A | 1080FS+1d | 100% |  |  |  | start no earlier than 2026-09-17 09:00 | Труфанов А | 2h | 2h |
| 1082 | 2.113 | маркировка канистры гидролизата - передать на время гровер нач цеха 2 |  | 20min | 2026-08-11 09:00 A | 2026-08-11 09:20 A |  | 100% |  |  |  | start no earlier than 2026-08-11 09:00 | Бобренок В | 0.33h | 0.33h |
| 1083 | 2.114 | **ограждение мусорного контейнера у 2ц** |  | 15d | 2026-08-31 09:00 A | 2026-09-15 18:00 A |  | 100% |  |  |  |  |  | 34.75h | 34.75h |
| 1084 | 2.114.1 | схема размещения |  | 1h | 2026-08-31 09:00 A | 2026-08-31 10:00 A |  | 100% |  |  |  | start no earlier than 2026-08-31 09:00 | Зорькин В | 1h | 1h |
| 1085 | 2.114.2 | контроль остатков материала - каркас + обшивка стен |  | 30min | 2026-08-31 10:00 A | 2026-08-31 10:30 A | 1084 | 100% |  |  |  | start no earlier than 2026-08-14 09:00 | Зорькин В | 0.5h | 0.5h |
| 1086 | 2.114.3 | заявка материал / лист |  | 1h | 2026-09-01 10:30 A | 2026-09-01 11:30 A | 1085FS+1d | 100% |  |  |  | start no earlier than 2026-08-10 08:00 | Зорькин В | 1h | 1h |
| 1087 | 2.114.4 | контроль поставка |  | 15min | 2026-09-14 11:30 A | 2026-09-14 11:45 A | 1086FS+10d | 100% |  |  |  | start no earlier than 2026-08-10 08:00 | Зорькин В | 0.25h | 0.25h |
| 1088 | 2.114.5 | монтаж каркас + обшивка |  | 2d | 2026-09-14 09:00 A | 2026-09-15 18:00 A | 1087FS+1d | 100% |  |  |  | start no earlier than 2026-08-10 08:00 | Некрасов А; Тимофеев В | 32h | 32h |

| ID | WBS | Task | Type | Duration | Start | Finish | Predecessors | Complete | Remaining | Total slack | Free slack | Constraint | Resources | Work | Actual work |
| --- | --- | --- | --- | --- | --- | --- | --- | --- | --- | --- | --- | --- | --- | --- | --- |
| 1089 | 2.115 | **установить кондиционер контролерам ОТК в 2ц** |  | 7.38d | 2026-08-19 09:00 A | 2026-08-28 12:00 A |  | 100% |  |  |  |  |  | 7.5h | 7.5h |
| 1090 | 2.115.1 | оапата счет контроль |  | 15min | 2026-08-19 09:00 A | 2026-08-19 09:15 A |  | 100% |  |  |  | start no earlier than 2026-08-19 09:00 | Домоводов К | 0.25h | 0.25h |
| 1091 | 2.115.2 | длоставка контроль |  | 15min | 2026-08-24 09:15 A | 2026-08-24 09:30 A | 1090FS+4d | 100% |  |  |  | start no earlier than 2026-08-17 09:00 | Домоводов К | 0.25h | 0.25h |
| 1092 | 2.115.3 | монтаж |  | 4h | 2026-08-24 09:30 A | 2026-08-24 14:30 A | 1091 | 100% |  |  |  | start no earlier than 2026-08-10 08:00 | оплот | 4h | 4h |
| 1093 | 2.115.4 | монтаж крозетка |  | 3h | 2026-08-28 09:00 A | 2026-08-28 12:00 A | 1092FS-1d | 100% |  |  |  | start no earlier than 2026-08-28 09:00 | Бобренок В | 3h | 3h |
| 1094 | 2.116 | **усиление подогрев приточной вентиляции** |  | 89d? | 2026-08-17 09:00 A | 2026-11-30 18:00 |  | 33% | 59.74d? | 71.59d |  |  |  | 18.25h | 6h |
| 1095 | 2.116.1 | планирование мощности для приточная вент до 200 квт + тепл завесы |  | 4h | 2026-08-17 09:00 A | 2026-08-17 13:00 A |  | 100% |  |  |  | start no earlier than 2026-08-17 09:00 | Домоводов К | 4h | 4h |
| 1096 | 2.116.2 | Подключить колорифер в противоток, гибкую подводку получить на складе |  | 2h | 2026-09-24 09:00 A | 2026-09-24 11:00 A |  | 100% |  |  |  | start no earlier than 2026-09-24 08:00 | Дедов В | 2h | 2h |
| 1097 | 2.116.3 | заявка доп котлы + автоматика |  | 4h | 2026-11-09 09:00 | 2026-11-09 13:00 | 1095FS+1d |  |  | 78.06d | 0d | start no earlier than 2026-11-09 09:00 | Домоводов К | 4h |  |
| 1098 | 2.116.4 | контроль поствки |  | 15min | 2026-11-19 14:00 | 2026-11-19 14:15 | 1097FS+10d |  |  | 78.06d | 6.47d | start no earlier than 2026-08-10 08:00 | Зорькин В | 0.25h |  |
| 1099 | 2.116.5 | монтаж |  | 1d? | 2026-11-30 09:00 | 2026-11-30 18:00 | 1098 |  |  | 71.59d |  | start no earlier than 2026-11-30 09:00 | Некрасов А | 8h |  |
| 1100 | 2.117 | собрать 4 стула и тумбочку. Находятся у мастера |  | 4h | 2026-08-10 08:00 A | 2026-08-10 13:00 A |  | 100% |  |  |  | start no earlier than 2026-08-10 08:00 | Бобренок В | 4h | 4h |
| 1101 | 2.118 | кабель к вентилятору печи примыкание гофры к трубе выполнить без пустот фото Фадеевой |  | 1h | 2026-08-11 09:00 A | 2026-08-11 10:00 A |  | 100% |  |  |  | start no earlier than 2026-08-11 09:00 | Бобренок В | 1h | 1h |
| 1102 | 2.119 | закрыить все эл щщитки на ключь |  | 1h | 2026-08-10 08:00 A | 2026-08-10 10:00 A |  | 100% |  |  |  | start no earlier than 2026-08-10 08:00 | Бобренок В | 1h | 1h |
| 1103 | 2.120 | установить отбойник склад навесок, стена мойки |  | 1h | 2026-08-10 08:00 A | 2026-08-10 10:00 A |  | 100% |  |  |  | start no earlier than 2026-08-10 08:00 | Бобренок В | 1h | 1h |
| 1104 | 2.121 | **обеспечить не менее +15 зимой в зоне хранения навесок** |  | 74d? | 2026-08-04 09:00 A | 2026-11-02 18:00 |  | 31% | 51.03d? | 95.59d |  |  |  | 42.25h | 11.25h |
| 1105 | 2.121.1 | **утепление стены** |  | 53.75d | 2026-09-01 09:00 A | 2026-11-02 16:00 |  | 17% | 44.48d | 95.84d |  |  |  | 13.25h | 1.25h |
| 1106 | 2.121.1.1 | расчет количство утеплителя + профлист/саморезы. Заявка |  | 1h | 2026-09-09 09:00 A | 2026-09-09 10:00 A |  | 100% |  |  |  | start no earlier than 2026-09-09 09:00 | Зорькин В | 1h | 1h |
| 1107 | 2.121.1.2 | получить цену / решение о тепловой завесе | milestone | 0d | 2026-09-01 09:00 A | 2026-09-01 09:00 A |  | 100% |  |  |  | start no earlier than 2026-09-01 09:00 | Домоводов К |  |  |
| 1108 | 2.121.1.3 | контроль даты доставки |  | 15min | 2026-09-14 10:00 A | 2026-09-14 10:15 A | 1106FS+5d | 100% |  |  |  | start no earlier than 2026-08-27 08:00 | Зорькин В | 0.25h | 0.25h |
| 1109 | 2.121.1.4 | монтаж пеноплекса на стену |  | 6h | 2026-11-02 09:00 | 2026-11-02 16:00 | 1108FS+1d |  |  | 95.84d |  | start no earlier than 2026-11-02 09:00 | Бобренок В; Труфанов А | 12h |  |
| 1110 | 2.121.1.5 | решение об утеплении стены сравнить с затратами на тепловые завесы | milestone | 0h | 2026-09-01 09:00 | 2026-09-01 09:00 | 1107, 1126 |  |  | 149.59d |  | start no earlier than 2026-08-24 09:00 | Домоводов К |  |  |
| 1111 | 2.121.2 | **кап ремонт стен зона хранения навесок. Промерзают** |  | 5.12d | 2026-08-04 09:00 A | 2026-08-11 10:00 A |  | 100% |  |  |  |  |  | 5h | 5h |
| 1112 | 2.121.2.1 | установить листы на место склад навесо стена с эл щитком |  | 1h | 2026-08-11 09:00 A | 2026-08-11 10:00 A |  | 100% |  |  |  | start no earlier than 2026-08-11 09:00 | Тимофеев В | 1h | 1h |
| 1113 | 2.121.2.2 | вскрытие стен дя составления плана работ. Демонтировать несколько листов в зоне промерзания (гдещиток) |  | 4h | 2026-08-04 09:00 A | 2026-08-04 13:00 A |  | 100% |  |  |  | start no earlier than 2026-08-04 09:00 | Тимофеев В | 4h | 4h |

| ID | WBS | Task | Type | Duration | Start | Finish | Predecessors | Complete | Remaining | Total slack | Free slack | Constraint | Resources | Work | Actual work |
| --- | --- | --- | --- | --- | --- | --- | --- | --- | --- | --- | --- | --- | --- | --- | --- |
| 1114 | 2.121.3 | **тепловые завесы в 2ц зона подачи навесок** |  | 65d? | 2026-08-17 09:00 A | 2026-11-02 18:00 |  | 20% | 52d? | 95.59d |  |  |  | 23.75h | 4.75h |
| 1115 | 2.121.3.1 | **монтаж теплокалориферов** |  | 28d? | 2026-09-28 09:00 A | 2026-11-02 18:00 |  | 26% | 20.84d? | 95.59d |  |  |  | 10.75h | 2.75h |
| 1116 | 2.121.3.1.1 | заявка |  | 2h | 2026-09-28 09:00 A | 2026-09-28 11:00 A | 1110FS+1d | 100% |  |  |  | start no earlier than 2026-09-28 09:00 | Домоводов К | 2h | 2h |
| 1117 | 2.121.3.1.2 | контроль оплаты\ |  | 15min | 2026-09-30 11:00 A | 2026-09-30 11:15 A | 1116FS+2d | 100% |  |  |  | start no earlier than 2026-09-07 09:00 | Зорькин В | 0.25h | 0.25h |
| 1118 | 2.121.3.1.3 | контроль доставки |  | 15min | 2026-10-19 11:15 A | 2026-10-19 11:30 A | 1117FS+15d | 100% |  |  |  | start no earlier than 2026-08-10 08:00 | Зорькин В | 0.25h | 0.25h |
| 1119 | 2.121.3.1.4 | приемка |  | 15min | 2026-10-20 11:30 A | 2026-10-20 11:45 A | 1118FS+1d | 100% |  |  |  | start no earlier than 2026-08-10 08:00 | Зорькин В | 0.25h | 0.25h |
| 1120 | 2.121.3.1.5 | монтаж калориферов |  | 1d? | 2026-11-02 09:00 | 2026-11-02 18:00 | 1119FS+1d |  |  | 95.59d |  | start no earlier than 2026-11-02 09:00 | Некрасов А | 8h |  |
| 1121 | 2.121.3.2 | **монтаж кабель** |  | 55d? | 2026-08-17 09:00 A | 2026-10-19 18:00 |  | 15% | 46.54d? | 105.59d |  |  |  | 13h | 2h |
| 1122 | 2.121.3.2.1 | планирование мощности |  | 2h | 2026-08-17 09:00 A | 2026-08-17 11:00 A |  | 100% |  |  |  | start no earlier than 2026-08-17 09:00 | Домоводов К | 2h | 2h |
| 1123 | 2.121.3.2.2 | заявка кабель /щиток |  | 2h | 2026-10-05 09:00 | 2026-10-05 11:00 | 1122 |  |  | 110.22d | 0d | start no earlier than 2026-10-05 09:00 | Зорькин В | 2h |  |
| 1124 | 2.121.3.2.3 | контроль доставка |  | 1h | 2026-10-12 11:00 | 2026-10-12 12:00 | 1123FS+5d |  |  | 110.22d | 4.62d | start no earlier than 2026-08-10 08:00 | Зорькин В | 1h |  |
| 1125 | 2.121.3.2.4 | монтаж |  | 1d? | 2026-10-19 09:00 | 2026-10-19 18:00 | 1124FS+1d |  |  | 105.59d |  | start no earlier than 2026-10-19 09:00 | Некрасов А | 8h |  |
| 1126 | 2.121.4 | контроль достаточности если не крепить верхние саморезы |  | 15min | 2026-08-13 09:00 A | 2026-08-13 09:15 A |  | 100% |  |  |  | start no earlier than 2026-08-13 09:00 | Домоводов К | 0.25h | 0.25h |
| 1127 | 2.122 | **дверь в мойку сделать герметичный притвор** |  | 1.25d | 2026-08-14 09:00 A | 2026-08-17 11:00 A |  | 100% |  |  |  |  |  | 2.33h | 2.33h |
| 1128 | 2.122.1 | подбор уплотнителя / заказать |  | 20min | 2026-08-14 09:00 A | 2026-08-14 09:20 A |  | 100% |  |  |  | start no earlier than 2026-08-14 09:00 | Домоводов К | 0.33h | 0.33h |
| 1129 | 2.122.2 | монтаж резинки на клей |  | 2h | 2026-08-16 09:00 A | 2026-08-17 11:00 A |  | 100% |  |  |  | start no earlier than 2026-08-16 09:00 | Бобренок В | 2h | 2h |
| 1130 | 2.123 | **пролистыватель с апликтором заказ** |  | 49d? | 2026-08-10 09:00 A | 2026-10-05 18:00 A |  | 100% |  |  |  |  |  | 9.42h | 9.42h |
| 1131 | 2.123.1 | получить договор + счет |  | 1h | 2026-08-10 09:00 A | 2026-08-10 10:00 A |  | 100% |  |  |  | start no earlier than 2026-08-10 08:00 | Зорькин В | 1h | 1h |
| 1132 | 2.123.2 | **согласвоание договор** |  | 3.02d | 2026-08-12 09:00 A | 2026-08-17 09:10 A |  | 100% |  |  |  |  |  | 0.17h | 0.17h |
| 1133 | 2.123.2.1 | подать договор |  | 5min | 2026-08-12 09:00 A | 2026-08-12 09:05 A |  | 100% |  |  |  | start no earlier than 2026-08-12 09:00 | Домоводов К | 0.08h | 0.08h |
| 1134 | 2.123.2.2 | контроль |  | 5min | 2026-08-17 09:05 A | 2026-08-17 09:10 A | 1133FS+5d | 100% |  |  |  | start no earlier than 2026-08-12 09:00 | Домоводов К | 0.08h | 0.08h |
| 1135 | 2.123.3 | оплата подать счет | milestone | 0d | 2026-08-12 09:00 A | 2026-08-12 09:00 A |  | 100% |  |  |  | start no earlier than 2026-08-12 09:00 | Домоводов К |  |  |
| 1136 | 2.123.4 | доставка конетроль |  | 15min | 2026-09-18 09:00 A | 2026-09-18 09:15 A | 1135FS+30d | 100% |  |  |  | start no earlier than 2026-08-10 08:00 | Зорькин В | 0.25h | 0.25h |
| 1137 | 2.123.5 | монтаж |  | 1d? | 2026-10-05 09:00 A | 2026-10-05 18:00 A | 1136FS+1d | 100% |  |  |  | start no earlier than 2026-10-05 09:00 | Тимофеев В | 8h | 8h |

| ID | WBS | Task | Type | Duration | Start | Finish | Predecessors | Complete | Constraint | Resources | Work | Actual work |
| --- | --- | --- | --- | --- | --- | --- | --- | --- | --- | --- | --- | --- |
| 1138 | 2.124 | **вентиляция мойка приточно-вытяжная 1ц 2 линия** |  | 9.19d | 2026-08-13 09:00 A | 2026-08-26 10:30 A |  | 100% |  |  | 20h | 20h |
| 1139 | 2.124.1 | монтаж вытяжной трубы в колектор. После переноса вентиляторов отключен |  | 4h | 2026-08-17 09:00 A | 2026-08-17 13:00 A |  | 100% | start no earlier than 2026-08-16 09:00 | Бобренок В | 4h | 4h |
| 1140 | 2.124.2 | составить проект |  | 4h | 2026-08-13 09:00 A | 2026-08-13 13:00 A |  | 100% | start no earlier than 2026-08-13 09:00 | Домоводов К | 4h | 4h |
| 1141 | 2.124.3 | заявка материалы |  | 1h | 2026-08-24 09:00 A | 2026-08-24 10:00 A | 1140FS+7d | 100% | start no earlier than 2026-08-24 09:00 | Зорькин В | 1h | 1h |
| 1142 | 2.124.4 | контроль поставки |  | 30min | 2026-08-25 10:00 A | 2026-08-25 10:30 A | 1141FS+1d | 100% | start no earlier than 2026-08-10 08:00 | Зорькин В | 0.5h | 0.5h |
| 1143 | 2.124.5 | монтаж |  | 1d | 2026-08-25 10:30 A | 2026-08-26 10:30 A | 1142 | 100% | start no earlier than 2026-08-10 08:00 | Некрасов А; Тимофеев В | 10.5h | 10.5h |
| 1144 | 2.125 | **выполнить обрамление двери в охладитель, что бы скрыть поверхность** |  | 27.25d | 2026-08-14 09:00 A | 2026-09-17 11:00 A |  | 100% |  |  | 4.5h | 4.5h |
| 1145 | 2.125.1 | заказ декоративный уголок |  | 15min | 2026-08-14 09:00 A | 2026-08-14 09:15 A |  | 100% | start no earlier than 2026-08-14 09:00 | Домоводов К | 0.25h | 0.25h |
| 1146 | 2.125.2 | контроль доставки |  | 15min | 2026-09-09 09:00 A | 2026-09-09 09:15 A | 1145FS+5d | 100% | start no earlier than 2026-09-09 09:00 | Зорькин В | 0.25h | 0.25h |
| 1147 | 2.125.3 | обить дверь в охладитель профлистом оцнк |  | 2h | 2026-09-17 09:00 A | 2026-09-17 11:00 A |  | 100% | start no earlier than 2026-09-17 09:00 | Некрасов А | 2h | 2h |
| 1148 | 2.125.4 | монтаж |  | 2h | 2026-09-03 09:00 A | 2026-09-03 11:00 A | 1146FS+1d | 100% | start no earlier than 2026-09-03 09:00 | Труфанов А | 2h | 2h |
| 1149 | 2.126 | **ремонт осушителя компрессора 2ц** |  | 47.31d | 2026-08-09 09:00 A | 2026-10-04 11:30 A |  | 100% |  |  | 13.58h | 13.58h |
| 1150 | 2.126.1 | проверка давления фреона |  | 1h | 2026-09-17 09:00 A | 2026-09-17 10:00 A |  | 100% | start no earlier than 2026-09-17 09:00 | Труфанов А; Некрасов А | 2h | 2h |
| 1151 | 2.126.2 | заявка фреон 134а |  | 15min | 2026-09-25 09:00 A | 2026-09-25 09:15 A | 1150 | 100% | start no earlier than 2026-09-25 09:00 | Зорькин В | 0.25h | 0.25h |
| 1152 | 2.126.3 | доставка контроль |  | 15min | 2026-10-02 09:15 A | 2026-10-02 09:30 A | 1151FS+7d | 100% | start no earlier than 2026-09-18 08:00 | Зорькин В | 0.25h | 0.25h |
| 1153 | 2.126.4 | заправить хладогент |  | 2h | 2026-10-04 09:30 A | 2026-10-04 11:30 A | 1152FS+1d | 100% | start no earlier than 2026-10-01 09:00 | Некрасов А | 2h | 2h |
| 1154 | 2.126.5 | фото шильдик для поиск в продаже |  | 10min | 2026-08-11 09:00 A | 2026-08-11 09:10 A |  | 100% | start no earlier than 2026-08-11 09:00 | Некрасов А | 0.17h | 0.17h |
| 1155 | 2.126.6 | связь с сервисным отделом получить дату |  | 1h | 2026-08-12 09:00 A | 2026-08-12 10:00 A |  | 100% | start no earlier than 2026-08-12 09:00 | Зорькин В | 1h | 1h |
| 1156 | 2.126.7 | фото шильдик для поиск в продаже |  | 1h | 2026-08-12 09:00 A | 2026-08-12 10:00 A |  | 100% | start no earlier than 2026-08-12 09:00 | Зорькин В | 1h | 1h |
| 1157 | 2.126.8 | слить конденсат с компрессора, чистка фильтров | manual | 3h | 2026-08-09 09:00 A | 2026-08-09 12:00 A |  | 100% | start no earlier than 2026-08-09 09:00 | Бобренок В | 3h | 3h |
| 1158 | 2.126.9 | попробовать смазать подшипники вентилятора осушителя |  | 15min | 2026-08-18 09:00 A | 2026-08-18 09:15 A |  | 100% | start no earlier than 2026-08-18 09:00 | Некрасов А | 0.25h | 0.25h |
| 1159 | 2.126.10 | замер размеров вентилятора |  | 15min | 2026-08-18 09:00 A | 2026-08-18 09:15 A |  | 100% | start no earlier than 2026-08-18 09:00 | Зорькин В; Некрасов А | 0.5h | 0.5h |
| 1160 | 2.126.11 | подбор аналога вентилятора погабариту |  | 1h | 2026-08-18 09:15 A | 2026-08-18 10:15 A | 1159 | 100% | start no earlier than 2026-08-14 09:00 | Зорькин В | 1h | 1h |
| 1161 | 2.126.12 | заменить вентилятор на осушителе (от охладителя, лежит на компрессоре). В 6 утра остановка |  | 2h | 2026-08-19 09:00 A | 2026-08-19 11:00 A |  | 100% | start no earlier than 2026-08-19 09:00 | Бобренок В | 2h | 2h |
| 1162 | 2.126.13 | Заявка в сервис не работает осушитель |  | 10min | 2026-08-31 09:00 A | 2026-08-31 09:10 A |  | 100% | start no earlier than 2026-08-31 09:00 | Зорькин В | 0.17h | 0.17h |
| 1163 | 2.127 | установить защитные крышки на клемник вентиляторов охладителя. От 3д печать | manual | 4h | 2026-09-16 09:00 A | 2026-09-16 13:00 A |  | 100% | start no earlier than 2026-09-16 09:00 | Труфанов А | 4h | 4h |
| 1164 | 2.128 | заменить резинки на красном баке (выдать, если будет остановка, поменять) | manual | 1h | 2026-08-31 09:00 A | 2026-08-31 10:00 A |  | 100% | start no earlier than 2026-08-31 09:00 | Бобренок В | 1h | 1h |
| 1165 | 2.129 | на приемной горловине красного смесителя закрутить второй ленточный хомут, чтобы не выпадала мука |  | 1h | 2026-08-06 09:00 A | 2026-08-06 10:00 A |  | 100% | start no earlier than 2026-08-06 08:00 | Труфанов А | 1h | 1h |

| ID | WBS | Task | Type | Duration | Start | Finish | Predecessors | Complete | Actual start | Actual finish | Constraint | Resources | Work | Actual work |
| --- | --- | --- | --- | --- | --- | --- | --- | --- | --- | --- | --- | --- | --- | --- |
| 1166 | 2.130 | **закрутить болты на петлях двери печи** |  | 0.12d | 2026-09-02 09:00 A | 2026-09-02 10:00 A |  | 100% |  |  |  |  | 1h | 1h |
| 1167 | 2.130.1 | попробовать закрутить на винтовые заклепки |  | 1h | 2026-09-02 09:00 A | 2026-09-02 10:00 A |  | 100% |  |  | start no earlier than 2026-09-04 09:00 | Некрасов А | 1h | 1h |
| 1168 | 2.131 | установка фильтров на подачу жира (осн. + резерв) |  | 2h | 2026-08-06 08:00 A | 2026-08-06 11:00 A |  | 100% |  |  | start no earlier than 2026-08-06 08:00 | Тимофеев В | 2h | 2h |
| 1169 | 2.132 | эксперимент с лейкой подача жиров |  | 1h | 2026-08-06 08:00 A | 2026-08-06 10:00 A |  | 100% |  |  | start no earlier than 2026-08-06 08:00 | Тимофеев В | 1h | 1h |
| 1170 | 2.133 | **по аналогии второй линии насверлить сверлом 1 мм отверстия в трубке для жиров** |  | 0.12d | 2026-08-06 09:00 A | 2026-08-06 10:00 A |  | 100% |  |  |  | Макаревич А | 2h | 2h |
| 1171 | 2.133.1 | установка трубки на жиры |  | 1h | 2026-08-06 09:00 A | 2026-08-06 10:00 A |  | 100% |  |  | start no earlier than 2026-08-06 09:00 | Тимофеев В | 1h | 1h |
| 1172 | 2.134 | поломоечная машинка вырезать из силикона шторку захвата воды |  | 2h | 2026-08-03 08:00 A | 2026-08-03 11:00 A |  | 100% |  |  | start no earlier than 2026-08-03 08:00 | Бобренок В | 2h | 2h |
| 1173 | 2.135 | **втулка фторопласт заказать 26х44х5** |  | 1d? | 2026-08-04 09:00 A | 2026-08-04 18:00 A |  | 100% |  |  |  | Шуранов Ю | 8h | 8h |
| 1174 | 2.135.1 | счет доставка |  | 1d? | 2026-08-04 09:00 A | 2026-08-04 18:00 A |  | 100% |  |  | start no earlier than 2026-08-04 08:00 |  |  |  |
| 1175 | 2.136 | **посмотреть вентилятор Сапелина у нас в кабинете (не работает)** |  | 1d? | 2026-08-04 09:00 A | 2026-08-04 18:00 A |  | 100% |  |  |  | Бобренок В | 8h | 8h |
| 1176 | 2.136.1 | сгорел двигатель |  | 1d? | 2026-08-04 09:00 A | 2026-08-04 18:00 A |  | 100% |  |  | start no earlier than 2026-08-04 08:00 |  |  |  |
| 1177 | 2.137 | слить конденсат с компрессора |  | 0.5h | 2026-08-02 09:00 A | 2026-08-03 09:30 A |  | 100% |  |  | start no earlier than 2026-08-02 09:00 | Бобренок В | 0.5h | 0.5h |
| 1178 | 2.138 | **продолжить изготовление приемной горловины по аналогии 3 ц.** |  | 4h? | 2026-08-10 09:00 | 2026-08-10 13:00 |  | 100% | 2026-07-29 09:00 | 2026-09-04 11:00 |  |  | 14.08h | 14.08h |
| 1179 | 2.138.1 | заказать прут нерж. |  | 1d? | 2026-07-29 09:00 A | 2026-07-29 18:00 A |  | 100% |  |  | start no earlier than 2026-07-29 09:00 | Зорькин В | 8h | 8h |
| 1180 | 2.138.2 | контроль доставка |  | 5min | 2026-08-18 09:00 A | 2026-08-18 09:05 A |  | 100% |  |  | start no earlier than 2026-08-18 09:00 | Зорькин В | 0.08h | 0.08h |
| 1181 | 2.138.3 | изготовление / установка |  | 4h | 2026-08-20 09:00 A | 2026-08-20 13:00 A | 1180 | 100% |  |  | start no earlier than 2026-08-20 09:00 | Макаревич А | 4h | 4h |
| 1182 | 2.138.4 | Корректировка горловины, сделать более плотные зазоры, посмотреть по месту |  | 2h | 2026-09-04 09:00 A | 2026-09-04 11:00 A |  | 100% |  |  | start no earlier than 2026-09-04 09:00 | Макаревич А | 2h | 2h |
| 1183 | 2.139 | прикрутить лотки охладителя, чтобы не задевали сетку (лишние отверстия заварить) | manual | 2h | 2026-08-03 09:00 A | 2026-08-03 11:00 A |  | 100% |  |  | start no earlier than 2026-08-03 09:00 | Бобренок В | 2h | 2h |
| 1184 | 2.140 | чистка фильтров кондиционеров | manual | 1h | 2026-08-01 09:00 A | 2026-08-01 10:00 A |  | 100% |  |  | start no earlier than 2026-08-01 09:00 | Бундин В | 1h | 1h |
| 1185 | 2.141 | слить конденсат с компрессора |  | 1h | 2026-07-30 08:00 A | 2026-07-30 10:00 A |  | 100% |  |  | start no earlier than 2026-07-30 08:00 | Дедов В | 1h | 1h |
| 1186 | 2.142 | слив конденсата с кондиционеров прочистить трубу | manual | 2h | 2026-08-01 09:00 A | 2026-08-01 11:00 A |  | 100% |  |  | start no earlier than 2026-08-01 09:00 | Бундин В | 2h | 2h |
| 1187 | 2.143 | Настройка частотника питателя (созвон с Валентином) |  | 1h | 2026-07-31 09:00 A | 2026-07-31 10:00 A |  | 100% |  |  | start no earlier than 2026-07-31 09:00 | Бундин В | 1h | 1h |
| 1188 | 2.144 | дверь металлическая зона выдачи ГП ревизия, плоход закрывается |  | 1h | 2026-07-15 09:00 A | 2026-07-15 10:00 A |  | 100% |  |  | start no earlier than 2026-07-15 09:00 | Бундин В | 1h | 1h |
| 1189 | 2.145 | крепление доводчик дверь входная |  | 1h | 2026-07-15 09:00 A | 2026-07-15 10:00 A |  | 100% |  |  | start no earlier than 2026-07-15 09:00 | Бундин В | 1h | 1h |
| 1190 | 2.146 | снять меющийся, установить новый прайсчекер (лежит у мастеров) |  | 1h | 2026-07-15 09:00 A | 2026-07-15 10:00 A |  | 100% |  |  | start no earlier than 2026-07-15 09:00 | Бундин В | 1h | 1h |
| 1191 | 2.147 | ремонт кронштейна датчик давления |  | 30min | 2026-07-10 09:00 A | 2026-07-10 09:30 A |  | 100% |  |  | start no earlier than 2026-07-10 09:00 | Бобренок В | 0.5h | 0.5h |
| 1192 | 2.148 | замерить демонтированные шнеки, заполнить ьабличку Зорькина |  | 1h | 2026-07-11 09:00 A | 2026-07-13 10:00 A |  | 100% |  |  | start no earlier than 2026-07-11 09:00 | Макаревич А | 1h | 1h |
| 1193 | 2.149 | обшить входной проем п-образным профилем (на складе лежит) | manual | 3h | 2026-07-08 09:00 A | 2026-07-08 12:00 A |  | 100% |  |  | start no earlier than 2026-07-08 09:00 | Некрасов А; Тимофеев В | 6h | 6h |
| 1194 | 2.150 | чистка воздушных клапанов на септике |  | 1d? | 2026-07-02 09:00 A | 2026-07-02 18:00 A |  | 100% |  |  | start no earlier than 2026-07-02 09:00 | Олег | 8h | 8h |
| 1195 | 2.151 | закрепить щиток транспортера у стены на фасовке, малый дозатор) | manual | 1h | 2026-07-04 09:00 A | 2026-07-04 10:00 A |  | 100% |  |  | start no earlier than 2026-07-04 09:00 | Дедов В | 1h | 1h |

| ID | WBS | Task | Type | Duration | Start | Finish | Complete | Constraint | Resources | Work | Actual work |
| --- | --- | --- | --- | --- | --- | --- | --- | --- | --- | --- | --- |
| 1196 | 2.152 | **под экструдером масло- ревизия откуда** |  | 0.12d | 2026-07-03 09:00 A | 2026-07-03 10:00 A | 100% |  |  | 1h | 1h |
| 1197 | 2.152.1 | заменить шланг 20мм (лежит черный на стеллаже справа, где кабель) при остановке- согласовать с мастером |  | 1h | 2026-07-03 09:00 A | 2026-07-03 10:00 A | 100% | start no earlier than 2026-07-03 09:00 | Макаревич А | 1h | 1h |
| 1198 | 2.153 | чистка труб сброса конденсата с кондиционеров |  | 2h | 2026-06-30 09:00 A | 2026-06-30 11:00 A | 100% | start no earlier than 2026-06-30 09:00 | Некрасов А; Тимофеев В | 2h | 2h |
| 1199 | 2.154 | чистка всех фильтров на кондиционеры, разобраться с питанием внутреннего блока |  | 1d? | 2026-06-29 09:00 A | 2026-06-29 18:00 A | 100% | start no earlier than 2026-06-29 09:00 |  |  |  |
| 1200 | 2.155 | ТО бестром |  | 2h | 2026-06-30 09:00 A | 2026-06-30 11:00 A | 100% | start no earlier than 2026-06-30 09:00 | Бундин В | 2h | 2h |
| 1201 | 2.156 | промыть внешние блоки кондиционеров |  | 3h | 2026-06-26 09:00 A | 2026-06-26 12:00 A | 100% | start no earlier than 2026-06-26 09:00 | Тимофеев В; Дедов В | 6h | 6h |
| 1202 | 2.157 | вернуть кожух защиты на прекондиционер (подогнать в размер) на остановке линии |  | 2h | 2026-06-24 09:00 A | 2026-06-24 11:00 A | 100% | start no earlier than 2026-06-24 09:00 | Труфанов А | 2h | 2h |
| 1203 | 2.158 | подключение тепловой защиты на приточке и вытяжке |  | 2h | 2026-06-23 08:00 A | 2026-06-23 11:00 A | 100% | start no earlier than 2026-06-23 08:00 | Тимофеев В; Макаревич А | 4h | 4h |
| 1204 | 2.159 | заменить фильтр приточка 2 этаж и указать кол-во остатка на складе |  | 1h | 2026-06-20 09:00 A | 2026-06-22 10:00 A | 100% | start no earlier than 2026-06-20 09:00 | Дедов В | 1h | 1h |
| 1205 | 2.160 | сделать защиту жировика от холода (изготовить из сенгвич панели на навесках 2ц.) жировик расскажет | manual | 2h | 2026-06-21 09:00 A | 2026-06-21 11:00 A | 100% | start no earlier than 2026-06-21 09:00 | Бундин В | 2h | 2h |
| 1206 | 2.161 | проверка теко 0,4 -пакет запаенный |  | 1h | 2026-06-18 08:00 A | 2026-06-18 10:00 A | 100% | start no earlier than 2026-06-18 08:00 | Дедов В | 1h | 1h |
| 1207 | 2.162 | подключение датчика давления через гидрошланг |  | 1h | 2026-07-09 09:00 A | 2026-07-09 10:00 A | 100% | start no earlier than 2026-07-09 09:00 | Бундин В | 1h | 1h |
| 1208 | 2.163 | чистка парогенератора |  | 2h | 2026-06-18 08:00 A | 2026-06-18 11:00 A | 100% | start no earlier than 2026-06-18 08:00 | Тимофеев В | 2h | 2h |
| 1209 | 2.164 | слив конденсата с компрессора и продуть радиаторы и фильтры |  | 1h | 2026-06-20 09:00 A | 2026-06-22 10:00 A | 100% | start no earlier than 2026-06-20 09:00 | Бобренок В | 1h | 1h |
| 1210 | 2.165 | проверить, есть ли давление во всех гидроаккумуляторах на отоплении по цеху, зафиксировать с порванными мембранами |  | 2h | 2026-06-11 09:00 A | 2026-06-11 11:00 A | 100% | start no earlier than 2026-06-11 09:00 | Дедов В | 2h | 2h |
| 1211 | 2.166 | дверь охладителя и угол - прикрутить наружний уголок 20х50 и 50х50, чтобы не резали руки (уголок на входе напротив ворот в синем складе) |  | 3h | 2026-06-12 09:00 A | 2026-06-12 12:00 A | 100% | start no earlier than 2026-06-12 09:00 | Дедов В | 3h | 3h |
| 1212 | 2.167 | взять на складе специальный п-образный профиль и обшить дверной проем вход в охладитель | manual | 2h | 2026-07-05 09:00 A | 2026-07-05 11:00 A | 100% | start no earlier than 2026-07-05 09:00 |  |  |  |
| 1213 | 2.168 | проверка гидроаккумулятора на водоподготовке |  | 0.5h | 2026-06-11 09:00 A | 2026-06-11 09:30 A | 100% | start no earlier than 2026-06-11 09:00 | Дедов В | 0.5h | 0.5h |
| 1214 | 2.169 | чистка парогенератора |  | 2h | 2026-06-11 09:00 A | 2026-06-11 11:00 A | 100% | start no earlier than 2026-06-11 09:00 | Тимофеев В | 2h | 2h |
| 1215 | 2.170 | **посмотреть на желтом складе шибер, если найдем устанавливаем на аквариум зона экструдера** |  | 0.12d | 2026-06-12 09:00 A | 2026-06-12 10:00 A | 100% |  |  | 1h | 1h |
| 1216 | 2.170.1 | монтаж воздуховод под углом на шибер- настройка с операторами направление обдува |  | 1h | 2026-06-12 09:00 A | 2026-06-12 10:00 A | 100% | start no earlier than 2026-06-12 09:00 | Бундин В | 1h | 1h |
| 1217 | 2.171 | **ворота выход готовой продукции (прикрутить ролик, ролик у нас в кабинете)** |  | 1d? | 2026-06-11 09:00 A | 2026-06-11 18:00 A | 100% |  |  | 8h | 8h |
| 1218 | 2.171.1 | выкл. Ручной режим |  | 1d? | 2026-06-11 09:00 A | 2026-06-11 18:00 A | 100% | start no earlier than 2026-06-11 09:00 | Дедов В | 8h | 8h |
| 1219 | 2.172 | промерить шнеки / гильзы износ. Маркировать |  | 1h | 2026-07-08 09:00 A | 2026-07-08 10:00 A | 100% | start no earlier than 2026-07-08 09:00 | Зорькин В | 1h | 1h |
| 1220 | 2.173 | сверлить сетку от фильеры, сверлом на станке, все отверстия. |  | 4h | 2026-06-06 09:00 A | 2026-06-08 13:00 A | 100% | start no earlier than 2026-06-06 09:00 | Бобренок В | 4h | 4h |

| ID | WBS | Task | Type | Duration | Start | Finish | Predecessors | Complete | Actual start | Actual finish | Constraint | Resources | Work | Actual work |
| --- | --- | --- | --- | --- | --- | --- | --- | --- | --- | --- | --- | --- | --- | --- |
| 1221 | 2.174 | **заменаить сальник редуктора транспортер №3** |  | 0.12d | 2026-06-18 09:00 A | 2026-06-18 10:00 A |  | 100% |  |  |  |  | 2h | 2h |
| 1222 | 2.174.1 | заменаить редутор из зип |  | 1h | 2026-06-18 09:00 A | 2026-06-18 10:00 A |  | 100% |  |  | start no earlier than 2026-06-18 09:00 | Тимофеев В | 1h | 1h |
| 1223 | 2.174.2 | замена сальник на снятом |  | 1h | 2026-06-18 09:00 A | 2026-06-18 10:00 A |  | 100% |  |  | start no earlier than 2026-06-19 09:00 | Тимофеев В | 1h | 1h |
| 1224 | 2.175 | законтрогаить шпильки-ножки запайщиков |  | 1h | 2026-06-06 09:00 A | 2026-06-08 10:00 A |  | 100% |  |  | start no earlier than 2026-06-06 09:00 | Бобренок В | 1h | 1h |
| 1225 | 2.176 | **нория квадропак -устранить просыпание** |  | 1d? | 2026-06-04 09:00 A | 2026-06-04 18:00 A |  | 100% |  |  |  | Тимофеев В | 16h | 16h |
| 1226 | 2.176.1 | добавить частоту частотника до 70 на норию |  | 1d? | 2026-06-04 09:00 A | 2026-06-04 18:00 A |  | 100% |  |  | start no earlier than 2026-06-04 09:00 | Дедов В | 8h | 8h |
| 1227 | 2.177 | Замена шнеков (усиленные) - по уровню |  | 4h | 2026-06-04 09:00 A | 2026-06-04 13:00 A |  | 100% |  |  | start no earlier than 2026-06-04 09:00 | Тимофеев В | 4h | 4h |
| 1228 | 2.178 | монтаж воздуховод приточный в площадку загрузки смесителя |  | 3h | 2026-06-05 09:00 A | 2026-06-05 12:00 A |  | 100% |  |  | start no earlier than 2026-06-05 09:00 | Некрасов А | 3h | 3h |
| 1229 | 2.179 | очистка вентилятора окно экструдер |  | 40min | 2026-06-04 09:00 A | 2026-06-04 09:40 A |  | 100% |  |  | start no earlier than 2026-06-04 09:00 | Некрасов А; Бундин В | 1.33h | 1.33h |
| 1230 | 2.180 | **доп освещение зона охладитель** |  | 4.75d? | 2026-06-09 09:00 | 2026-06-15 16:00 |  | 100% | 2026-06-10 09:00 | 2026-08-06 11:00 |  |  | 12.67h | 12.67h |
| 1231 | 2.180.1 | спланировать монтаж / проверить наличие матералов |  | 20min | 2026-06-25 09:00 A | 2026-06-25 09:20 A |  | 100% |  |  | start no earlier than 2026-06-25 09:00 | Шуранов Ю; Дедов В | 0.67h | 0.67h |
| 1232 | 2.180.2 | заказать |  | 1d? | 2026-06-10 09:00 A | 2026-06-10 18:00 A |  | 100% |  |  | start no earlier than 2026-06-10 09:00 | Шуранов Ю | 8h | 8h |
| 1233 | 2.180.3 | монтаж |  | 2h | 2026-08-06 09:00 A | 2026-08-06 11:00 A | 1231 | 100% |  |  | start no earlier than 2026-08-06 09:00 | Тимофеев В; Бундин В | 4h | 4h |
| 1234 | 2.181 | отключить двигатель зиплока бестром |  | 1h | 2026-06-12 09:00 A | 2026-06-12 10:00 A |  | 100% |  |  | start no earlier than 2026-06-12 09:00 | Бундин В | 1h | 1h |
| 1235 | 2.182 | ж гардероб душ кабина осмотр гидрозатвор - сильный запах |  | 2h | 2026-05-30 09:00 A | 2026-06-01 11:00 A |  | 100% |  |  | start no earlier than 2026-05-30 09:00 | Бобренок В | 2h | 2h |
| 1236 | 2.183 | ремонт кресло , паук находится на складе у Веры |  | 1h | 2026-06-13 09:00 A | 2026-06-15 10:00 A |  | 100% |  |  | start no earlier than 2026-06-13 09:00 | Бобренок В | 1h | 1h |
| 1237 | 2.184 | ревизия нихром запайщик |  | 1h | 2026-05-29 09:00 A | 2026-05-29 10:00 A |  | 100% |  |  | start no earlier than 2026-05-29 08:00 | Бундин В | 1h | 1h |
| 1238 | 2.185 | штабелер 2ц ревизия колес |  | 1h | 2026-06-01 09:00 A | 2026-06-01 10:00 A |  | 100% |  |  | start no earlier than 2026-06-01 09:00 | Макаревич А | 1h | 1h |
| 1239 | 2.186 | **ремонт эл котел №3 охладитель** |  | 79.25d? | 2026-06-05 09:00 A | 2026-09-19 11:00 A |  | 100% |  |  |  |  | 24.25h | 24.25h |
| 1240 | 2.186.1 | заказать плату |  | 1d? | 2026-07-15 09:00 A | 2026-07-15 18:00 A |  | 100% |  |  | start no earlier than 2026-07-15 09:00 | Зорькин В | 8h | 8h |
| 1241 | 2.186.2 | замена силовой платы зота в районе мойки экструдера (плата на складе) -проверка | manual | 2h | 2026-08-09 09:00 A | 2026-08-09 11:00 A |  | 100% |  |  | start no earlier than 2026-08-09 09:00 | Бобренок В | 2h | 2h |
| 1242 | 2.186.3 | котел №3 проверка платы силовой управления тенами (после откл управления перегрелся пошел дым) на складе есть платы 2 шт. для ЗОТА. Слава плату заменил грешит на д температуры |  | 2h | 2026-09-01 09:00 A | 2026-09-01 11:00 A |  | 100% |  |  | start no earlier than 2026-09-01 09:00 | Дедов В | 2h | 2h |
| 1243 | 2.186.4 | Замена силовой платы, где сгорела 1 ТТР |  | 2h | 2026-08-31 08:00 A | 2026-08-31 11:00 A |  | 100% |  |  | start no earlier than 2026-08-31 08:00 | Дедов В | 2h | 2h |
| 1244 | 2.186.5 | Не работает блок тенов, заказать |  | 10min | 2026-09-01 09:00 A | 2026-09-01 09:10 A |  | 100% |  |  | start no earlier than 2026-09-01 08:00 | Зорькин В | 0.17h | 0.17h |
| 1245 | 2.186.6 | Контроль доставки |  | 5min | 2026-09-09 09:00 A | 2026-09-09 09:05 A |  | 100% |  |  | start no earlier than 2026-09-09 09:00 | Зорькин В | 0.08h | 0.08h |
| 1246 | 2.186.7 | замена блок тенов |  | 2h | 2026-09-19 09:00 A | 2026-09-19 11:00 A |  | 100% |  |  | start no earlier than 2026-09-19 09:00 | Дедов В | 2h | 2h |
| 1247 | 2.186.8 | заказать плату управления |  | 1d? | 2026-06-05 09:00 A | 2026-06-05 18:00 A |  | 100% |  |  | start no earlier than 2026-06-05 09:00 | Зорькин В | 8h | 8h |
| 1248 | 2.187 | замена задних подшипников на прекондиционере (посмотреть итальянские на складе) |  | 6h | 2026-05-26 09:00 A | 2026-05-26 16:00 A |  | 100% |  |  | start no earlier than 2026-05-26 09:00 | Тимофеев В; Некрасов А | 12h | 12h |
| 1249 | 2.188 | перемотать трубы скотчем серым и по низу стык улиток "загерметизировать" |  | 2h | 2026-05-25 08:00 A | 2026-05-25 11:00 A |  | 100% |  |  | start no earlier than 2026-05-25 08:00 | Макаревич А | 2h | 2h |

| ID | WBS | Task | Type | Duration | Start | Finish | Complete | Actual finish | Constraint | Resources | Work | Actual work |
| --- | --- | --- | --- | --- | --- | --- | --- | --- | --- | --- | --- | --- |
| 1250 | 2.189 | **изготовить мойка малая из нерж** |  | 0.5d | 2026-06-01 08:00 A | 2026-06-01 13:00 A | 100% |  |  | Макаревич А | 8h | 8h |
| 1251 | 2.189.1 | подключить мойку на месте (по телефону обсудим) |  | 4h | 2026-06-01 08:00 A | 2026-06-01 13:00 A | 100% |  | start no earlier than 2026-06-01 08:00 | Макаревич А | 4h | 4h |
| 1252 | 2.190 | **дополнительное освещение в зоне жиров** |  | 6.5d | 2026-05-26 09:00 A | 2026-06-01 13:00 | 100% | 2026-06-04 09:30 |  |  | 5h | 5h |
| 1253 | 2.190.1 | заказ светильников |  | 1h | 2026-05-26 09:00 A | 2026-05-26 10:00 A | 100% |  | start no earlier than 2026-05-26 09:00 | Шуранов Ю | 1h | 1h |
| 1254 | 2.190.2 | монтаж |  | 4h | 2026-06-01 09:00 A | 2026-06-01 13:00 A | 100% |  | start no earlier than 2026-06-01 09:00 | Макаревич А | 4h | 4h |
| 1255 | 2.190.3 | подключить к автомату на мойке |  | 0.5h | 2026-06-04 09:00 A | 2026-06-04 09:30 A | 100% |  | start no earlier than 2026-06-04 09:00 |  |  |  |
| 1256 | 2.191 | подключить пк мастеров через ИБП (согласовать с мастером 1 цеха) |  | 1h | 2026-05-25 09:00 A | 2026-05-25 10:00 A | 100% |  | start no earlier than 2026-05-25 08:00 | Шуранов Ю | 1h | 1h |
| 1257 | 2.192 | заменить помпу на термопоте в кухне |  | 1h | 2026-05-27 09:00 A | 2026-05-27 10:00 A | 100% |  | start no earlier than 2026-05-27 09:00 | Дедов В | 1h | 1h |
| 1258 | 2.193 | лопнул шланг от насосной станции до редуктора- заменить |  | 1h | 2026-05-25 08:00 A | 2026-05-25 10:00 A | 100% |  | start no earlier than 2026-05-25 08:00 | Макаревич А | 1h | 1h |
| 1259 | 2.194 | установить влагоотделитель на квадропак |  | 1h | 2026-05-25 08:00 A | 2026-05-25 10:00 A | 100% |  | start no earlier than 2026-05-25 08:00 | Дедов В | 1h | 1h |
| 1260 | 2.195 | закрепить монтажную коробку в коридоре до жировика слева, от кондиционера |  | 1h | 2026-05-22 09:00 A | 2026-05-22 10:00 A | 100% |  | start no earlier than 2026-05-22 09:00 | Бобренок В | 1h | 1h |
| 1261 | 2.196 | закрепить на доп. Клипсы трубу-воздух к стене за бестромом |  | 1h | 2026-05-23 09:00 A | 2026-05-25 10:00 A | 100% |  | start no earlier than 2026-05-23 09:00 | Бобренок В | 1h | 1h |
| 1262 | 2.197 | заменить сетку печки (находиться в слесарке) | manual | 3h | 2026-05-24 09:00 A | 2026-05-24 12:00 A | 100% |  | start no earlier than 2026-05-24 09:00 | Макаревич А | 3h | 3h |
| 1263 | 2.198 | уложить красиво и закрепить гофру от нории до красного смесителя | manual | 2h | 2026-05-24 09:00 A | 2026-05-24 11:00 A | 100% |  | start no earlier than 2026-05-24 09:00 | Макаревич А | 2h | 2h |
| 1264 | 2.199 | взять ножевой узел с желтого склада и фильеры, подготовить и передать во второй цех на экструдер |  | 1h | 2026-05-21 09:00 A | 2026-05-21 10:00 A | 100% |  | start no earlier than 2026-05-21 08:00 | Бундин В | 1h | 1h |
| 1265 | 2.200 | проверить все лотки на охладителе, чтобы не задевали сетку- если нужно поднять. |  | 1h | 2026-05-21 09:00 A | 2026-05-21 10:00 A | 100% |  | start no earlier than 2026-05-21 08:00 | Бундин В | 1h | 1h |
| 1266 | 2.201 | чистка парогенератора, если нужно замена электродов |  | 2h | 2026-05-21 08:00 A | 2026-05-21 11:00 A | 100% |  | start no earlier than 2026-05-21 08:00 | Тимофеев В | 2h | 2h |
| 1267 | 2.202 | чистка фильтра редуктора экструдера, проверка уровня масла |  | 1h | 2026-05-21 08:00 A | 2026-05-21 10:00 A | 100% |  | start no earlier than 2026-05-21 08:00 | Тимофеев В | 1h | 1h |
| 1268 | 2.203 | проверить пневмоцилиндры на встряхивателях квадропака |  | 1h | 2026-05-21 08:00 A | 2026-05-21 10:00 A | 100% |  | start no earlier than 2026-05-21 08:00 | Бобренок В | 1h | 1h |
| 1269 | 2.204 | проверка токов на печи, если просадка проверяем перемычки, тены |  | 1h | 2026-05-21 09:00 A | 2026-05-21 10:00 A | 100% |  | start no earlier than 2026-05-21 08:00 | Некрасов А | 1h | 1h |
| 1270 | 2.205 | коротит на баке жиров все проверить |  | 1h | 2026-05-21 09:00 A | 2026-05-21 10:00 A | 100% |  | start no earlier than 2026-05-21 08:00 |  |  |  |
| 1271 | 2.206 | в зоне фасовки сделать конструкцию, чтобы не выпадала макулатура |  | 6h | 2026-08-31 09:00 A | 2026-08-31 16:00 A | 100% |  | start no earlier than 2026-08-31 09:00 | Макаревич А | 6h | 6h |
| 1272 | 2.207 | закрепить доводчик на входной двери |  | 1h | 2026-05-23 09:00 A | 2026-05-25 10:00 A | 100% |  | start no earlier than 2026-05-23 09:00 | Бундин В | 1h | 1h |
| 1273 | 2.208 | установить розетку для палетооботчика на его колону |  | 2h | 2026-05-18 09:00 A | 2026-05-18 11:00 A | 100% |  | start no earlier than 2026-05-18 09:00 | Дедов В | 2h | 2h |

| ID | WBS | Task | Type | Duration | Start | Finish | Predecessors | Complete | Constraint | Resources | Work | Actual work |
| --- | --- | --- | --- | --- | --- | --- | --- | --- | --- | --- | --- | --- |
| 1274 | 2.209 | **ИБП установить на принтер SAVEMA** |  | 5.25d | 2026-05-19 09:00 A | 2026-05-26 11:00 A |  | 100% |  |  | 3.25h | 3.25h |
| 1275 | 2.209.1 | подбор и заявка ИБП |  | 1h | 2026-05-19 09:00 A | 2026-05-19 10:00 A |  | 100% | start no earlier than 2026-05-19 09:00 | Шуранов Ю | 1h | 1h |
| 1276 | 2.209.2 | контроль поставки |  | 15min | 2026-05-26 09:00 A | 2026-05-26 09:15 A |  | 100% | start no earlier than 2026-05-26 09:00 | Шуранов Ю | 0.25h | 0.25h |
| 1277 | 2.209.3 | монтаж и подключение в шкафу | manual | 2h | 2026-05-26 09:00 A | 2026-05-26 11:00 A | 1276 | 100% | start no earlier than 2026-05-26 09:00 | Дедов В | 2h | 2h |
| 1278 | 2.210 | **переместить на склад ЗИП палет сетка, зарядка АКБ штабелера** |  | 0.12d | 2026-06-01 09:00 A | 2026-06-01 10:00 A |  | 100% |  |  | 1h | 1h |
| 1279 | 2.210.1 | зарядку АКБ переместить в контейнер, она находится в мойке зона экструдера | manual | 1h | 2026-06-01 09:00 A | 2026-06-01 10:00 A |  | 100% | start no earlier than 2026-06-01 09:00 | Макаревич А | 1h | 1h |
| 1280 | 2.211 | **бестром замена линейный подшипник прижима красных ремней** |  | 24.5d | 2026-05-15 09:00 A | 2026-06-18 13:00 A |  | 100% |  |  | 5.25h | 5.25h |
| 1281 | 2.211.1 | заявка |  | 1h | 2026-05-15 09:00 A | 2026-05-15 10:00 A |  | 100% | start no earlier than 2026-05-15 09:00 | Зорькин В | 1h | 1h |
| 1282 | 2.211.2 | доставка контроль |  | 15min | 2026-05-27 10:00 A | 2026-05-27 10:15 A | 1281FS+10d | 100% | start no earlier than 2026-05-14 08:00 | Зорькин В | 0.25h | 0.25h |
| 1283 | 2.211.3 | замена |  | 4h | 2026-06-18 09:00 A | 2026-06-18 13:00 A | 1282 | 100% | start no earlier than 2026-06-18 09:00 | Тимофеев В | 4h | 4h |
| 1284 | 2.212 | осмотр цепи муфты редуктора экструдера |  | 1h | 2026-05-14 09:00 A | 2026-05-14 10:00 A |  | 100% | start no earlier than 2026-05-14 09:00 | Тимофеев В | 1h | 1h |
| 1285 | 2.213 | Линия 3 на жирах нужно поменять колеса на транспортёре, который идет на охладитель |  | 1h | 2026-05-14 09:00 A | 2026-05-14 10:00 A |  | 100% | start no earlier than 2026-05-14 09:00 | Макаревич А | 1h | 1h |
| 1286 | 2.214 | осмотр прекондиционер "звон" |  | 30min | 2026-05-14 09:00 A | 2026-05-14 09:30 A |  | 100% | start no earlier than 2026-05-14 09:00 | Тимофеев В | 0.5h | 0.5h |
| 1287 | 2.215 | **заменить гофра унитаз правый отсек** |  | 16.12d | 2026-05-13 09:00 A | 2026-06-04 10:00 A |  | 100% |  |  | 41.25h | 41.25h |
| 1288 | 2.215.1 | заявка гофра |  | 15min | 2026-05-13 09:00 A | 2026-05-13 09:15 A |  | 100% | start no earlier than 2026-05-13 09:00 | Зорькин В | 0.25h | 0.25h |
| 1289 | 2.215.2 | доставка |  | 5d | 2026-05-13 09:15 A | 2026-05-20 09:15 A | 1288 | 100% | start no earlier than 2026-05-12 08:00 | Карабанов | 40h | 40h |
| 1290 | 2.215.3 | замена |  | 1h | 2026-06-04 09:00 A | 2026-06-04 10:00 A | 1289 | 100% | start no earlier than 2026-06-04 09:00 | Бобренок В | 1h | 1h |
| 1291 | 2.216 | замена смазка шприц на экструдере |  | 30min | 2026-05-13 09:00 A | 2026-05-13 09:30 A |  | 100% | start no earlier than 2026-05-13 09:00 | Некрасов А | 0.5h | 0.5h |
| 1292 | 2.217 | замена передний подшипник + набивка прекондиционер |  | 1h | 2026-05-14 09:00 A | 2026-05-14 10:00 A |  | 100% | start no earlier than 2026-05-14 09:00 | Тимофеев В | 1h | 1h |
| 1293 | 2.218 | прикрутить лоток выше на 1 ярусе, задевает сетку со сторону редуктора |  | 1h | 2026-05-08 08:00 A | 2026-05-08 10:00 A |  | 100% | start no earlier than 2026-05-08 08:00 | Макаревич А | 1h | 1h |
| 1294 | 2.219 | взять шайбу у нас в кабинете и шлифануть одну сторону |  | 1h | 2026-05-08 09:00 A | 2026-05-08 10:00 A |  | 100% | start no earlier than 2026-05-08 09:00 | Макаревич А | 1h | 1h |
| 1295 | 2.220 | смотровое окно на загрузке прекондиционера установить |  | 4h | 2026-08-25 09:00 A | 2026-08-25 13:00 A |  | 100% | start no earlier than 2026-08-31 09:00 | Тимофеев В | 4h | 4h |
| 1296 | 2.221 | добавить воду в систему отопления зота охладитель |  | 1h | 2026-05-09 09:00 A | 2026-05-11 10:00 A |  | 100% | start no earlier than 2026-05-09 09:00 | Макаревич А | 1h | 1h |
| 1297 | 2.222 | монтаж сетки на палетообмотчике | manual | 4h | 2026-05-14 09:00 A | 2026-05-14 13:00 A |  | 100% | start no earlier than 2026-05-14 09:00 | Некрасов А; Труфанов А | 8h | 8h |
| 1298 | 2.223 | Собрать стул, находится в кабинете мастеров 2 цех |  | 1h | 2026-05-13 09:00 A | 2026-05-13 10:00 A |  | 100% | start no earlier than 2026-05-13 09:00 | Бундин В | 1h | 1h |

| ID | WBS | Task | Type | Duration | Start | Finish | Complete | Actual start | Actual finish | Constraint | Resources | Work | Actual work |
| --- | --- | --- | --- | --- | --- | --- | --- | --- | --- | --- | --- | --- | --- |
| 1299 | 2.224 | **взять у нас на складе инсектицидные светильники и повесить их во 2 цехе, где нет** |  | 1.12d | 2026-05-12 09:00 A | 2026-05-13 10:00 A | 100% |  |  |  |  | 3h | 3h |
| 1300 | 2.224.1 | ремонт |  | 2h | 2026-05-12 09:00 A | 2026-05-12 11:00 A | 100% |  |  | start no earlier than 2026-05-12 09:00 | Бундин В | 2h | 2h |
| 1301 | 2.224.2 | монтаж ламп / заполнить в журнал мастера |  | 1h | 2026-05-13 09:00 A | 2026-05-13 10:00 A | 100% |  |  | start no earlier than 2026-05-13 09:00 | Бундин В | 1h | 1h |
| 1302 | 2.225 | герметиком замазать гофру на унитазах (запах) | manual | 1h | 2026-05-07 08:00 A | 2026-05-07 09:00 A | 100% |  |  | start no earlier than 2026-05-07 08:00 | Бобренок В | 1h | 1h |
| 1303 | 2.226 | заменить фильтр на приточку 2 этаж |  | 1h | 2026-05-07 08:00 A | 2026-05-07 10:00 A | 100% |  |  | start no earlier than 2026-05-07 08:00 | Тимофеев В | 1h | 1h |
| 1304 | 2.227 | ревизия перемычек, тен на печи - замена |  | 4h | 2026-05-07 09:00 A | 2026-05-07 13:00 A | 100% |  |  | start no earlier than 2026-05-07 08:00 | Труфанов А | 4h | 4h |
| 1305 | 2.228 | **повесить на места светильники инсектицидные (замена ламп)** |  | 1d? | 2026-05-11 09:00 | 2026-05-11 18:00 | 100% | 2026-05-12 09:00 | 2026-05-12 11:00 |  |  | 2h | 2h |
| 1306 | 2.228.1 | **заказать досели** |  | 0.25d | 2026-05-12 09:00 A | 2026-05-12 11:00 A | 100% |  |  |  |  | 2h | 2h |
| 1307 | 2.228.1.1 | ремонт не рабочих светильников |  | 2h | 2026-05-12 09:00 A | 2026-05-12 11:00 A | 100% |  |  | start no earlier than 2026-05-12 09:00 | Бундин В | 2h | 2h |
| 1308 | 2.229 | уложить кабель в гофре вдоль экструдера в лоток |  | 2h | 2026-05-04 09:00 A | 2026-05-04 11:00 A | 100% |  |  | start no earlier than 2026-05-04 08:00 | Бундин В | 2h | 2h |
| 1309 | 2.230 | **подготовить ТРМ для парогенератора цех 2** |  | 0d | 2026-05-16 09:00 A | 2026-05-16 10:00 A | 100% |  |  |  | Дедов В | 1h | 1h |
| 1310 | 2.230.1 | установить на остановке ТРМ (который сняли отдать Дедову для восстановления) восстановить кнопку | manual | 1h | 2026-05-16 09:00 A | 2026-05-16 10:00 A | 100% |  |  | start no earlier than 2026-05-16 09:00 | Дедов В | 1h | 1h |
| 1311 | 2.231 | повесить светильники 3шт. |  | 1h | 2026-05-04 09:00 A | 2026-05-04 10:00 A | 100% |  |  | start no earlier than 2026-05-04 08:00 | Труфанов А | 1h | 1h |
| 1312 | 2.232 | монтаж свет на фасовке |  | 8h | 2026-05-05 09:00 A | 2026-05-05 18:00 A | 100% |  |  | start no earlier than 2026-05-05 09:00 | Тимофеев В; Труфанов А | 15h | 15h |
| 1313 | 2.233 | заменить кулер в ШУ на жирах |  | 1h | 2026-04-29 08:00 A | 2026-04-29 10:00 A | 100% |  |  | start no earlier than 2026-04-29 08:00 | Дедов В | 1h | 1h |
| 1314 | 2.234 | заменить 3х ходовой кран и фитинги с гайкой на жирах |  | 1h | 2026-04-29 09:00 A | 2026-04-29 10:00 A | 100% |  |  | start no earlier than 2026-04-30 09:00 | Дедов В | 1h | 1h |
| 1315 | 2.235 | закрепить на подножке резинку на штабелере зона экструдера (можно на саморез/клепки) |  | 1h | 2026-04-29 08:00 A | 2026-04-29 10:00 A | 100% |  |  | start no earlier than 2026-04-29 08:00 | Дедов В | 1h | 1h |
| 1316 | 2.236 | **заменить сетку для печи из зип** |  | 0.38d | 2026-05-05 09:00 A | 2026-05-05 12:00 A | 100% |  |  |  |  | 5h | 5h |
| 1317 | 2.236.1 | **заменить сетку , которую сняли с печи** |  | 3h | 2026-05-05 09:00 A | 2026-05-05 12:00 A | 100% |  |  |  | Бундин В | 5h | 5h |
| 1318 | 2.236.1.1 | ремонт сетки |  | 2h | 2026-05-05 09:00 A | 2026-05-05 11:00 A | 100% |  |  | start no earlier than 2026-05-05 09:00 | Бобренок В | 2h | 2h |
| 1319 | 2.237 | под норией сыпит сырье устранить |  | 4h | 2026-04-30 09:00 A | 2026-04-30 13:00 A | 100% |  |  | start no earlier than 2026-04-30 09:00 | Труфанов А; Некрасов А | 8h | 8h |
| 1320 | 2.238 | устранить течь, сброс пара под прекондиционером |  | 1h | 2026-05-01 09:00 A | 2026-05-01 10:00 A | 100% |  |  | start no earlier than 2026-05-01 09:00 | Дедов В | 1h | 1h |
| 1321 | 2.239 | устранить течь редуктор прекондиционера |  | 5h | 2026-04-29 09:00 A | 2026-04-29 15:00 A | 100% |  |  | start no earlier than 2026-04-29 08:00 | Некрасов А; Труфанов А | 10h | 10h |
| 1322 | 2.240 | почистить фильтр на поломоечной машинке |  | 1h | 2026-04-29 09:00 A | 2026-04-29 10:00 A | 100% |  |  | start no earlier than 2026-04-29 09:00 | Тимофеев В | 1h | 1h |
| 1323 | 2.241 | Полное ТО квадропак (чистка тен, смазка штоков пневмоцилиндров, шприцевание подшипников) |  | 3h | 2026-04-28 09:00 A | 2026-04-28 12:00 A | 100% |  |  | start no earlier than 2026-04-28 09:00 | Тимофеев В | 3h | 3h |
| 1324 | 2.242 | Полное ТО бестром (чистка тен, смазка штоков пневмоцилиндров, шприцевание подшипников) |  | 2h | 2026-04-28 09:00 A | 2026-04-28 11:00 A | 100% |  |  | start no earlier than 2026-04-28 09:00 | Тимофеев В | 2h | 2h |
| 1325 | 2.243 | демонтаж инсектютерной ламп на очистку / продуть |  | 1h | 2026-04-27 08:00 A | 2026-04-27 10:00 A | 100% |  |  | start no earlier than 2026-04-27 08:00 | Тимофеев В | 1h | 1h |
| 1326 | 2.244 | ремонт инсектецидных ламп взять у Мастера в каб. (проверить контакты соединения самих лам, дросели). 3 исправно/1 сломан дросель |  | 1h | 2026-04-29 09:00 A | 2026-04-29 10:00 A | 100% |  |  | start no earlier than 2026-04-29 09:00 | Дедов В | 1h | 1h |

| ID | WBS | Task | Type | Duration | Start | Finish | Predecessors | Complete | Actual start | Actual finish | Constraint | Resources | Work | Actual work |
| --- | --- | --- | --- | --- | --- | --- | --- | --- | --- | --- | --- | --- | --- | --- |
| 1327 | 2.245 | **замена дроселя инсекцидной лампы** |  | 17.38d | 2026-04-30 09:00 A | 2026-05-25 12:00 A |  | 100% |  |  |  |  | 84.25h | 84.25h |
| 1328 | 2.245.1 | заявка |  | 15min | 2026-04-30 09:00 A | 2026-04-30 09:15 A |  | 100% |  |  | start no earlier than 2026-04-30 08:00 | Шуранов Ю | 0.25h | 0.25h |
| 1329 | 2.245.2 | замена |  | 3h | 2026-05-25 08:00 A | 2026-05-25 12:00 A |  | 100% |  |  | start no earlier than 2026-05-25 08:00 | Дедов В | 3h | 3h |
| 1330 | 2.245.3 | доставка |  | 10d | 2026-05-04 09:00 A | 2026-05-18 18:00 A | 1328 | 100% |  |  | start no earlier than 2026-05-04 09:00 | Карабанов | 80h | 80h |
| 1331 | 2.245.4 | замена |  | 1h | 2026-05-12 09:00 A | 2026-05-12 10:00 A |  | 100% |  |  | start no earlier than 2026-05-12 09:00 | Бундин В | 1h | 1h |
| 1332 | 2.246 | поликарбанат в зоне седла жировика оторвался, ремонт |  | 1h | 2026-04-30 09:00 A | 2026-04-30 10:00 A |  | 100% |  |  | start no earlier than 2026-04-30 09:00 | Бундин В | 1h | 1h |
| 1333 | 2.247 | зачистить и покрасить решетку на входе в 2 ц. |  | 4h | 2026-04-28 09:00 A | 2026-04-28 13:00 A |  | 100% |  |  | start no earlier than 2026-04-28 09:00 | Дворник | 4h | 4h |
| 1334 | 2.248 | поднять лотки на 10 мм на охладителе со стороны фасовки (видео вышлю) |  | 1h | 2026-04-24 09:00 A | 2026-04-24 10:00 A |  | 100% |  |  | start no earlier than 2026-04-24 08:00 | Бундин В | 1h | 1h |
| 1335 | 2.249 | добавить в систему отопления котла в мойке и в охладителе воды | manual | 2h | 2026-04-24 09:00 A | 2026-04-24 11:00 A |  | 100% |  |  | start no earlier than 2026-04-24 09:00 | Бундин В | 2h | 2h |
| 1336 | 2.250 | на углы установить отбойники выход с зоны экструдера |  | 2h | 2026-04-23 09:00 A | 2026-04-23 11:00 A |  | 100% |  |  | start no earlier than 2026-04-23 08:00 | Бундин В | 2h | 2h |
| 1337 | 2.251 | сделать ТО Бестром (чистка тен и т.д.) |  | 2h | 2026-04-22 08:00 A | 2026-04-22 11:00 A |  | 100% |  |  | start no earlier than 2026-04-22 08:00 | Дедов В | 2h | 2h |
| 1338 | 2.252 | собрать кабинку в мужской раздевалке, она там стоит в коробке |  | 1h | 2026-04-23 09:00 A | 2026-04-23 10:00 A |  | 100% |  |  | start no earlier than 2026-04-23 09:00 | Дедов В | 1h | 1h |
| 1339 | 2.253 | заменить датчик переполнения на загрузке с синего бункера, на складе взять |  | 1h | 2026-04-29 09:00 A | 2026-04-29 10:00 A |  | 100% |  |  | start no earlier than 2026-04-29 09:00 | Дедов В | 1h | 1h |
| 1340 | 2.254 | **включить все исектицидные светильники по цеху, проверить есть ли напряжение в розетках** |  | 0.12d | 2026-04-23 09:00 A | 2026-04-23 10:00 A |  | 100% |  |  |  | Дедов В | 2h | 2h |
| 1341 | 2.254.1 | проверить напряжение в розетке светильника на фасовке |  | 1h | 2026-04-23 09:00 A | 2026-04-23 10:00 A |  | 100% |  |  | start no earlier than 2026-04-23 08:00 | Бундин В | 1h | 1h |
| 1342 | 2.255 | **установить кольцо "вентури" в фильеру** |  | 2.38d? | 2026-05-04 09:00 | 2026-05-06 12:00 |  | 100% | 2026-04-27 09:00 | 2026-09-10 10:00 |  |  | 4.5h | 4.5h |
| 1343 | 2.255.1 | определить диаметр отверстия кольца |  | 1h | 2026-04-27 09:00 A | 2026-04-27 10:00 A |  | 100% |  |  | start no earlier than 2026-04-27 09:00 | Зорькин В | 1h | 1h |
| 1344 | 2.255.2 | заявка на изготовление |  | 1h | 2026-04-28 10:00 A | 2026-04-28 11:00 A | 1343FS+1d | 100% |  |  | start no earlier than 2026-04-20 08:00 | Зорькин В | 1h | 1h |
| 1345 | 2.255.3 | контроль |  | 1h | 2026-05-04 09:00 A | 2026-05-04 10:00 A | 1344FS+1d | 100% |  |  | start no earlier than 2026-05-04 09:00 | Зорькин В | 1h | 1h |
| 1346 | 2.255.4 | заявка на выжечь проставку лдя кольца |  | 30min | 2026-07-15 09:00 A | 2026-07-15 09:30 A |  | 100% |  |  | start no earlier than 2026-07-15 09:00 | Зорькин В | 0.5h | 0.5h |
| 1347 | 2.255.5 | контроль доставки | milestone | 0d | 2026-07-22 09:30 A | 2026-07-22 09:30 A | 1346FS+5d | 100% |  |  | start no earlier than 2026-07-15 09:00 | Зорькин В |  |  |
| 1348 | 2.255.6 | провести тест |  | 1h | 2026-09-10 09:00 A | 2026-09-10 10:00 A |  | 100% |  |  | start no earlier than 2026-09-10 09:00 | Зорькин В | 1h | 1h |
| 1349 | 2.256 | замена фильтр вода подача в накопитель |  | 1h | 2026-04-21 09:00 A | 2026-04-21 10:00 A |  | 100% |  |  | start no earlier than 2026-04-21 09:00 | Тимофеев В | 1h | 1h |
| 1350 | 2.257 | замена потускневших ламп в инсекютере. Мастеру сообщить кол-во. б/у складывать в коробку |  | 2h | 2026-05-04 09:00 A | 2026-05-04 11:00 A |  | 100% |  |  | start no earlier than 2026-05-04 09:00 | Макаревич А | 2h | 2h |

| ID | WBS | Task | Type | Duration | Start | Finish | Predecessors | Complete | Actual start | Actual finish | Constraint | Resources | Work | Actual work |
| --- | --- | --- | --- | --- | --- | --- | --- | --- | --- | --- | --- | --- | --- | --- |
| 1351 | 2.258 | **ограждение палетообмотчика** |  | 19.25d | 2026-04-17 08:00 A | 2026-05-14 11:00 A |  | 100% |  |  |  |  | 190.5h | 190.5h |
| 1352 | 2.258.1 | **подготовка и монтаж рамы** |  | 6.75d | 2026-04-17 08:00 A | 2026-04-27 16:00 A |  | 100% |  |  |  |  | 24h | 24h |
| 1353 | 2.258.1.1 | изготовить ограждения для палетообмотчика (размеры обговорим) |  | 10h | 2026-04-17 08:00 A | 2026-04-20 11:00 A |  | 100% |  |  | start no earlier than 2026-04-17 08:00 | Макаревич А | 10h | 10h |
| 1354 | 2.258.1.2 | очистка, покраска рам ограждения. Быстросохн грунт-эмаль по ржавчине 3в1. |  | 4h | 2026-04-20 08:00 A | 2026-04-20 13:00 A |  | 100% |  |  | start no earlier than 2026-04-20 08:00 | Макаревич А | 4h | 4h |
| 1355 | 2.258.1.3 | монтаж рамы ограждения |  | 4h | 2026-04-27 09:00 A | 2026-04-27 13:00 A | 1354 | 100% |  |  | start no earlier than 2026-04-27 09:00 | Тимофеев В | 4h | 4h |
| 1356 | 2.258.1.4 | приварить пластины под стойки ограждения и закрепить к полу, чтобы оператор был вне зоны опасности) |  | 6h | 2026-04-25 09:00 A | 2026-04-27 16:00 A |  | 100% |  |  | start no earlier than 2026-04-25 09:00 | Макаревич А | 6h | 6h |
| 1357 | 2.258.2 | **обклеить рамы лентой** |  | 17.25d | 2026-04-21 09:00 A | 2026-05-14 11:00 A |  | 100% |  |  |  |  | 82.25h | 82.25h |
| 1358 | 2.258.2.1 | заявка клейка лента сигнальная черно-желтая / негабарит |  | 15min | 2026-04-21 09:00 A | 2026-04-21 09:15 A |  | 100% |  |  | start no earlier than 2026-04-21 09:00 | Зорькин В | 0.25h | 0.25h |
| 1359 | 2.258.2.2 | доставка |  | 10d | 2026-04-21 09:15 A | 2026-05-05 09:15 A | 1358 | 100% |  |  | start no earlier than 2026-04-20 08:00 | Карабанов | 80h | 80h |
| 1360 | 2.258.2.3 | монтаж ленты черно-желтой |  | 2h | 2026-05-14 09:00 A | 2026-05-14 11:00 A | 1359 | 100% |  |  | start no earlier than 2026-05-14 09:00 | Бобренок В | 2h | 2h |
| 1361 | 2.258.3 | **монтаж сетки на раму** |  | 10.03d | 2026-04-21 09:00 A | 2026-05-05 09:15 A |  | 100% |  |  |  |  | 84.25h | 84.25h |
| 1362 | 2.258.3.1 | заявка сетка для ограждения |  | 15min | 2026-04-21 09:00 A | 2026-04-21 09:15 A |  | 100% |  |  | start no earlier than 2026-04-21 09:00 | Зорькин В | 0.25h | 0.25h |
| 1363 | 2.258.3.2 | доставка сетка |  | 10d | 2026-04-21 09:15 A | 2026-05-05 09:15 A | 1362 | 100% |  |  | start no earlier than 2026-04-20 08:00 | Карабанов | 80h | 80h |
| 1364 | 2.258.3.3 | монтаж сетка |  | 4h | 2026-05-04 09:15 A | 2026-05-04 14:15 A | 1363 | 100% |  |  | start no earlier than 2026-04-20 08:00 | Некрасов А | 4h | 4h |
| 1365 | 2.259 | воздухозабоник циклона отпилить и вернуть как было раньше |  | 1h | 2026-04-28 09:00 A | 2026-04-28 10:00 A |  | 100% |  |  | start no earlier than 2026-04-28 09:00 | Тимофеев В | 1h | 1h |
| 1366 | 2.260 | проверка всех гидроаккумуляторов парогенератор, в вент комнате и отопительные |  | 2h | 2026-04-17 09:00 A | 2026-04-17 11:00 A |  | 100% |  |  | start no earlier than 2026-04-17 08:00 |  |  |  |
| 1367 | 2.261 | сборка полетообмотчика на фасовке |  | 1h | 2026-04-16 09:00 A | 2026-04-16 10:00 A |  | 100% |  |  | start no earlier than 2026-04-16 09:00 | Бобренок В | 1h | 1h |
| 1368 | 2.262 | заменить ремень на охладителе |  | 1h | 2026-04-15 09:00 A | 2026-04-15 10:00 A |  | 100% |  |  | start no earlier than 2026-04-15 08:00 | Некрасов А | 1h | 1h |
| 1369 | 2.263 | оторвался контроллер мониторинга на ШУ экструдера |  | 1h | 2026-04-15 09:00 A | 2026-04-15 10:00 A |  | 100% |  |  | start no earlier than 2026-04-15 08:00 | Некрасов А | 1h | 1h |
| 1370 | 2.264 | **сделать горловину на быстросъемах прекондиционер** |  | 3.88d? | 2026-04-16 09:00 | 2026-04-21 17:00 |  | 100% | 2026-08-20 09:00 | 2026-09-14 12:00 |  |  | 23h | 23h |
| 1371 | 2.264.1 | заказать защелки |  | 1d? | 2026-08-31 09:00 A | 2026-08-31 18:00 A |  | 100% |  |  | start no earlier than 2026-08-31 09:00 | Шуранов Ю | 8h | 8h |
| 1372 | 2.264.2 | Удлинить носик, чтоб можно было вешать мешок, куда будет ссыпаться мука |  | 3h | 2026-09-14 09:00 A | 2026-09-14 12:00 A |  | 100% |  |  | start no earlier than 2026-09-14 08:00 | Макаревич А | 3h | 3h |
| 1373 | 2.264.3 | изготовить установить люк для чистки с обр стороны как в 3ц (шапочка) |  | 4h | 2026-09-12 09:00 A | 2026-09-12 13:00 A |  | 100% |  |  | start no earlier than 2026-09-12 09:00 | Макаревич А | 4h | 4h |
| 1374 | 2.264.4 | установка |  | 1d? | 2026-08-20 09:00 A | 2026-08-20 18:00 A |  | 100% |  |  | start no earlier than 2026-09-02 09:00 | Тимофеев В | 8h | 8h |
| 1375 | 2.265 | перенести светильник квадропака (на край мезонина) |  | 2h | 2026-04-13 09:00 A | 2026-04-13 11:00 A |  | 100% |  |  | start no earlier than 2026-04-13 09:00 | Труфанов А | 2h | 2h |
| 1376 | 2.266 | сделать или мусоросборник на лотке выхода экструдера, или обратный лоток в сторону охдадителя (обсудим по телефону) |  | 4h | 2026-08-31 09:00 A | 2026-08-31 13:00 A |  | 100% |  |  | start no earlier than 2026-08-31 09:00 | Макаревич А | 4h | 4h |
| 1377 | 2.267 | слить конденсат с компрессора, продуть радиаторы, чистка фильтров | manual | 2h | 2026-04-12 09:00 A | 2026-04-12 11:00 A |  | 100% |  |  | start no earlier than 2026-04-12 09:00 | Труфанов А | 2h | 2h |
| 1378 | 2.268 | добавить в систему отопления воды (зона экструдера, вход в мойку) | manual | 2h | 2026-04-12 09:00 A | 2026-04-12 11:00 A |  | 100% |  |  | start no earlier than 2026-04-12 09:00 | Труфанов А | 2h | 2h |
| 1379 | 2.269 | починить стул Шелепову (выстучать середину и посадить на хомут) |  | 1h | 2026-04-11 09:00 A | 2026-04-13 10:00 A |  | 100% |  |  | start no earlier than 2026-04-11 09:00 | Труфанов А | 1h | 1h |
| 1380 | 2.270 | не работает вентилятор третий справа, плохой контакт- прикрутить |  | 1h | 2026-04-10 08:00 A | 2026-04-10 10:00 A |  | 100% |  |  | start no earlier than 2026-04-10 08:00 | Бобренок В | 1h | 1h |
| 1381 | 2.271 | взять канистру со склада и сделать подачу снизу, взять сгон с канистры 2 линии (канистру я видел в гидрализатной 1 ц.) |  | 1h | 2026-04-26 09:00 A | 2026-04-27 10:00 A |  | 100% |  |  | start no earlier than 2026-04-26 09:00 | Макаревич А | 1h | 1h |
| 1382 | 2.272 | сделать лоток под канистру рыбий жир - подача в прекондиционер |  | 3h | 2026-04-11 09:00 A | 2026-04-13 12:00 A |  | 100% |  |  | start no earlier than 2026-04-11 09:00 | Макаревич А | 3h | 3h |
| 1383 | 2.273 | перескочила цепь на 2ом ярусе охладителя -поправить |  | 1h | 2026-04-10 08:00 A | 2026-04-10 10:00 A |  | 100% |  |  | start no earlier than 2026-04-10 08:00 | Макаревич А | 1h | 1h |

| ID | WBS | Task | Type | Duration | Start | Finish | Predecessors | Complete | Remaining | Total slack | Constraint | Resources | Work | Actual work |
| --- | --- | --- | --- | --- | --- | --- | --- | --- | --- | --- | --- | --- | --- | --- |
| 1384 | 2.274 | **установка фосунок - подача жира 2 линия** |  | 5d | 2026-04-24 09:00 A | 2026-04-30 18:00 A |  | 100% |  |  |  |  | 8.42h | 8.42h |
| 1385 | 2.274.1 | заявка краны 1/2 |  | 15min | 2026-04-24 09:00 A | 2026-04-24 09:15 A |  | 100% |  |  | start no earlier than 2026-04-24 08:00 | Зорькин В | 0.25h | 0.25h |
| 1386 | 2.274.2 | доставка контроль |  | 10min | 2026-04-30 09:15 A | 2026-04-30 09:25 A | 1385FS+5d | 100% |  |  | start no earlier than 2026-04-24 08:00 | Зорькин В | 0.17h | 0.17h |
| 1387 | 2.274.3 | сборка кронштейн для фильтров + счетчик |  | 4h | 2026-04-30 09:25 A | 2026-04-30 14:25 A | 1386 | 100% |  |  | start no earlier than 2026-04-24 08:00 | Тимофеев В | 4h | 4h |
| 1388 | 2.274.4 | монтаж на линию фильтры + кронштейн + форсунка |  | 4h | 2026-04-30 13:25 A | 2026-04-30 18:00 A | 1387 | 100% |  |  | start no earlier than 2026-04-24 08:00 | Тимофеев В | 4h | 4h |
| 1389 | 2.275 | вывести на синий склад старые цепи от печи зона навесок |  | 2h | 2026-05-22 09:00 A | 2026-05-22 11:00 A |  | 100% |  |  | start no earlier than 2026-04-09 08:00 | Тимофеев В | 2h | 2h |
| 1390 | 2.276 | прикрутить уголок снизу выхода охладителя, забивается кормом (фото скину) |  | 1h | 2026-04-08 09:00 A | 2026-04-08 10:00 A |  | 100% |  |  | start no earlier than 2026-04-08 08:00 | Бундин В | 1h | 1h |
| 1391 | 2.277 | закрыть шибер кондиционера над жировиком |  | 1h | 2026-04-09 09:00 A | 2026-04-09 10:00 A |  | 100% |  |  | start no earlier than 2026-04-09 09:00 | Бобренок В | 1h | 1h |
| 1392 | 2.278 | прикрутить оргстекло в аквариуме где забрасывают навески в смеситель |  | 1h | 2026-04-08 09:00 A | 2026-04-08 10:00 A |  | 100% |  |  | start no earlier than 2026-04-08 09:00 | Бундин В | 1h | 1h |
| 1393 | 2.279 | ревизия двигатель, контакты ножевого узла |  | 1h | 2026-04-09 09:00 A | 2026-04-09 10:00 A |  | 100% |  |  | start no earlier than 2026-04-09 09:00 | Тимофеев В | 1h | 1h |
| 1394 | 2.280 | земена сеток печи |  | 2h | 2026-05-04 09:00 A | 2026-05-04 11:00 A |  | 100% |  |  | start no earlier than 2026-05-04 09:00 | Макаревич А; Некрасов А; Тимофеев В | 4h | 4h |
| 1395 | 2.281 | получить метал-лоток 100х50, закрепить слева от двери выхода с зоны экструдера и уложить все провода | manual | 2h | 2026-04-11 09:00 A | 2026-04-11 11:00 A |  | 100% |  |  |  | Труфанов А | 2h | 2h |
| 1396 | 2.282 | получить аллюминевый скотч- замотать стыки циклона, улитки печек, место рычага шибера улитки | manual | 2h | 2026-04-05 09:00 A | 2026-04-05 11:00 A |  | 100% |  |  | start no earlier than 2026-04-05 09:00 | Труфанов А | 2h | 2h |
| 1397 | 2.283 | **установить водоподготовку на парогенератор** |  | 141d? | 2026-04-08 09:00 A | 2026-10-09 18:00 |  | 3% | 137.19d? | 112.59d |  |  | 17.25h | 0.25h |
| 1398 | 2.283.1 | планирование монтажа |  | 1h | 2026-10-05 09:00 | 2026-10-05 10:00 |  |  |  | 117.47d | start no earlier than 2026-10-05 09:00 | Домоводов К | 1h |  |
| 1399 | 2.283.2 | запрос КП | milestone | 0min | 2026-04-08 09:00 A | 2026-04-08 09:00 A |  | 100% |  |  | start no earlier than 2026-04-08 09:00 | Зорькин В |  |  |
| 1400 | 2.283.3 | решение о покупке | milestone | 0d | 2026-04-08 18:00 A | 2026-04-08 18:00 A | 1399FS+1d | 100% |  |  | start no earlier than 2026-04-03 08:00 | Домоводов К |  |  |
| 1401 | 2.283.4 | контроль поставки |  | 15min | 2026-04-27 09:00 A | 2026-04-27 09:15 A |  | 100% |  |  | start no earlier than 2026-04-27 09:00 | Зорькин В | 0.25h | 0.25h |
| 1402 | 2.283.5 | монтаж (установка) |  | 1d? | 2026-10-09 09:00 | 2026-10-09 18:00 |  |  |  | 112.59d | start no earlier than 2026-10-09 09:00 | Тимофеев В; Некрасов А | 16h |  |
| 1403 | 2.284 | **изготовить сетку перед фильерой экструдера от костей** |  | 11d | 2026-04-17 09:00 A | 2026-05-01 18:00 A |  | 100% |  |  |  |  | 83.25h | 83.25h |
| 1404 | 2.284.1 | составить чертеж |  | 2h | 2026-04-17 09:00 A | 2026-04-17 11:00 A |  | 100% |  |  | start no earlier than 2026-04-17 09:00 | Зорькин В | 2h | 2h |
| 1405 | 2.284.2 | разместить заказ |  | 1h | 2026-04-18 11:00 A | 2026-04-20 10:00 A | 1404FS+1d | 100% |  |  | start no earlier than 2026-04-03 08:00 | Зорькин В | 1h | 1h |
| 1406 | 2.284.3 | изготовление |  | 10d | 2026-04-18 12:00 A | 2026-05-01 18:00 A | 1405 | 100% |  |  | start no earlier than 2026-04-03 08:00 | Подрядчик | 80h | 80h |
| 1407 | 2.284.4 | контроль | milestone | 0d | 2026-04-30 12:00 A | 2026-04-30 12:00 A | 1406 | 100% |  |  | start no earlier than 2026-04-03 08:00 | Зорькин В |  |  |
| 1408 | 2.284.5 | орг забрать |  | 15min | 2026-05-01 12:00 A | 2026-05-01 12:15 A | 1407FS+1d | 100% |  |  | start no earlier than 2026-04-03 08:00 | Зорькин В | 0.25h | 0.25h |

| ID | WBS | Task | Type | Duration | Start | Finish | Predecessors | Complete | Actual start | Actual finish | Constraint | Resources | Work | Actual work |
| --- | --- | --- | --- | --- | --- | --- | --- | --- | --- | --- | --- | --- | --- | --- |
| 1409 | 2.285 | **вешалка для дамских сумочек в тамбур при надевании бахил** |  | 13.25d | 2026-05-04 09:00 | 2026-05-18 11:00 |  | 100% | 2026-04-17 09:00 | 2026-06-15 10:00 |  |  | 82h | 82h |
| 1410 | 2.285.1 | заявка |  | 1h | 2026-04-17 09:00 A | 2026-04-17 10:00 A |  | 100% |  |  | start no earlier than 2026-04-17 09:00 | Зорькин В | 1h | 1h |
| 1411 | 2.285.2 | доставка |  | 10d | 2026-04-17 10:00 A | 2026-05-01 10:00 A | 1410 | 100% |  |  | start no earlier than 2026-04-02 08:00 | Карабанов | 80h | 80h |
| 1412 | 2.285.3 | монтаж |  | 1h | 2026-06-13 09:00 A | 2026-06-15 10:00 A | 1411 | 100% |  |  | start no earlier than 2026-06-13 09:00 | Бобренок В | 1h | 1h |
| 1413 | 2.286 | Врезка фитинга 1/2х12мм в дверку прекондиционера 2 цех (созвон с Зорькиным) |  | 30min | 2026-04-09 09:00 A | 2026-04-09 09:30 A |  | 100% |  |  | start no earlier than 2026-04-09 09:00 | Тимофеев В | 0.5h | 0.5h |
| 1414 | 2.287 | проверить контур управления насосом ПГ |  | 1h | 2026-04-02 09:00 A | 2026-04-02 10:00 A |  | 100% |  |  | start no earlier than 2026-04-02 09:00 | Тимофеев В | 1h | 1h |
| 1415 | 2.288 | замена электродной группы или чистка до металла электродов |  | 1h | 2026-04-16 09:00 A | 2026-04-16 10:00 A |  | 100% |  |  | start no earlier than 2026-04-16 09:00 | Макаревич А | 1h | 1h |
| 1416 | 2.289 | закрепить шкаф управления приточной вентиляцией |  | 30min | 2026-04-01 08:00 A | 2026-04-01 09:30 A |  | 100% |  |  | start no earlier than 2026-04-01 08:00 | Бобренок В | 0.5h | 0.5h |
| 1417 | 2.290 | установить пневмо пистолеты на охладители с длинным носиком (у мастеров) |  | 1h | 2026-04-01 08:00 A | 2026-04-01 10:00 A |  | 100% |  |  | start no earlier than 2026-04-01 08:00 | Бобренок В | 1h | 1h |
| 1418 | 2.291 | утечка группа безопасности котел склад навесок устранить |  | 30min | 2026-03-31 08:00 A | 2026-03-31 09:30 A |  | 100% |  |  | start no earlier than 2026-03-31 08:00 | Бобренок В | 0.5h | 0.5h |
| 1419 | 2.292 | закрепить две трубы подачи воздуха в охладителе, пневмо шланг подачи в улитку крепим к стене |  | 2h | 2026-03-27 09:00 A | 2026-03-27 11:00 A |  | 100% |  |  | start no earlier than 2026-03-27 08:00 | Труфанов А | 2h | 2h |
| 1420 | 2.293 | изготовить 2 лотка 700х400х50 мм из нерж под транспортерную ленту транспортер №1 и №2 |  | 6h | 2026-04-04 09:00 A | 2026-04-06 16:00 A |  | 100% |  |  | start no earlier than 2026-04-04 09:00 | Макаревич А | 6h | 6h |
| 1421 | 2.294 | открутить вилку-розетку возле насоса подачи жиров в экструдер |  | 1h | 2026-04-01 09:00 A | 2026-04-01 10:00 A |  | 100% |  |  | start no earlier than 2026-04-01 09:00 | Бобренок В | 1h | 1h |
| 1422 | 2.295 | прикруть кусок металлопрофиля ,чтобы заделать отверстие куда проходит труба отопления (зона где привозят навески) фото скину | manual | 1h | 2026-03-29 09:00 A | 2026-03-29 10:00 A |  | 100% |  |  | start no earlier than 2026-03-29 09:00 | Бундин В | 1h | 1h |
| 1423 | 2.296 | **замена ленты нория** |  | 4.5d | 2026-03-27 08:00 A | 2026-04-02 13:00 A |  | 100% |  |  |  |  | 39.5h | 39.5h |
| 1424 | 2.296.1 | получить материал весь | manual | 30min | 2026-03-29 09:00 A | 2026-03-29 09:30 A |  | 100% |  |  | start no earlier than 2026-03-29 09:00 | Тимофеев В | 0.5h | 0.5h |
| 1425 | 2.296.2 | подготовка кондуктора |  | 2h | 2026-03-27 08:00 A | 2026-03-27 11:00 A |  | 100% |  |  | start no earlier than 2026-03-27 08:00 | Некрасов А; Тимофеев В | 4h | 4h |
| 1426 | 2.296.3 | подготовить к установке норийную ленту, ковши, болты |  | 15h | 2026-03-28 09:00 A | 2026-03-31 17:00 A |  | 100% |  |  | start no earlier than 2026-03-28 09:00 | Дедов В | 15h | 15h |
| 1427 | 2.296.4 | подготовка крепления лебедки для затягивания ленты |  | 4h | 2026-03-31 09:00 A | 2026-03-31 13:00 A |  | 100% |  |  | start no earlier than 2026-03-31 09:00 | Труфанов А; Некрасов А | 8h | 8h |
| 1428 | 2.296.5 | замена ленты |  | 4h | 2026-04-02 09:00 A | 2026-04-02 13:00 A |  | 100% |  |  | start no earlier than 2026-04-02 09:00 | Некрасов А; Макаревич А; Тимофеев В | 12h | 12h |
| 1429 | 2.297 | закрепить гофру на трос -рефрежераторы на территории |  | 1h | 2026-03-27 09:00 A | 2026-03-27 10:00 A |  | 100% |  |  | start no earlier than 2026-03-27 09:00 | Некрасов А | 1h | 1h |
| 1430 | 2.298 | монтаж розетки до канистры с жиром для подачи в экструдер (подключение весов) |  | 2h | 2026-03-26 09:00 A | 2026-03-26 11:00 A |  | 100% |  |  | start no earlier than 2026-03-26 09:00 | Дедов В | 2h | 2h |
| 1431 | 2.299 | заделать щели / маршпуты крыс . Зона хранения навесок (закрутить профлист и запенить отверстие под трубу) |  | 1h | 2026-03-26 09:00 A | 2026-03-26 10:00 A |  | 100% |  |  | start no earlier than 2026-03-26 09:00 | Некрасов А | 1h | 1h |
| 1432 | 2.300 | оперативная замена шнеков |  | 6h | 2026-03-23 09:00 A | 2026-03-23 16:00 A |  | 100% |  |  | start no earlier than 2026-03-23 09:00 | Бобренок В; Бундин В | 12h | 12h |
| 1433 | 2.301 | выдать шланг для продувки бестрома |  | 1h | 2026-03-23 09:00 A | 2026-03-23 10:00 A |  | 100% |  |  | start no earlier than 2026-03-23 09:00 | Бундин В | 1h | 1h |
| 1434 | 2.302 | приварить уголок на лотке в охладитель (фото скину) |  | 2h | 2026-03-24 09:00 A | 2026-03-24 11:00 A |  | 100% |  |  | start no earlier than 2026-03-24 09:00 | Бобренок В | 2h | 2h |
| 1435 | 2.303 | на транспортере с охладителя отрезать концы саморезов на оргстекле (зарапают руки) |  | 1h | 2026-03-23 09:00 A | 2026-03-23 10:00 A |  | 100% |  |  | start no earlier than 2026-03-23 08:00 | Бундин В | 1h | 1h |
| 1436 | 2.304 | насосная станция включить и проверить на кз (выбивало автомат) |  | 2h | 2026-03-31 09:00 A | 2026-03-31 11:00 A |  | 100% |  |  | start no earlier than 2026-03-31 09:00 | Тимофеев В | 2h | 2h |
| 1437 | 2.305 | закрепить трубу РР к стене в районе хранения кубов гидролизат |  | 1h | 2026-03-26 09:00 A | 2026-03-26 10:00 A |  | 100% |  |  | start no earlier than 2026-03-26 09:00 | Тимофеев В | 1h | 1h |
| 1438 | 2.306 | настройка продувка ПГ ч/з 30 мин |  | 30min | 2026-04-02 09:00 A | 2026-04-02 09:30 A |  | 100% |  |  | start no earlier than 2026-04-02 09:00 | Шуранов Ю | 0.5h | 0.5h |
| 1439 | 2.307 | на красном смесителе закусывает ручку шибера - разобраться |  | 2h | 2026-03-26 09:00 A | 2026-03-26 11:00 A |  | 100% |  |  | start no earlier than 2026-03-26 09:00 | Тимофеев В | 2h | 2h |
| 1440 | 2.308 | посмотреть эл. магнит на двери вход ц.2 |  | 1h | 2026-03-27 09:00 A | 2026-03-27 10:00 A |  | 100% |  |  | start no earlier than 2026-03-27 09:00 | Тимофеев В | 1h | 1h |
| 1441 | 2.309 | ящик возле нашего кабинета- прибить или прикрутить дно |  | 1h | 2026-03-22 09:00 A | 2026-03-23 10:00 A |  | 100% |  |  | start no earlier than 2026-03-22 09:00 | Бобренок В | 1h | 1h |
| 1442 | 2.310 | слить конденсат, почистить фильтры и продуть радиаторы |  | 1h | 2026-03-21 09:00 A | 2026-03-23 10:00 A |  | 100% |  |  | start no earlier than 2026-03-21 09:00 | Дедов В | 1h | 1h |
| 1443 | 2.311 | забрать кресло Сапелина на ремонт в слесарку с каб. Шелепова |  | 2h | 2026-03-23 09:00 A | 2026-03-23 11:00 A |  | 100% |  |  | start no earlier than 2026-03-23 09:00 | Тимофеев В | 2h | 2h |
| 1444 | 2.312 | закрепить кабель в гофре на клипсы от розетки слева от ворот жировика |  | 1h | 2026-03-26 09:00 A | 2026-03-26 10:00 A |  | 100% |  |  | start no earlier than 2026-03-26 09:00 | Труфанов А | 1h | 1h |
| 1445 | 2.313 | уложить выше подиума и красиво закрепить на клипсы кабель в гофре от ворот справа (фото вышлю) |  | 1h | 2026-04-16 09:00 A | 2026-04-16 10:00 A |  | 100% |  |  | start no earlier than 2026-04-10 09:00 | Тимофеев В | 1h | 1h |
| 1446 | 2.314 | монтаж отбойников по периметру |  | 4h | 2026-03-25 09:00 A | 2026-03-25 13:00 A |  | 100% |  |  | start no earlier than 2026-03-25 09:00 | Бундин В | 4h | 4h |
| 1447 | 2.315 | перенос отбойник ГП с стороны эл щита, что бы не входл палет |  | 2h | 2026-03-19 08:00 A | 2026-03-19 11:00 A |  | 100% |  |  | start no earlier than 2026-03-19 08:00 | Бобренок В | 2h | 2h |
| 1448 | 2.316 | установить лист сендвич панель на стену жир/экструдер с стороны мойки |  | 3h | 2026-04-07 09:00 A | 2026-04-07 12:00 A |  | 100% |  |  | start no earlier than 2026-04-07 09:00 | Некрасов А; Труфанов А | 6h | 6h |
| 1449 | 2.317 | подлючить пневмоулитку к воздуху в охладителе |  | 1h | 2026-03-31 09:00 A | 2026-03-31 10:00 A |  | 100% |  |  | start no earlier than 2026-03-31 09:00 | Бобренок В | 1h | 1h |
| 1450 | 2.318 | выдать уплотнение на крышки прекондиционера |  | 30min | 2026-03-19 08:00 A | 2026-03-19 09:30 A |  | 100% |  |  | start no earlier than 2026-03-19 08:00 | Бобренок В | 0.5h | 0.5h |

| ID | WBS | Task | Type | Duration | Start | Finish | Predecessors | Complete | Actual start | Actual finish | Constraint | Resources | Work | Actual work |
| --- | --- | --- | --- | --- | --- | --- | --- | --- | --- | --- | --- | --- | --- | --- |
| 1451 | 2.319 | **ворота фасовка** |  | 0.12d | 2026-03-26 09:00 A | 2026-03-26 10:00 A |  | 100% |  |  |  |  | 1h | 1h |
| 1452 | 2.319.1 | закрепить гофру до розетки слева от ворот и закрыть монтажную коробку |  | 1h | 2026-03-26 09:00 A | 2026-03-26 10:00 A |  | 100% |  |  | start no earlier than 2026-03-26 09:00 | Некрасов А | 1h | 1h |
| 1453 | 2.320 | **забивает лоток прекондиционер/экструдер, передалать** |  | 1.62d | 2026-08-31 09:00 A | 2026-09-01 15:00 A |  | 100% |  |  |  |  | 5h | 5h |
| 1454 | 2.320.1 | изготовить чертежи лекалы для воронки |  | 1h | 2026-08-31 09:00 A | 2026-08-31 10:00 A |  | 100% |  |  | start no earlier than 2026-08-31 09:00 | Шуранов Ю | 1h | 1h |
| 1455 | 2.320.2 | изготовление воронки |  | 4h | 2026-09-01 10:00 A | 2026-09-01 15:00 A | 1454FS+1d | 100% |  |  | start no earlier than 2026-09-01 09:00 | Макаревич А | 4h | 4h |
| 1456 | 2.321 | уложить в лоток пучек управления заслонками, отвязать от батареи |  | 1h | 2026-03-17 08:00 A | 2026-03-17 10:00 A |  | 100% |  |  | start no earlier than 2026-03-17 08:00 | Бобренок В | 1h | 1h |
| 1457 | 2.322 | распред коробка подкл вентилятора которого уже нет (кондиционер №3 жиры) - облогородить |  | 30min | 2026-03-17 08:00 A | 2026-03-17 09:30 A |  | 100% |  |  | start no earlier than 2026-03-17 08:00 | Бобренок В | 0.5h | 0.5h |
| 1458 | 2.323 | удалить лотаки с барана |  | 2h | 2026-03-19 09:00 A | 2026-03-19 11:00 A |  | 100% |  |  | start no earlier than 2026-03-19 08:00 | Труфанов А; Некрасов А | 4h | 4h |
| 1459 | 2.324 | упорядочить проводку регистратора данных - стянуть в пучек |  | 1h | 2026-03-20 09:00 A | 2026-03-20 10:00 A |  | 100% |  |  | start no earlier than 2026-03-20 09:00 | Дедов В | 1h | 1h |
| 1460 | 2.325 | **открыть люк у бестрома / ревизяия / закрыть на герметик** |  | 0.12d | 2026-03-19 09:00 A | 2026-03-19 10:00 A |  | 100% |  |  |  | Труфанов А | 2h | 2h |
| 1461 | 2.325.1 | хим. Лаборатория устранить течь с оборудования |  | 1h | 2026-03-19 09:00 A | 2026-03-19 10:00 A |  | 100% |  |  | start no earlier than 2026-03-19 08:00 | Труфанов А | 1h | 1h |
| 1462 | 2.326 | **изготовить 2 лотка из нерж. в зоне жиров по аналогии с первым цехом под транспортером тип 1 и тип 2** |  | 0.25d | 2026-03-16 09:00 A | 2026-03-16 11:00 A |  | 100% |  |  |  | Макаревич А | 4h | 4h |
| 1463 | 2.326.1 | установить отбойник в зону ХХХ, брать в 5А |  | 2h | 2026-03-16 09:00 A | 2026-03-16 11:00 A |  | 100% |  |  | start no earlier than 2026-03-16 09:00 | Бобренок В | 2h | 2h |
| 1464 | 2.327 | **сточить острый край лотка загрузки в охладитель** |  | 0.12d | 2026-03-15 09:00 A | 2026-03-16 10:00 A |  | 100% |  |  |  | Некрасов А | 3h | 3h |
| 1465 | 2.327.1 | вывезти люльку, вывезти бойлер, провода на жирах спрятать в коробку |  | 1h | 2026-03-15 09:00 A | 2026-03-16 10:00 A |  | 100% |  |  | start no earlier than 2026-03-15 09:00 | Бобренок В | 1h | 1h |
| 1466 | 2.327.2 | бойлер в душе - установить трубку на клапан сброса и смонтировать её по стене до канализ трубы |  | 1h | 2026-03-16 09:00 A | 2026-03-16 10:00 A |  | 100% |  |  | start no earlier than 2026-03-16 09:00 | Макаревич А | 1h | 1h |
| 1467 | 2.328 | облогородить кабельный пучек, сделать аккуратно/закрыить крышкой. Слева от двери экструдер/тамбур под лестницей |  | 6h | 2026-04-09 09:00 A | 2026-04-09 16:00 A |  | 100% |  |  | start no earlier than 2026-04-11 09:00 | Труфанов А | 6h | 6h |
| 1468 | 2.329 | **изготовить сетку после барабана по аналогии с сущ 10мм** |  | 2.5d | 2026-03-12 09:00 A | 2026-03-16 13:00 A |  | 100% |  |  |  | Макаревич А | 25.5h | 25.5h |
| 1469 | 2.329.1 | на лоток загрузки в охладитель - установить доп борт с левой стороны, такой же как с правой (съемный) |  | 4h | 2026-03-15 09:00 A | 2026-03-16 13:00 A |  | 100% |  |  | start no earlier than 2026-03-15 09:00 | Бобренок В | 4h | 4h |
| 1470 | 2.329.2 | квадропак стол подачи пакетов устновить кайки с барашком/приварить. + зафиксировать от бокового смещения |  | 1h | 2026-03-16 09:00 A | 2026-03-16 10:00 A |  | 100% |  |  | start no earlier than 2026-03-16 09:00 | Тимофеев В | 1h | 1h |
| 1471 | 2.329.3 | изменить время разгон/торожение привод барабана |  | 30min | 2026-03-12 09:00 A | 2026-03-12 09:30 A |  | 100% |  |  | start no earlier than 2026-03-13 09:00 | Дедов В | 0.5h | 0.5h |
| 1472 | 2.330 | изготовить кожух на шестерни прекондиционера |  | 6h | 2026-04-03 09:00 A | 2026-04-03 16:00 A |  | 100% |  |  | start no earlier than 2026-04-03 09:00 | Макаревич А | 6h | 6h |
| 1473 | 2.331 | **ремонт датчик давления линия 3** |  | 30.25d | 2026-03-26 09:00 | 2026-04-30 11:00 |  | 100% | 2026-05-14 09:00 | 2026-06-11 12:00 |  |  | 124.75h | 124.75h |
| 1474 | 2.331.1 | заявка переходник G1/4 /M20*1.5 токарю |  | 15min | 2026-05-14 09:00 A | 2026-05-14 09:15 A |  | 100% |  |  | start no earlier than 2026-05-14 09:00 | Зорькин В | 0.25h | 0.25h |
| 1475 | 2.331.2 | контроль изг/орг доставка | milestone | 0d | 2026-05-14 09:15 A | 2026-05-14 09:15 A | 1474 | 100% |  |  | start no earlier than 2026-03-20 08:00 |  |  |  |
| 1476 | 2.331.3 | заказ замена + в ЗИП |  | 15min | 2026-05-14 09:15 A | 2026-05-14 09:30 A | 1475 | 100% |  |  | start no earlier than 2026-03-13 09:00 | Зорькин В | 0.25h | 0.25h |
| 1477 | 2.331.4 | заявка на РВД удлинитель |  | 15min | 2026-05-14 09:30 A | 2026-05-14 09:45 A | 1476 | 100% |  |  | start no earlier than 2026-03-12 08:00 | Зорькин В | 0.25h | 0.25h |
| 1478 | 2.331.5 | доставка |  | 15d | 2026-05-14 09:45 A | 2026-06-04 09:45 A | 1477 | 100% |  |  | start no earlier than 2026-03-12 08:00 | Карабанов | 120h | 120h |
| 1479 | 2.331.6 | монтаж |  | 1h | 2026-06-04 09:00 A | 2026-06-04 10:00 A |  | 100% |  |  | start no earlier than 2026-06-04 09:00 | Тимофеев В | 1h | 1h |
| 1480 | 2.331.7 | датчик давления экструдера проверка подключения |  | 3h | 2026-06-11 09:00 A | 2026-06-11 12:00 A |  | 100% |  |  | start no earlier than 2026-06-11 09:00 | Дедов В | 3h | 3h |

| ID | WBS | Task | Duration | Start | Finish | Predecessors | Complete | Constraint | Resources | Work | Actual work |
| --- | --- | --- | --- | --- | --- | --- | --- | --- | --- | --- | --- |
| 1481 | 2.332 | **установить сирену при отключении автомата ПГ** | 28.12d | 2026-03-13 09:00 A | 2026-04-22 10:00 A |  | 100% |  |  | 81.5h | 81.5h |
| 1482 | 2.332.1 | заявка на реле / сирена | 30min | 2026-03-13 09:00 A | 2026-03-13 09:30 A |  | 100% | start no earlier than 2026-03-13 09:00 | Шуранов Ю | 0.5h | 0.5h |
| 1483 | 2.332.2 | доставка | 10d | 2026-03-13 09:30 A | 2026-03-27 09:30 A | 1482 | 100% | start no earlier than 2026-03-12 08:00 | Карабанов | 80h | 80h |
| 1484 | 2.332.3 | монтаж в схему (проверить почему не срабатывает) | 1h | 2026-04-22 09:00 A | 2026-04-22 10:00 A | 1483 | 100% | start no earlier than 2026-04-22 09:00 | Дедов В | 1h | 1h |
| 1485 | 2.333 | **установить сирену на отключение автоматов в печи** | 16d | 2026-03-11 09:00 A | 2026-04-01 18:00 A |  | 100% |  |  | 44.25h | 44.25h |
| 1486 | 2.333.1 | заявка сирена | 15min | 2026-03-13 09:30 A | 2026-03-13 09:45 A | 1482 | 100% | start no earlier than 2026-03-12 08:00 | Шуранов Ю | 0.25h | 0.25h |
| 1487 | 2.333.2 | доставка | 5d | 2026-03-13 09:45 A | 2026-03-20 09:45 A | 1486 | 100% | start no earlier than 2026-03-12 08:00 | Карабанов | 40h | 40h |
| 1488 | 2.333.3 | монтаж | 2h | 2026-03-19 09:00 A | 2026-03-19 11:00 A | 1487 | 100% | start no earlier than 2026-03-19 09:00 | Дедов В | 2h | 2h |
| 1489 | 2.333.4 | доставка сирены | 10d | 2026-03-19 09:00 A | 2026-04-01 18:00 A |  | 100% | start no earlier than 2026-03-19 08:00 |  |  |  |
| 1490 | 2.333.5 | монтаж сирены | 1h | 2026-03-31 09:00 A | 2026-03-31 10:00 A | 1489 | 100% | start no earlier than 2026-03-31 09:00 | Дедов В | 1h | 1h |
| 1491 | 2.333.6 | настройка доводчика дверь вход в зону экструдера | 1h | 2026-03-11 09:00 A | 2026-03-11 10:00 A |  | 100% | start no earlier than 2026-03-11 09:00 | Макаревич А | 1h | 1h |
| 1492 | 2.334 | **выпадает фильера с матрицы - делать стпор** | 0.5d | 2026-04-27 09:00 A | 2026-04-27 13:00 A |  | 100% |  |  | 4.5h | 4.5h |
| 1493 | 2.334.1 | подготовка сверла / метчика | 30min | 2026-04-27 09:00 A | 2026-04-27 09:30 A |  | 100% | start no earlier than 2026-04-27 09:00 | Шуранов Ю | 0.5h | 0.5h |
| 1494 | 2.334.2 | сверлить и резать резьбу для фикс болта | 4h | 2026-04-27 09:00 A | 2026-04-27 13:00 A |  | 100% | start no earlier than 2026-04-27 09:00 | Подрядчик | 4h | 4h |
| 1495 | 2.335 | **замена поликарбанат на перегородках металопрофилем** | 68.75d | 2026-03-11 09:00 A | 2026-06-15 16:00 A |  | 100% |  |  | 114h | 114h |
| 1496 | 2.335.1 | расчет материал стена охладитель | 1h | 2026-03-19 09:00 A | 2026-03-19 10:00 A |  | 100% | start no earlier than 2026-03-19 09:00 | Шуранов Ю | 1h | 1h |
| 1497 | 2.335.2 | заявка | 1h | 2026-03-19 10:00 A | 2026-03-19 11:00 A | 1496 | 100% | start no earlier than 2026-03-12 08:00 | Шуранов Ю | 1h | 1h |
| 1498 | 2.335.3 | доставка | 10d | 2026-03-19 11:00 A | 2026-04-02 11:00 A | 1497 | 100% | start no earlier than 2026-03-12 08:00 | Карабанов | 80h | 80h |
| 1499 | 2.335.4 | из металлопрофиля 3м. Обшиваем охладитель внутри и снаружи + утеплитель | 5h | 2026-05-29 09:00 A | 2026-05-29 15:00 A |  | 100% | start no earlier than 2026-05-29 09:00 | Некрасов А; Бобренок В | 10h | 10h |
| 1500 | 2.335.5 | продолжить монтаж (со стороны охладителя и со стороны жиров) | 6h | 2026-06-15 09:00 A | 2026-06-15 16:00 A | 1498 | 100% | start no earlier than 2026-06-15 09:00 | Некрасов А; Бундин В | 12h | 12h |
| 1501 | 2.335.6 | замена шланг реле давление и настройка. фильтр приточная офис | 1h | 2026-03-12 09:00 A | 2026-03-12 10:00 A |  | 100% | start no earlier than 2026-03-13 09:00 | Дедов В | 1h | 1h |
| 1502 | 2.335.7 | замена насос гидролизата | 1h | 2026-03-12 08:00 A | 2026-03-12 10:00 A |  | 100% | start no earlier than 2026-03-12 08:00 | Бундин В; Тимофеев В | 2h | 2h |
| 1503 | 2.335.8 | замена подшипник прекондиционер | 1h | 2026-03-12 09:00 A | 2026-03-12 10:00 A |  | 100% | start no earlier than 2026-03-12 08:00 | Бундин В | 1h | 1h |
| 1504 | 2.335.9 | ремонт вал охладитель | 4h | 2026-03-12 09:00 A | 2026-03-12 13:00 A |  | 100% | start no earlier than 2026-03-19 09:00 | Тимофеев В | 4h | 4h |
| 1505 | 2.335.10 | плохо закр дверь на фасовку. заменить личинку двери / выравнить напильником в коробке. | 1h | 2026-03-11 09:00 A | 2026-03-11 10:00 A |  | 100% | start no earlier than 2026-03-11 09:00 | Макаревич А | 1h | 1h |
| 1506 | 2.335.11 | крепить поликарбанат стена печь/жир длинная часть | 1h | 2026-03-11 09:00 A | 2026-03-11 10:00 A |  | 100% | start no earlier than 2026-03-11 09:00 | Макаревич А | 1h | 1h |
| 1507 | 2.336 | сетку на выходе барабана жир закрепить. Устр вспомогактельные крепжи операторам | 1h | 2026-03-19 09:00 A | 2026-03-19 10:00 A |  | 100% | start no earlier than 2026-03-19 09:00 | Тимофеев В | 1h | 1h |

| ID | WBS | Task | Duration | Start | Finish | Predecessors | Complete | Constraint | Resources | Work | Actual work |
| --- | --- | --- | --- | --- | --- | --- | --- | --- | --- | --- | --- |
| 1508 | 2.337 | **установить / снять трубу от ПГ для чистки сетки** | 0.25d | 2026-03-12 09:00 A | 2026-03-12 11:00 A |  | 100% |  | Тимофеев В | 7h | 7h |
| 1509 | 2.337.1 | чистка циклон снаружи от копоти. Средство для чистки выдаст Шелепов К | 2h | 2026-03-12 09:00 A | 2026-03-12 11:00 A |  | 100% | start no earlier than 2026-03-12 09:00 | Тимофеев В; Бундин В | 4h | 4h |
| 1510 | 2.337.2 | замена датчик расхода пара | 1h | 2026-03-12 09:00 A | 2026-03-12 10:00 A |  | 100% | start no earlier than 2026-03-12 09:00 | Некрасов А | 1h | 1h |
| 1511 | 2.338 | **замениь фитинги на жир** | 0.25d | 2026-03-10 09:00 A | 2026-03-10 11:00 A | 721 | 100% |  | Некрасов А | 4h | 4h |
| 1512 | 2.338.1 | замена бойлер в мойке экструдера на бойлер который весит за экструдером | 2h | 2026-03-10 09:00 A | 2026-03-10 11:00 A |  | 100% | start no earlier than 2026-03-10 09:00 | Дедов В | 2h | 2h |
| 1513 | 2.339 | **переключить освещение на автолномный выключатель, запитанный от системы освещения, а не от оборудования.** | 15.38d | 2026-03-05 09:00 A | 2026-03-26 12:00 A |  | 100% |  |  | 13h | 13h |
| 1514 | 2.339.1 | ножевой узел | 1.5h | 2026-03-26 09:00 A | 2026-03-26 10:30 A |  | 100% | start no earlier than 2026-03-26 09:00 | Дедов В; Некрасов А | 3h | 3h |
| 1515 | 2.339.2 | бестром | 1.5h | 2026-03-26 09:00 A | 2026-03-26 10:30 A |  | 100% | start no earlier than 2026-03-26 09:00 | Некрасов А; Дедов В | 3h | 3h |
| 1516 | 2.339.3 | выход с охладителя | 1.5h | 2026-03-26 10:30 A | 2026-03-26 12:00 A | 1514 | 100% | start no earlier than 2026-03-26 09:00 | Дедов В; Некрасов А | 3h | 3h |
| 1517 | 2.339.4 | переключить норию квадропака стационрно, без розетки | 2h | 2026-03-05 09:00 A | 2026-03-05 11:00 A |  | 100% | start no earlier than 2026-03-05 09:00 | Дедов В | 2h | 2h |
| 1518 | 2.339.5 | перемонтаж провода заземления нории квадропак эстетично и удобно для прохода и уборщицы | 2h | 2026-03-05 09:00 A | 2026-03-05 11:00 A |  | 100% | start no earlier than 2026-03-05 09:00 | Дедов В | 2h | 2h |
| 1519 | 2.340 | **сетки на дно печи в зип изготовить** | 10.5d | 2026-03-10 09:00 A | 2026-03-24 13:00 A |  | 100% |  |  | 85h | 85h |
| 1520 | 2.340.1 | заявка сетка уголки | 1h | 2026-03-10 09:00 A | 2026-03-10 10:00 A |  | 100% | start no earlier than 2026-03-10 09:00 | Шуранов Ю | 1h | 1h |
| 1521 | 2.340.2 | доставка | 10d | 2026-03-10 10:00 A | 2026-03-24 10:00 A | 1520 | 100% | start no earlier than 2026-03-06 08:00 | Карабанов | 80h | 80h |
| 1522 | 2.340.3 | изготовление | 4h | 2026-03-24 09:00 A | 2026-03-24 13:00 A | 1521 | 100% | start no earlier than 2026-03-24 09:00 | Тимофеев В | 4h | 4h |
| 1523 | 2.341 | закрепить лоток для совка с спиртом. Изготовить усилит косынку | 2h | 2026-03-07 09:00 A | 2026-03-09 11:00 A |  | 100% | start no earlier than 2026-03-07 09:00 | Бундин В | 2h | 2h |
| 1524 | 2.342 | **установить монтажную коробку квадропак. Инструктаж Шуранов по тлф** | 0.12d | 2026-03-06 08:00 A | 2026-03-06 10:00 A |  | 100% |  | Бундин В | 2h | 2h |
| 1525 | 2.342.1 | Не уходит вода в душевой кабине, посмотреть, устранить. | 1h | 2026-03-06 08:00 A | 2026-03-06 10:00 A |  | 100% | start no earlier than 2026-03-06 08:00 | Бобренок В | 1h | 1h |
| 1526 | 2.343 | ревизия вентиляторов охладителя, не закрываются крышки | 30min | 2026-03-05 09:00 A | 2026-03-05 09:30 A |  | 100% | start no earlier than 2026-03-05 09:00 | Тимофеев В | 0.5h | 0.5h |
| 1527 | 2.344 | **Квадропак** | 0.38d | 2026-03-05 09:00 A | 2026-03-05 12:00 A |  | 100% |  |  | 3h | 3h |
| 1528 | 2.344.1 | Уложить красиво провода на лестнице квадропака цех 2 (созвон с Шурановым) | 3h | 2026-03-05 09:00 A | 2026-03-05 12:00 A |  | 100% | start no earlier than 2026-03-05 09:00 | Дедов В | 3h | 3h |
| 1529 | 2.345 | **Сброс ошибо Н4 и Е9 на кондиционерах** | 0.08d | 2026-03-04 09:00 A | 2026-03-04 09:40 A |  | 100% |  |  | 0.67h | 0.67h |
| 1530 | 2.345.1 | Договориться с оплотом по решению | 30min | 2026-03-04 09:00 A | 2026-03-04 09:30 A |  | 100% | start no earlier than 2026-03-04 09:00 | Зорькин В | 0.5h | 0.5h |
| 1531 | 2.345.2 | устранить ошибки | 10min | 2026-03-04 09:30 A | 2026-03-04 09:40 A | 1530 | 100% | start no earlier than 2026-03-03 08:00 | Зорькин В | 0.17h | 0.17h |
| 1532 | 2.346 | закреить поликарбанат по периметру | 4h | 2026-03-08 09:00 A | 2026-03-09 13:00 A |  | 100% | start no earlier than 2026-03-08 09:00 | Макаревич А | 4h | 4h |
| 1533 | 2.347 | смазать ручки и шарниры дверей | 1h | 2026-03-08 09:00 A | 2026-03-09 10:00 A |  | 100% | start no earlier than 2026-03-08 09:00 | Макаревич А | 1h | 1h |

| ID | WBS | Task | Duration | Start | Finish | Predecessors | Complete | Constraint | Resources | Work | Actual work |
| --- | --- | --- | --- | --- | --- | --- | --- | --- | --- | --- | --- |
| 1534 | 2.348 | **сделать ровным порог вход в мойку экструдера** | 23.5d | 2026-03-03 09:00 A | 2026-04-03 13:00 A |  | 100% |  |  | 86.25h | 86.25h |
| 1535 | 2.348.1 | Показать Олегу порог | 30min | 2026-03-03 09:00 A | 2026-03-03 09:30 A |  | 100% | start no earlier than 2026-03-03 08:00 | Зорькин В; Олег лукас | 1h | 1h |
| 1536 | 2.348.2 | составить план ремонта | 15min | 2026-03-03 09:00 A | 2026-03-03 09:15 A |  | 100% | start no earlier than 2026-03-03 09:00 | Зорькин В; Некрасов А; Труфанов А | 0.75h | 0.75h |
| 1537 | 2.348.3 | составить заявку на материал | 30min | 2026-03-04 09:00 A | 2026-03-04 09:30 A | 1536 | 100% | start no earlier than 2026-03-04 09:00 | Зорькин В | 0.5h | 0.5h |
| 1538 | 2.348.4 | доставка | 10d | 2026-03-04 09:30 A | 2026-03-18 09:30 A | 1537 | 100% | start no earlier than 2026-03-03 08:00 | Карабанов | 80h | 80h |
| 1539 | 2.348.5 | реализация | 4h | 2026-04-03 09:00 A | 2026-04-03 13:00 A | 1538 | 100% | start no earlier than 2026-04-03 09:00 | Олег | 4h | 4h |
| 1540 | 2.349 | востановить профлист. Проход навески экструдер. Обрезками с 3ц, цвет любой | 5h | 2026-03-08 09:00 A | 2026-03-09 15:00 A |  | 100% | start no earlier than 2026-03-08 09:00 | Макаревич А | 5h | 5h |
| 1541 | 2.350 | установить отбойники в проход и углы проезд навесок. Барть с 5а | 4h | 2026-03-09 09:00 A | 2026-03-09 13:00 A |  | 100% | start no earlier than 2026-03-09 09:00 | Макаревич А | 4h | 4h |
| 1542 | 2.351 | **установить отбойники в углы проезд навесок** | 24.25d | 2026-03-13 09:00 A | 2026-04-16 11:00 A |  | 100% |  |  | 82.17h | 82.17h |
| 1543 | 2.351.1 | заявка 2 отбойника | 10min | 2026-03-13 09:00 A | 2026-03-13 09:10 A |  | 100% | start no earlier than 2026-03-13 09:00 | Зорькин В | 0.17h | 0.17h |
| 1544 | 2.351.2 | доставка | 10d | 2026-03-13 09:10 A | 2026-03-27 09:10 A | 1543 | 100% | start no earlier than 2026-03-12 08:00 | Карабанов | 80h | 80h |
| 1545 | 2.351.3 | монтаж | 2h | 2026-04-16 09:00 A | 2026-04-16 11:00 A | 1544 | 100% | start no earlier than 2026-04-16 09:00 | Бундин В | 2h | 2h |
| 1546 | 2.352 | **наростить ножки на бестроме бункер, вместо деревянной** | 3.38d | 2026-03-05 09:00 A | 2026-03-10 12:00 A |  | 100% |  | Макаревич А | 39h | 39h |
| 1547 | 2.352.1 | **мойка** | 0.38d | 2026-03-05 09:00 A | 2026-03-05 12:00 A |  | 100% |  |  | 6h | 6h |
| 1548 | 2.352.1.1 | ревизия вытяжка принудительная из печи (нерж вентилятор), очистка | 3h | 2026-03-05 09:00 A | 2026-03-05 12:00 A |  | 100% | start no earlier than 2026-03-05 09:00 | Некрасов А; Труфанов А | 6h | 6h |
| 1549 | 2.352.2 | ремонт колесо штабелер/замена подшипник | 3h | 2026-03-10 09:00 A | 2026-03-10 12:00 A |  | 100% | start no earlier than 2026-03-10 09:00 | Тимофеев В; Дедов В | 6h | 6h |
| 1550 | 2.353 | **увеличить освещение в зоне квадропака** | 41.88d | 2026-03-02 09:00 A | 2026-04-28 17:00 A |  | 100% |  |  | 101h | 101h |
| 1551 | 2.353.1 | составить список мматериал для монтажа | 30min | 2026-03-02 09:00 A | 2026-03-02 09:30 A |  | 100% | start no earlier than 2026-03-02 09:00 | Труфанов А; Некрасов А; Зорькин В | 1.5h | 1.5h |
| 1552 | 2.353.2 | заявка светильники | 30min | 2026-03-02 09:30 A | 2026-03-02 10:00 A | 1551 | 100% | start no earlier than 2026-02-27 08:00 | Зорькин В | 0.5h | 0.5h |
| 1553 | 2.353.3 | доставка | 10d | 2026-03-02 10:00 A | 2026-03-16 10:00 A | 1552 | 100% | start no earlier than 2026-02-27 08:00 | Карабанов | 80h | 80h |
| 1554 | 2.353.4 | монтаж светильников зона фасовки 8 светильников, операторы помогут | 15h | 2026-04-25 09:00 A | 2026-04-28 17:00 A |  | 100% | start no earlier than 2026-04-25 09:00 | Бобренок В | 15h | 15h |
| 1555 | 2.353.5 | монтаж светильников зона квадропак 1шт - перевесить светильник | 1h | 2026-04-16 09:00 A | 2026-04-16 10:00 A |  | 100% | start no earlier than 2026-04-16 09:00 | Тимофеев В | 1h | 1h |
| 1556 | 2.353.6 | монтаж | 2h | 2026-03-06 09:00 A | 2026-03-06 11:00 A |  | 100% | start no earlier than 2026-03-06 09:00 | Бобренок В | 2h | 2h |
| 1557 | 2.353.7 | **замена сетка печи на мелкую** | 0.12d | 2026-03-02 09:00 A | 2026-03-02 10:00 A |  | 100% |  |  | 1h | 1h |
| 1558 | 2.353.7.1 | согласовать спецификацию / оплата счет | 1h | 2026-03-02 09:00 A | 2026-03-02 10:00 A |  | 100% | start no earlier than 2026-03-02 09:00 | Домоводов К | 1h | 1h |

| ID | WBS | Task | Duration | Start | Finish | Predecessors | Complete | Remaining | Total slack | Free slack | Constraint | Resources | Work | Actual work |
| --- | --- | --- | --- | --- | --- | --- | --- | --- | --- | --- | --- | --- | --- | --- |
| 1559 | 2.354 | **монтаж дозации жира в экструдер** | 34.25d? | 2026-02-27 09:00 A | 2026-04-16 11:00 |  | 38% | 21.26d? | 247.34d |  |  |  | 25h | 15h |
| 1560 | 2.354.1 | монтаж частотного привода | 2h | 2026-02-27 09:00 A | 2026-02-27 11:00 A |  | 100% |  |  |  | start no earlier than 2026-02-27 09:00 | Тимофеев В | 2h | 2h |
| 1561 | 2.354.2 | монтаж трассы гидравлической | 2h | 2026-03-02 09:00 A | 2026-03-02 11:00 A | 1560 | 100% |  |  |  | start no earlier than 2026-03-02 09:00 | Тимофеев В | 2h | 2h |
| 1562 | 2.354.3 | сборка канистры с фитингом | 1h | 2026-03-02 11:00 A | 2026-03-02 12:00 A | 1561 | 100% |  |  |  | start no earlier than 2026-02-26 08:00 | Тимофеев В | 1h | 1h |
| 1563 | 2.354.4 | калибровка на нужный расход | 1h | 2026-03-03 09:00 A | 2026-03-03 10:00 A |  | 100% |  |  |  | start no earlier than 2026-03-03 09:00 | Зорькин В; Тимофеев В | 2h | 2h |
| 1564 | 2.354.5 | испытание | 1h | 2026-03-04 09:00 A | 2026-03-04 10:00 A |  | 100% |  |  |  | start no earlier than 2026-03-04 09:00 | Зорькин В | 1h | 1h |
| 1565 | 2.354.6 | подключить управление насосом синхронно с запуском ножей экструдера. Проложить кабель, изучить параметары, передать по смене что подключать | 4h | 2026-03-04 09:00 | 2026-03-04 13:00 |  |  |  | 278.09d |  | start no earlier than 2026-03-04 09:00 | Дедов В | 4h |  |
| 1566 | 2.354.7 | подключить кабель/ неастроить параметры, что передаст Дедов | 1h | 2026-03-05 09:00 | 2026-03-05 10:00 |  |  |  | 277.47d |  | start no earlier than 2026-03-05 09:00 | Труфанов А | 1h |  |
| 1567 | 2.354.8 | поставка контрллра | 1d? | 2026-03-11 09:00 | 2026-03-11 18:00 |  |  |  | 272.34d | 25d | start no earlier than 2026-03-11 09:00 |  |  |  |
| 1568 | 2.354.9 | подключить контрллера расходомер | 2h | 2026-04-16 09:00 | 2026-04-16 11:00 | 1567 |  |  | 247.34d |  | start no earlier than 2026-04-16 09:00 | Тимофеев В | 2h |  |
| 1569 | 2.354.10 | Прокинуть интерфейсный кабель от черной коробочки до нового частотника на синем бункере (проложить так чтоб ни где ничего не торчало) | 3h | 2026-03-05 09:00 | 2026-03-05 12:00 |  |  |  | 277.22d |  | start no earlier than 2026-03-05 08:00 | Дедов В | 3h |  |
| 1570 | 2.354.11 | сделать регулировку угла наклона приемная воронка конв в охладитель после жира | 3h | 2026-03-05 09:00 A | 2026-03-05 12:00 A |  | 100% |  |  |  | start no earlier than 2026-03-05 09:00 | Некрасов А; Труфанов А | 6h | 6h |
| 1571 | 2.354.12 | сборка и монтаж полка для дез раствора на охладитель | 1h | 2026-03-02 09:00 A | 2026-03-02 10:00 A |  | 100% |  |  |  | start no earlier than 2026-03-02 09:00 | Тимофеев В | 1h | 1h |
| 1572 | 2.355 | **настройка блокировок отключения котла, если отключена приточка** | 130.25d | 2026-03-03 09:00 A | 2026-09-01 11:00 |  | 7% | 120.93d | 149.34d |  |  |  | 86.17h | 6.17h |
| 1573 | 2.355.1 | внести в схему котла блокировку либо от трм 33 либо от частотника | 4h | 2026-03-03 09:00 A | 2026-03-03 13:00 A |  | 100% |  |  |  | start no earlier than 2026-03-03 09:00 | Дедов В | 4h | 4h |
| 1574 | 2.355.2 | Заявка на реле протока воды | 10min | 2026-03-10 09:00 A | 2026-03-10 09:10 A |  | 100% |  |  |  | start no earlier than 2026-03-10 09:00 | Зорькин В | 0.17h | 0.17h |
| 1575 | 2.355.3 | Доставка | 10d | 2026-03-10 09:10 | 2026-03-24 09:10 | 1574 |  |  | 264.57d |  | start no earlier than 2026-03-02 09:00 | Карабанов | 80h |  |
| 1576 | 2.355.4 | Замена | 2h | 2026-09-01 09:00 A | 2026-09-01 11:00 A | 1575 | 100% |  |  |  | start no earlier than 2026-09-01 09:00 | Дедов В | 2h | 2h |
| 1577 | 2.356 | Запрет работы вентилятора если низкая температура калорифера | 2h | 2026-03-12 09:00 A | 2026-03-12 11:00 A |  | 100% |  |  |  | start no earlier than 2026-03-12 09:00 | Дедов В | 2h | 2h |
| 1578 | 2.357 | **установить на охладитель ролики + скольжение трубы** | 33d? | 2026-09-01 09:00 | 2026-10-05 18:00 |  |  |  | 116.59d |  |  |  | 10h |  |
| 1579 | 2.357.1 | печать кронштейнов | 2h | 2026-09-01 09:00 | 2026-09-01 11:00 |  |  |  | 149.34d |  | start no earlier than 2026-09-01 09:00 | Домоводов К | 2h |  |
| 1580 | 2.357.2 | установить держатели труб | 1d? | 2026-10-05 09:00 | 2026-10-05 18:00 |  |  |  | 116.59d |  | start no earlier than 2026-10-05 09:00 | Тимофеев В | 8h |  |
| 1581 | 2.358 | **установить паровопровод для очистки сетки печи на мойке парогенератором** | 8.75d | 2026-03-02 09:00 A | 2026-03-12 16:00 A |  | 100% |  |  |  |  |  | 18.5h | 18.5h |
| 1582 | 2.358.1 | проверка фитингов | 30min | 2026-03-02 09:00 A | 2026-03-02 09:30 A |  | 100% |  |  |  | start no earlier than 2026-03-02 09:00 | Зорькин В | 0.5h | 0.5h |
| 1583 | 2.358.2 | монтаж | 2h | 2026-03-05 09:00 A | 2026-03-05 11:00 A | 1582 | 100% |  |  |  | start no earlier than 2026-03-05 09:00 | Тимофеев В | 2h | 2h |

| ID | WBS | Task | Type | Duration | Start | Finish | Predecessors | Complete | Total slack | Free slack | Constraint | Resources | Work | Actual work |
| --- | --- | --- | --- | --- | --- | --- | --- | --- | --- | --- | --- | --- | --- | --- |
| 1584 | 2.358.3 | **лоток с транспортера в барабан. Большой** |  | 2.75d | 2026-03-10 09:00 A | 2026-03-12 16:00 A |  | 100% |  |  |  |  | 16h | 16h |
| 1585 | 2.358.3.1 | изготовить из листа лоток. Заготовку 612*965 с пропилами для сгиба по чертежу |  | 4h | 2026-03-10 09:00 A | 2026-03-10 13:00 A |  | 100% |  |  | start no earlier than 2026-03-10 09:00 | Макаревич А | 4h | 4h |
| 1586 | 2.358.3.2 | подготовить раму крепежа |  | 4h | 2026-03-12 09:00 A | 2026-03-12 13:00 A | 1585 | 100% |  |  | start no earlier than 2026-03-12 09:00 | Некрасов А; Труфанов А | 8h | 8h |
| 1587 | 2.358.3.3 | монтаж |  | 2h | 2026-03-12 14:00 A | 2026-03-12 16:00 A | 1586 | 100% |  |  | start no earlier than 2026-02-27 08:00 | Некрасов А; Труфанов А | 4h | 4h |
| 1588 | 2.359 | **установка ворот шлюз в проходе вент камеры** |  | 119d? | 2026-02-24 09:00 A | 2026-08-09 13:00 A |  | 100% |  |  |  |  | 163.5h | 163.5h |
| 1589 | 2.359.1 | изготовить и установить шпингалеты |  | 4h | 2026-02-27 09:00 A | 2026-02-27 13:00 A |  | 100% |  |  | start no earlier than 2026-02-27 09:00 | Некрасов А; Бобренок В | 8h | 8h |
| 1590 | 2.359.2 | установка петель, транспортировка, монтаж |  | 1d? | 2026-02-24 09:00 A | 2026-02-24 18:00 A |  | 100% |  |  | start no earlier than 2026-02-24 09:00 | Труфанов А; Некрасов А | 16h | 16h |
| 1591 | 2.359.3 | установить полосу притвора |  | 3h | 2026-02-27 09:00 A | 2026-02-27 12:00 A |  | 100% |  |  | start no earlier than 2026-02-28 09:00 | Бобренок В | 3h | 3h |
| 1592 | 2.359.4 | установить силиконовые уплотнители на пол |  | 2h | 2026-02-26 09:00 A | 2026-02-26 11:00 A |  | 100% |  |  | start no earlier than 2026-02-26 08:00 | Некрасов А | 2h | 2h |
| 1593 | 2.359.5 | заявка доводчики, шпингалеты |  | 30min | 2026-03-02 09:00 A | 2026-03-02 09:30 A |  | 100% |  |  | start no earlier than 2026-03-02 09:00 | Зорькин В | 0.5h | 0.5h |
| 1594 | 2.359.6 | доставка |  | 10d | 2026-03-02 09:30 A | 2026-03-16 09:30 A | 1593 | 100% |  |  | start no earlier than 2026-02-27 08:00 | Карабанов | 80h | 80h |
| 1595 | 2.359.7 | монтаж шпингалетов |  | 2h | 2026-03-25 09:00 A | 2026-03-25 11:00 A | 1594 | 100% |  |  | start no earlier than 2026-03-25 09:00 | Бобренок В | 2h | 2h |
| 1596 | 2.359.8 | **установить концевики блокировки открывания роль ворот, если не закрыты шлюз** |  | 109d | 2026-03-10 09:00 A | 2026-08-09 13:00 A |  | 100% |  |  |  |  | 52h | 52h |
| 1597 | 2.359.8.1 | **установить доводчики на ворота в зоне навесок** |  | 0.25d | 2026-06-14 09:00 A | 2026-06-15 11:00 A |  | 100% |  |  |  |  | 2h | 2h |
| 1598 | 2.359.8.1.1 | пробурить для задвижек ворот в полу отверстия -фиксация для проезда штабелера |  | 2h | 2026-06-14 09:00 A | 2026-06-15 11:00 A |  | 100% |  |  | start no earlier than 2026-06-14 09:00 | Бобренок В | 2h | 2h |
| 1599 | 2.359.8.2 | составить список материалов |  | 30min | 2026-03-10 09:00 A | 2026-03-10 09:30 A |  | 100% |  |  | start no earlier than 2026-03-10 09:00 | Дедов В | 0.5h | 0.5h |
| 1600 | 2.359.8.3 | заявка |  | 30min | 2026-03-10 09:30 A | 2026-03-10 10:00 A | 1599 | 100% |  |  | start no earlier than 2026-03-03 09:00 | Зорькин В | 0.5h | 0.5h |
| 1601 | 2.359.8.4 | доставка |  | 5d | 2026-03-10 10:00 A | 2026-03-17 10:00 A | 1600 | 100% |  |  | start no earlier than 2026-02-27 08:00 | Карабанов | 40h | 40h |
| 1602 | 2.359.8.5 | монтаж датчиков на двери / доводчиков. | manual | 4h | 2026-08-09 09:00 A | 2026-08-09 13:00 A | 1601 | 100% |  |  | start no earlier than 2026-08-09 09:00 | Бундин В | 4h | 4h |
| 1603 | 2.359.8.6 | монтаж кабеля от датчиков до блока рольворот, не подключать | manual | 4h | 2026-08-09 09:00 A | 2026-08-09 13:00 A | 1602 | 100% |  |  | start no earlier than 2026-08-09 09:00 | Бундин В | 4h | 4h |
| 1604 | 2.359.8.7 | установить концевики на ворота - установить закладные под них | manual | 1h | 2026-08-08 09:00 A | 2026-08-08 10:00 A |  | 100% |  |  | start no earlier than 2026-08-08 09:00 | Бундин В | 1h | 1h |
| 1605 | 2.360 | **схема блокировки роль ворот при открытым шлюзе + авт закрытие + датчик препятствия** |  | 24.5d | 2026-11-02 09:00 | 2026-11-30 13:00 |  |  | 72.09d |  |  |  | 16h |  |
| 1606 | 2.360.1 | Установка электромагнита на двери |  | 4h | 2026-11-24 09:00 | 2026-11-24 13:00 |  |  | 76.09d |  | start no earlier than 2026-11-24 09:00 | Дедов В | 4h |  |
| 1607 | 2.360.2 | разработка схемы |  | 4h | 2026-11-02 09:00 | 2026-11-02 13:00 |  |  | 94.59d | 22.5d | start no earlier than 2026-11-02 09:00 | Домоводов К; Дедов В | 8h |  |
| 1608 | 2.360.3 | монтаж |  | 4h | 2026-11-30 09:00 | 2026-11-30 13:00 | 1607FS+1d |  | 72.09d |  | start no earlier than 2026-11-30 09:00 | Труфанов А | 4h |  |
| 1609 | 2.361 | ремонт нижних сеток печи просева гранулы |  | 4h | 2025-01-23 09:00 A | 2025-01-23 13:00 A |  | 100% |  |  | start no earlier than 2025-01-23 09:00 | Черепанов И | 4h | 4h |

| ID | WBS | Task | Type | Duration | Start | Finish | Predecessors | Complete | Remaining | Total slack | Free slack | Constraint | Resources | Work | Actual work |
| --- | --- | --- | --- | --- | --- | --- | --- | --- | --- | --- | --- | --- | --- | --- | --- |
| 1610 | 2.362 | **замена реле безопасности бойлер ж** |  | 91.12d | 2024-10-16 09:00 A | 2025-02-20 10:00 A |  | 100% |  |  |  |  |  | 82h | 82h |
| 1611 | 2.362.1 | заЯВка |  | 1h | 2024-10-16 09:00 A | 2024-10-16 10:00 A |  | 100% |  |  |  | start no earlier than 2024-10-16 09:00 | Зорькин В | 1h | 1h |
| 1612 | 2.362.2 | доставка |  | 10d | 2024-10-16 10:00 A | 2024-10-30 10:00 A | 1611 | 100% |  |  |  | start no earlier than 2024-10-16 09:00 | Мультан | 80h | 80h |
| 1613 | 2.362.3 | замена |  | 1h | 2025-02-20 09:00 A | 2025-02-20 10:00 A | 1612 | 100% |  |  |  | start no earlier than 2025-02-20 09:00 | Некрасов А | 1h | 1h |
| 1614 | 2.363 | **установить пульты на регулировку шибиров вентиляции** |  | 49d? | 2026-08-31 09:00 | 2026-10-23 18:00 |  |  |  | 101.59d |  |  |  | 90h |  |
| 1615 | 2.363.1 | заявка на блок питания, шкаф управления, кабель |  | 2h | 2026-08-31 09:00 | 2026-08-31 11:00 |  |  |  | 139.34d | 0d | start no earlier than 2026-08-31 09:00 | Домоводов К | 2h |  |
| 1616 | 2.363.2 | доставка |  | 10d | 2026-08-31 11:00 | 2026-09-11 11:00 | 1615 |  |  | 139.34d | 37.75d | start no earlier than 2024-05-08 08:00 | Мультан | 80h |  |
| 1617 | 2.363.3 | монтаж |  | 1d? | 2026-10-23 09:00 | 2026-10-23 18:00 | 1616 |  |  | 101.59d |  | start no earlier than 2026-10-23 09:00 | Некрасов А | 8h |  |
| 1618 | 2.364 | заменить местами 2 зеркала маленький и большой бункер |  | 4h | 2024-10-03 09:00 | 2024-10-03 13:00 |  |  |  | 647.09d |  | start no earlier than 2024-10-03 09:00 | Черепанов И | 4h |  |
| 1619 | 2.365 | установить провод заземления на дверь шкафа упр сушки |  | 1h | 2024-01-08 09:00 | 2024-01-08 10:00 |  |  |  | 840.47d |  | start no earlier than 2024-01-06 09:00 | Тимофеев В | 1h |  |
| 1620 | 2.366 | **Палетообмотчик** |  | 50.06d | 2026-05-19 09:00 A | 2026-07-28 09:30 A |  | 100% |  |  |  |  |  | 80.67h | 80.67h |
| 1621 | 2.366.1 | заказать цепь |  | 10min | 2026-05-19 09:00 A | 2026-05-19 09:10 A |  | 100% |  |  |  | start no earlier than 2026-05-19 08:00 | Зорькин В | 0.17h | 0.17h |
| 1622 | 2.366.2 | доставка |  | 10d | 2026-05-29 09:00 A | 2026-06-11 18:00 A |  | 100% |  |  |  | start no earlier than 2026-05-29 09:00 | Карабанов | 80h | 80h |
| 1623 | 2.366.3 | замена цепи на вход в зону палетирования на складе взять 10М оцинкованная 3мм | manual | 30min | 2026-07-28 09:00 A | 2026-07-28 09:30 A |  | 100% |  |  |  | start no earlier than 2026-07-28 09:00 | Макаревич А | 0.5h | 0.5h |
| 1624 | 2.367 | Изготовить полочки из нержавейки по образцу на 18 баночек еще 2 шт |  | 3h | 2026-07-24 09:00 A | 2026-07-24 12:00 A |  | 100% |  |  |  | start no earlier than 2026-07-24 09:00 | Бундин В | 3h | 3h |
| 1625 | 2.368 | **отмена** |  | 103.31d? | 2026-08-11 09:00 A | 2026-12-15 11:30 |  | 5% | 98.62d? | 61.28d |  |  |  | 11h | 0.5h |
| 1626 | 2.368.1 | **найти места утечки тепла под потолком- перемерзает труба подачи воды в 3 цех** |  | 103.31d? | 2026-08-11 09:00 A | 2026-12-15 11:30 |  | 5% | 98.62d? | 61.28d |  |  |  | 11h | 0.5h |
| 1627 | 2.368.1.1 | вспомнить из-за чего холод под потолком? Какие нужны мероприятия?- никто не помнит |  | 15min | 2026-08-11 09:00 A | 2026-08-11 09:15 A |  | 100% |  |  |  | start no earlier than 2026-08-11 09:00 | Некрасов А | 0.25h | 0.25h |
| 1628 | 2.368.1.2 | подать олегу заявку |  | 15min | 2026-08-31 09:00 A | 2026-08-31 09:15 A |  | 100% |  |  |  | start no earlier than 2026-08-31 09:00 | Зорькин В | 0.25h | 0.25h |
| 1629 | 2.368.1.3 | проверка пирометром / тепловизором |  | 2h | 2026-11-30 09:00 | 2026-11-30 11:00 |  |  |  | 61.28d | 0d | start no earlier than 2026-11-30 09:00 | Некрасов А | 2h |  |
| 1630 | 2.368.1.4 | заявка (подумать материал) |  | 15min | 2026-11-30 11:00 | 2026-11-30 11:15 | 1629 |  |  | 61.28d | 0d | start no earlier than 2026-08-13 09:00 | Зорькин В | 0.25h |  |
| 1631 | 2.368.1.5 | доставка- контроль |  | 15min | 2026-12-14 11:15 | 2026-12-14 11:30 | 1630FS+10d |  |  | 61.28d | 0d | start no earlier than 2026-08-12 09:00 | Зорькин В | 0.25h |  |
| 1632 | 2.368.1.6 | монтаж |  | 1d? | 2026-12-14 11:30 | 2026-12-15 11:30 | 1631 |  |  | 61.28d |  | start no earlier than 2026-08-11 09:00 | Тимофеев В | 8h |  |
| 1633 | 2.369 | **вентиляция** |  | 11.25d | 2026-08-13 09:00 A | 2026-08-28 11:00 A |  | 100% |  |  |  |  |  | 4h | 4h |
| 1634 | 2.369.1 | Монтаж частотников на ШУ | manual | 2h | 2026-08-13 09:00 A | 2026-08-13 11:00 A |  | 100% |  |  |  | start no earlier than 2026-08-13 09:00 | Труфанов А | 2h | 2h |
| 1635 | 2.369.2 | В ШУ вырезать окна для частотников в двери, закрыть оргстеклом. Желательно на шарниры. |  | 2h | 2026-08-28 09:00 A | 2026-08-28 11:00 A |  | 100% |  |  |  | start no earlier than 2026-08-31 09:00 | Бундин В | 2h | 2h |

| ID | WBS | Task | Type | Duration | Start | Finish | Predecessors | Complete | Remaining | Total slack | Constraint | Resources | Work | Actual work |
| --- | --- | --- | --- | --- | --- | --- | --- | --- | --- | --- | --- | --- | --- | --- |
| 1636 | 2.370 | **Синий бункер** |  | 0.25d | 2026-07-30 09:00 A | 2026-07-30 11:00 A |  | 100% |  |  |  |  | 4h | 4h |
| 1637 | 2.370.1 | Ремонт синего бункера в зоне вибратора |  | 2h | 2026-07-30 09:00 A | 2026-07-30 11:00 A |  | 100% |  |  | start no earlier than 2026-07-30 09:00 | Труфанов А; Бундин В | 4h | 4h |
| 1638 | 2.371 | **Охладитель** |  | 0.38d | 2026-07-30 09:00 A | 2026-07-30 12:00 A |  | 100% |  |  |  |  | 3h | 3h |
| 1639 | 2.371.1 | Установка защиты сетки на полозья/направляющие, спросить Зорькина |  | 3h | 2026-07-30 09:00 A | 2026-07-30 12:00 A |  | 100% |  |  | start no earlier than 2026-07-30 09:00 | Тимофеев В | 3h | 3h |
| 1640 | 2.372 | Осмотреть/устранить течь раковины возле туалета |  | 1h | 2026-07-29 08:00 A | 2026-07-29 10:00 A |  | 100% |  |  | start no earlier than 2026-07-29 08:00 | Дедов В | 1h | 1h |
| 1641 | 3 | **3 цех** |  | 338.28d? | 2025-09-01 09:00 A | 2026-11-30 11:15 |  | 83% | 57.38d? | 72.31d |  |  | 1441h | 1211.5h |
| 1642 | 3.1 | поднять силиконовые резинки так, что бы они не касались сетки охладителя |  | 2h | 2026-11-24 09:00 | 2026-11-24 11:00 |  |  |  | 76.34d | start no earlier than 2026-11-24 09:00 | Тимофеев В | 2h |  |
| 1643 | 3.2 | Сделать отверстия по краям охладителя в месте ссыпания гранулы, чтоб то что шло с цепей, падало мимо полибокса |  | 2h | 2026-11-24 09:00 | 2026-11-24 11:00 |  |  |  | 76.34d | start no earlier than 2026-11-24 09:00 | Тимофеев В | 2h |  |
| 1644 | 3.3 | Протираем цепи и сетку на охладителе повторно, так же прогоняем под цепями |  | 6h | 2026-11-23 09:00 A | 2026-11-23 16:00 A |  | 100% |  |  | start no earlier than 2026-11-23 08:00 | Бундин В | 6h | 6h |
| 1645 | 3.4 | Не работает шторка на охладителе, исправить |  | 1h | 2026-11-20 09:00 A | 2026-11-20 10:00 A |  | 100% |  |  | start no earlier than 2026-11-20 08:00 | Бундин В | 1h | 1h |
| 1646 | 3.5 | Активное дежурство | manual | 1d | 2026-11-22 09:00 A | 2026-11-22 18:00 A | 1648 | 100% |  |  |  | Дедов В | 8h | 8h |
| 1647 | 3.6 | Активное дежурство | manual | 1d | 2026-11-22 09:00 A | 2026-11-22 18:00 A |  | 100% |  |  | start no earlier than 2026-11-22 09:00 | Николаев | 8h | 8h |
| 1648 | 3.7 | Активное дежурство | manual | 1d? | 2026-11-21 09:00 | 2026-11-21 18:00 | 1649 |  |  |  |  | Тимофеев В | 8h |  |
| 1649 | 3.8 | Активное дежурство |  | 1d? | 2026-11-20 09:00 A | 2026-11-20 18:00 A |  | 100% |  |  | start no earlier than 2026-11-20 08:00 | Бундин В | 8h | 8h |
| 1650 | 3.9 | Усиление рамы смесителей, делаем крест со стороны которую качает (пока готовим, на остановке делаем на выключенном смесителе) |  | 4h | 2026-11-24 09:00 | 2026-11-24 13:00 |  |  |  | 76.09d | start no earlier than 2026-11-24 09:00 | Тимофеев В | 4h |  |
| 1651 | 3.10 | Чистка форсунок в прекондиционере (на остановке) |  | 2h | 2026-11-20 09:00 A | 2026-11-20 11:00 A |  | 100% |  |  | start no earlier than 2026-11-20 08:00 | Бундин В | 2h | 2h |
| 1652 | 3.11 | Подключить кабель от тепловой пушки, которая стоит в гидрализатной 1 цеха и саму пушку в тамбуре, где будет вывоз готовой продукции, там ворота стоят. (Если Валентин не подключит, всю информацию получить у него) |  | 1h | 2026-11-19 09:00 A | 2026-11-19 10:00 A |  | 100% |  |  | start no earlier than 2026-11-19 08:00 | Дедов В | 1h | 1h |
| 1653 | 3.12 | Сделать отвод воздуха, при засыпке муки летит в лицо все |  | 1h | 2026-11-19 09:00 A | 2026-11-19 10:00 A |  | 100% |  |  | start no earlier than 2026-11-19 09:00 | Труфанов А; Некрасов А | 2h | 2h |
| 1654 | 3.13 | Составить список что нужно закупить для подключения батареи между охладителем и фасовкой |  | 1h | 2026-11-18 09:00 | 2026-11-18 10:00 |  |  |  | 80.47d | start no earlier than 2026-11-18 08:00 | Труфанов А; Некрасов А | 2h |  |
| 1655 | 3.14 | Оперативные работы по 3 цеху |  | 1d? | 2026-11-18 09:00 A | 2026-11-18 18:00 A |  | 100% |  |  | start no earlier than 2026-11-18 09:00 | Тимофеев В | 8h | 8h |
| 1656 | 3.15 | Установить частотник на вращение барабанов 3 цех |  | 1h | 2026-11-17 09:00 A | 2026-11-17 10:00 A |  | 100% |  |  | start no earlier than 2026-11-17 09:00 | Дедов В | 1h | 1h |
| 1657 | 3.16 | Тест оборудование перед запуском |  | 2h | 2026-11-18 09:00 A | 2026-11-18 11:00 A |  | 100% |  |  | start no earlier than 2026-11-18 09:00 | Тимофеев В | 2h | 2h |
| 1658 | 3.17 | Тест печки с кормом, на поток гранулы, попадает ли к цепям или нет, как работает модернизация. |  | 2h | 2026-11-16 09:00 A | 2026-11-16 11:00 A |  | 100% |  |  | start no earlier than 2026-11-16 08:00 | Макаревич А; Николаев | 4h | 4h |
| 1659 | 3.18 | Установить на место ссыпную воронку после печи, сделать упоры? |  | 1h | 2026-11-16 09:00 A | 2026-11-16 10:00 A |  | 100% |  |  | start no earlier than 2026-11-16 08:00 | Труфанов А; Некрасов А | 2h | 2h |
| 1660 | 3.19 | доработаь рукоятку переключения брака после ножейчто бы фиксировалась в закрытом положении. Времянку убрать |  | 1h | 2026-11-14 09:00 A | 2026-11-14 10:00 A |  | 100% |  |  | start no earlier than 2026-11-14 09:00 | Макаревич А | 1h | 1h |
| 1661 | 3.20 | удалить смазку с цепи сетки печи. Спирт получить на складе/развести по инструкции. Все этажи. Уголок попробывать закрепить тряпку к цепи. |  | 6h | 2026-11-14 09:00 A | 2026-11-14 16:00 A |  | 100% |  |  | start no earlier than 2026-11-14 09:00 | Бундин В | 6h | 6h |
| 1662 | 3.21 | смазка цепей печи пищевой смазкой. Не борщить. |  | 6h | 2026-11-15 09:00 A | 2026-11-15 16:00 A |  | 100% |  |  | start no earlier than 2026-11-15 09:00 | Бундин В | 6h | 6h |
| 1663 | 3.22 | доработать ловушки гранулы между этажами, что бы не разлеталась - образец от Тимофеева + удлинить 20-30см по ходу сетки. Все этажи |  | 8h | 2026-11-16 09:00 A | 2026-11-16 18:00 A |  | 100% |  |  | start no earlier than 2026-11-16 09:00 | Николаев; Макаревич А | 16h | 16h |
| 1664 | 3.23 | вырезть окна в лотке после печи для сброса в ведро/мешок гранулы 10см от цепи привода сетки. Крепление для ведра/мешка |  | 4h | 2026-11-15 09:00 A | 2026-11-15 13:00 A |  | 100% |  |  | start no earlier than 2026-11-15 09:00 | Макаревич А; Николаев | 8h | 8h |
| 1665 | 3.24 | монтаж светильник над раковина жиры |  | 2h | 2026-11-13 09:00 A | 2026-11-13 11:00 A |  | 100% |  |  | start no earlier than 2026-11-13 08:00 | Бундин В | 2h | 2h |
| 1666 | 3.25 | установить розетку для весов гидролизата |  | 1h | 2026-11-18 09:00 | 2026-11-18 10:00 |  |  |  | 80.47d | start no earlier than 2026-11-18 09:00 | Дедов В | 1h |  |
| 1667 | 3.26 | (сначало поменять кран на полнопроходной вместо золотникового) полку для канистры гидролизата нарастить на 20 см, проверить что бы вошли весы |  | 1h | 2026-11-19 09:00 A | 2026-11-19 10:00 A |  | 100% |  |  | start no earlier than 2026-11-19 09:00 | Дедов В | 1h | 1h |

| ID | WBS | Task | Type | Duration | Start | Finish | Predecessors | Complete | Remaining | Total slack | Free slack | Constraint | Resources | Work | Actual work |
| --- | --- | --- | --- | --- | --- | --- | --- | --- | --- | --- | --- | --- | --- | --- | --- |
| 1668 | 3.27 | **Установить частотный преобразователь на барабан этра** |  | 10.28d | 2026-11-16 09:00 | 2026-11-30 11:15 |  |  |  | 72.31d |  |  |  | 82.25h |  |
| 1669 | 3.27.1 | заявка частотники |  | 15min | 2026-11-16 09:00 | 2026-11-16 09:15 |  |  |  | 72.31d | 0d | start no earlier than 2026-11-16 09:00 | Зорькин В | 0.25h |  |
| 1670 | 3.27.2 | доставка конроль |  | 10d | 2026-11-16 09:15 | 2026-11-30 09:15 | 1669 |  |  | 72.31d | 0d | start no earlier than 2026-11-13 08:00 | Зорькин В | 80h |  |
| 1671 | 3.27.3 | монтаж |  | 2h | 2026-11-30 09:15 | 2026-11-30 11:15 | 1670 |  |  | 72.31d |  | start no earlier than 2026-11-13 08:00 | Тимофеев В | 2h |  |
| 1672 | 3.28 | Найти кабель от щитка вентиляции 2 этаж бытовой комплекс (позвонить косте) распред щиток 1 этаж 3 колонна справа |  | 1h | 2026-11-12 09:00 A | 2026-11-12 10:00 A |  | 100% |  |  |  | start no earlier than 2026-11-12 08:00 | Бундин В | 1h | 1h |
| 1673 | 3.29 | Герметизация слива в душах (герметиком санитарным) |  | 2h | 2026-11-15 09:00 | 2026-11-15 11:00 |  |  |  | 83.34d |  | start no earlier than 2026-11-15 09:00 | Макаревич А; Николаев | 4h |  |
| 1674 | 3.30 | **Врезать вентилятор в курилку и подключить** |  | 10.56d | 2026-11-13 09:00 A | 2026-11-25 14:30 |  |  | 10.52d | 75.03d |  |  |  | 61.25h | 0.25h |
| 1675 | 3.30.1 | заявка вентилятор |  | 15min | 2026-11-13 09:00 A | 2026-11-13 09:15 A |  | 100% |  |  |  | start no earlier than 2026-11-13 08:00 | Домоводов К | 0.25h | 0.25h |
| 1676 | 3.30.2 | заявка обратный клапан/тройник/дифузоры на вентилятор ВК200Б |  | 30min | 2026-11-16 09:00 | 2026-11-16 09:30 |  |  |  | 75.03d | 0d | start no earlier than 2026-11-16 09:00 | Зорькин В; Труфанов А | 1h |  |
| 1677 | 3.30.3 | доставка контроль |  | 7d | 2026-11-16 09:30 | 2026-11-25 09:30 | 1675, 1676 |  |  | 75.03d | 0d | start no earlier than 2026-11-13 08:00 | Зорькин В | 56h |  |
| 1678 | 3.30.4 | монтаж |  | 4h | 2026-11-25 09:30 | 2026-11-25 14:30 | 1677 |  |  | 75.03d |  | start no earlier than 2026-11-13 08:00 | Тимофеев В | 4h |  |
| 1679 | 3.31 | Срезать перемычки на загрузке жиров, мешают паллетам (на остановке) |  | 1h | 2026-11-20 09:00 A | 2026-11-20 10:00 A |  | 100% |  |  |  | start no earlier than 2026-11-20 09:00 | Бундин В | 1h | 1h |
| 1680 | 3.32 | Посмотреть работу нотиса возле стены, который долго запускался, сыпит без остановки, не срабатывает по весу (буду звонить производителям потом если не справимся сами) |  | 2h | 2026-11-14 09:00 A | 2026-11-14 11:00 A |  | 100% |  |  |  | start no earlier than 2026-11-14 09:00 | Макаревич А; Николаев | 4h | 4h |
| 1681 | 3.33 | Доработать конвейер на нотисах, много сыпит вниз в щели |  | 4h | 2026-11-15 09:00 A | 2026-11-15 13:00 A |  | 100% |  |  |  | start no earlier than 2026-11-15 09:00 | Макаревич А; Николаев | 8h | 8h |
| 1682 | 3.34 | Сделать свет на выходе из охладителя, над полибоксом |  | 2h | 2026-11-13 09:00 A | 2026-11-13 11:00 A |  | 100% |  |  |  | start no earlier than 2026-11-13 09:00 | Бундин В | 2h | 2h |
| 1683 | 3.35 | Сделать доп свет на экструдере, повешать на козырек центральный, между печкой и прекондером, повесить на край ближе к стене |  | 4h | 2026-11-14 09:00 A | 2026-11-14 13:00 A |  | 100% |  |  |  | start no earlier than 2026-11-14 09:00 | Макаревич А; Николаев | 8h | 8h |
| 1684 | 3.36 | Ремонт насоса гидролизата, выяснить причину отсутствия вращения шнека/восстановить. Вслучае отсутствия возможности восстановить, получить на складе и установить насос НШГ, подключить его к канистре |  | 4h | 2026-11-11 09:00 A | 2026-11-11 13:00 A |  | 100% |  |  |  | start no earlier than 2026-11-11 08:00 | Дедов В | 4h | 4h |
| 1685 | 3.37 | **Освещение дражжировки** |  | 0.38d | 2026-11-11 09:00 A | 2026-11-11 12:00 A |  | 100% |  |  |  |  |  | 4h | 4h |
| 1686 | 3.37.1 | Повесить светильники на зонтики, взять любые длинные |  | 3h | 2026-11-11 09:00 A | 2026-11-11 12:00 A |  | 100% |  |  |  | start no earlier than 2026-11-11 08:00 | Дедов В | 3h | 3h |
| 1687 | 3.37.2 | Повесить светильник со стороны входа в барабан (не видно, как льется жир) |  | 1h | 2026-11-11 09:00 A | 2026-11-11 10:00 A |  | 100% |  |  |  | start no earlier than 2026-11-11 08:00 | Бундин В | 1h | 1h |
| 1688 | 3.38 | Поставить продувку на парогенераторе каждые 2ч интервал продувки 2 секунды. |  | 30min | 2026-11-10 09:00 A | 2026-11-10 09:30 A |  | 100% |  |  |  | start no earlier than 2026-11-10 08:00 | Дедов В | 0.5h | 0.5h |
| 1689 | 3.39 | Изготовить площадку для засыпки сухого гидролизата, за основу взять раму у 5 цеха |  | 4h | 2026-11-11 09:00 | 2026-11-11 13:00 |  |  |  | 87.09d |  | start no earlier than 2026-11-11 09:00 | Труфанов А; Некрасов А | 8h |  |
| 1690 | 3.40 | Поставить 2 светильника в туалеты 2 этаж |  | 1h | 2026-11-13 09:00 A | 2026-11-13 10:00 A |  | 100% |  |  |  | start no earlier than 2026-11-13 09:00 | Бундин В | 1h | 1h |
| 1691 | 3.41 | Сделать колесики на площадку для чистки прикондера |  | 2h | 2026-11-11 09:00 A | 2026-11-11 11:00 A |  | 100% |  |  |  | start no earlier than 2026-11-11 09:00 | Труфанов А; Некрасов А | 4h | 4h |
| 1692 | 3.42 | Поставить запайщики, подключить педаль, по местам, проверить работоспособность |  | 1h | 2026-11-10 09:00 A | 2026-11-10 10:00 A |  | 100% |  |  |  | start no earlier than 2026-11-10 08:00 | Дедов В | 1h | 1h |
| 1693 | 3.43 | Проверить нотисы, восстановить разъемы, восстановить снабжение сжатого воздуха |  | 1h | 2026-11-10 09:00 A | 2026-11-10 10:00 A |  | 100% |  |  |  | start no earlier than 2026-11-10 08:00 | Дедов В | 1h | 1h |
| 1694 | 3.44 | отключить кабель нории, убрать с пола / консервация |  | 1h | 2026-11-10 09:00 A | 2026-11-10 10:00 A |  | 100% |  |  |  | start no earlier than 2026-11-10 09:00 | Бундин В | 1h | 1h |
| 1695 | 3.45 | перемещение нории |  | 1h | 2026-11-10 09:00 A | 2026-11-10 10:00 A |  | 100% |  |  |  | start no earlier than 2026-11-10 09:00 | Некрасов А; Тимофеев В; Труфанов А | 3h | 3h |
| 1696 | 3.46 | закрыть 2 щели из 3х на шнеке сухой гидролизат |  | 1h | 2026-11-10 09:00 A | 2026-11-10 10:00 A |  | 100% |  |  |  | start no earlier than 2026-11-10 09:00 | Тимофеев В | 1h | 1h |
| 1697 | 3.47 | уборка железо на пандусе. Весь мсор / зип с цеха. Перемещение по складам |  | 2h | 2026-11-10 09:00 A | 2026-11-10 11:00 A |  | 100% |  |  |  | start no earlier than 2026-11-10 09:00 | Некрасов А; Труфанов А | 4h | 4h |
| 1698 | 3.48 | Собрать кухонный гарнитур | manual | 4h | 2026-11-08 09:00 A | 2026-11-08 13:00 A |  | 100% |  |  |  | start no earlier than 2026-11-08 09:00 | Макаревич А; Николаев | 8h | 8h |
| 1699 | 3.49 | монтаж раковина покупка за нал всесь комплект с курьером |  | 5h | 2026-11-09 09:00 A | 2026-11-09 15:00 A |  | 100% |  |  |  | start no earlier than 2026-11-09 08:00 | Тимофеев В | 5h | 5h |
| 1700 | 3.50 | переложить шланг слива давления масла, что бы был хороший поток (Дедов обнаружил плохой слив) |  | 2h | 2026-11-09 09:00 A | 2026-11-09 11:00 A |  | 100% |  |  |  | start no earlier than 2026-11-09 08:00 | Макаревич А | 2h | 2h |

| ID | WBS | Task | Type | Duration | Start | Finish | Complete | Remaining | Total slack | Constraint | Resources | Work | Actual work |
| --- | --- | --- | --- | --- | --- | --- | --- | --- | --- | --- | --- | --- | --- |
| 1701 | 3.51 | **Маслонасосная станция** |  | 1.25d | 2026-11-09 09:00 A | 2026-11-10 11:00 A | 100% |  |  |  |  | 8h | 8h |
| 1702 | 3.51.1 | Тест маслонасосной станции с открытой крышкой редуктора . Доделать схему, решение о гистерезисе на реле времени | manual | 4h | 2026-11-09 09:00 A | 2026-11-09 13:00 A | 100% |  |  | start no earlier than 2026-11-09 09:00 | Дедов В | 4h | 4h |
| 1703 | 3.51.2 | Поменять геркон на маслонасосной станции и запускать контактор через промежуточное реле (от катушки пускателя геркон сгорел) |  | 2h | 2026-11-10 09:00 A | 2026-11-10 11:00 A | 100% |  |  | start no earlier than 2026-11-10 09:00 | Дедов В | 2h | 2h |
| 1704 | 3.51.3 | Разработка и установка схемы сигнализации маслонасосной станции экструдера |  | 2h | 2026-11-10 09:00 A | 2026-11-10 11:00 A | 100% |  |  | start no earlier than 2026-11-10 09:00 | Дедов В | 2h | 2h |
| 1705 | 3.52 | Тест печей (на просадку температур) 3 и 4 зона, сначало нагреть, потом отключить первые контуры постоянного нагрева | manual | 2h | 2026-11-08 09:00 A | 2026-11-08 11:00 A | 100% |  |  | start no earlier than 2026-11-08 09:00 | Тимофеев В; Дедов В | 4h | 4h |
| 1706 | 3.53 | Пусконаладка подогрева приточной вентиляции |  | 4h | 2026-11-06 09:00 A | 2026-11-06 13:00 A | 100% |  |  | start no earlier than 2026-11-06 09:00 | Труфанов А; Некрасов А | 8h | 8h |
| 1707 | 3.54 | устанговить датчик температуры от котла ZOTA. Тест |  | 2h | 2026-11-09 09:00 A | 2026-11-09 11:00 A | 100% |  |  | start no earlier than 2026-11-09 08:00 | Труфанов А | 2h | 2h |
| 1708 | 3.55 | Отвод пара трубой ближе к всасывающему отверстию зонтика на прекондиционере | manual | 2h | 2026-11-09 09:00 A | 2026-11-09 11:00 A | 100% |  |  | start no earlier than 2026-11-09 09:00 | Некрасов А; Труфанов А | 4h | 4h |
| 1709 | 3.56 | Наклеить надписи на шкафу управления смесителями |  | 1h | 2026-11-10 09:00 A | 2026-11-10 10:00 A | 100% |  |  | start no earlier than 2026-11-10 09:00 | Зорькин В; Тимофеев В | 2h | 2h |
| 1710 | 3.57 | Тест парогенератора (слить воду с бачка, зафиксировать уровень в нем, погонять несколько часов, проверить бачок, если вода увеличилась, скорее всего вырубался) | manual | 3h | 2026-11-08 09:00 A | 2026-11-08 12:00 A | 100% |  |  | start no earlier than 2026-11-08 09:00 | Дедов В | 3h | 3h |
| 1711 | 3.58 | **парогенератор скидывает давление до 0 на продувке** |  | 0.25d | 2026-11-09 09:00 A | 2026-11-09 11:00 | 92% | 0.02d | 89.34d |  |  | 5.25h | 5h |
| 1712 | 3.58.1 | настройка продувки парогенератора что бы не сдувался до 0 |  | 2h | 2026-11-09 09:00 A | 2026-11-09 11:00 A | 100% |  |  | start no earlier than 2026-11-09 08:00 | Дедов В; Зорькин В | 4h | 4h |
| 1713 | 3.58.2 | запрос программы |  | 15min | 2026-11-09 09:00 | 2026-11-09 09:15 |  |  | 89.56d | start no earlier than 2026-11-09 08:00 | Зорькин В | 0.25h |  |
| 1714 | 3.58.3 | тест работы ПГ с откл краном сброса давления / продувки |  | 1h | 2026-11-09 09:00 A | 2026-11-09 10:00 A | 100% |  |  | start no earlier than 2026-11-10 09:00 | Дедов В | 1h | 1h |
| 1715 | 3.59 | Ревизия редуктора шнека, проверить масло, шнек подачи сырья в прекондиционер |  | 30min | 2026-11-10 09:00 A | 2026-11-10 09:30 A | 100% |  |  | start no earlier than 2026-11-10 09:00 | Труфанов А | 0.5h | 0.5h |
| 1716 | 3.60 | Поставить вибратор на приемную воронку после смесителя, шнек подачи сырья в прекондиционер |  | 2h | 2026-11-10 09:00 | 2026-11-10 11:00 |  |  | 88.34d | start no earlier than 2026-11-10 09:00 | Бундин В | 2h |  |
| 1717 | 3.61 | Поставить розетку рядом с мойкой на жирах для насоса |  | 1h | 2026-11-05 09:00 A | 2026-11-05 10:00 A | 100% |  |  | start no earlier than 2026-11-05 08:00 | Бобренок В | 1h | 1h |
| 1718 | 3.62 | Изготовить козырек на выходе эктрудера (доработать откидную лопатку) |  | 4h | 2026-11-07 09:00 A | 2026-11-07 13:00 A | 100% |  |  | start no earlier than 2026-11-07 09:00 | Макаревич А; Николаев | 8h | 8h |
| 1719 | 3.63 | Установка 2-х бойлеров по 100л, на женскую раздевалку и мужскую, определить контуры магистрали воды, определить где находится закладная |  | 3h | 2026-11-06 09:00 A | 2026-11-06 12:00 A | 100% |  |  | start no earlier than 2026-11-06 09:00 | Бобренок В | 3h | 3h |
| 1720 | 3.64 | В зоне фасовке, ВРУ куда подключен квадропак и нории, автомат QF4 при включении искрит - устранить | manual | 1h | 2026-10-31 09:00 A | 2026-10-31 10:00 A | 100% |  |  | start no earlier than 2026-10-31 09:00 | Дедов В | 1h | 1h |
| 1721 | 3.65 | Поставить на зарядку штабелер, который стоит на жирах |  | 30min | 2026-10-14 09:00 A | 2026-10-14 09:30 A | 100% |  |  | start no earlier than 2026-10-14 08:00 | Бобренок В | 0.5h | 0.5h |
| 1722 | 3.66 | Закрыть на ключ все двери, ключи взять в кабинете оги |  | 1h | 2026-10-13 09:00 A | 2026-10-13 10:00 A | 100% |  |  | start no earlier than 2026-10-13 08:00 | Бобренок В | 1h | 1h |
| 1723 | 3.67 | Подписать на шкафу управления нории обозначения кнопок (на малярный скотч) |  | 1h | 2026-10-09 09:00 A | 2026-10-09 10:00 A | 100% |  |  | start no earlier than 2026-10-09 08:00 | Дедов В | 1h | 1h |
| 1724 | 3.68 | Закрыть все входа в производственную зону. Со стороны склада, гидролизата, со стороны фасовки, со стороны пандуса. Ключи взять у нас в кабинете в ящике. Ключи подписать | manual | 2h | 2026-10-03 09:00 A | 2026-10-03 11:00 A | 100% |  |  | start no earlier than 2026-10-03 09:00 | Бобренок В | 2h | 2h |
| 1725 | 3.69 | Сделать перила на лестницу между фасовкой и жирами, высота по образцу лестницы, которая на загрузке смесителей в 3 цеху. Делать минимальный габарит, чтоб рука пролазила между стеной и при этом сильно не сужало пространство. Делаем из 40 уголка | manual | 5h | 2026-10-09 09:00 A | 2026-10-09 15:00 A | 100% |  |  | start no earlier than 2026-10-09 09:00 | Бундин В | 5h | 5h |
| 1726 | 3.70 | Сделать окно из орг стекла монолитного, на жирах сверху, чтоб было видно печку. Размер примерно 300х200 | manual | 2h | 2026-10-07 09:00 A | 2026-10-07 11:00 A | 100% |  |  | start no earlier than 2026-10-07 09:00 | Бундин В | 2h | 2h |
| 1727 | 3.71 | Доделать закрепление окна из орг стекла, на жирах на заклепки вытяжные м6 | manual | 1h | 2026-10-10 09:00 A | 2026-10-10 10:00 A | 100% |  |  | start no earlier than 2026-10-10 09:00 | Бундин В | 1h | 1h |

| ID | WBS | Task | Type | Duration | Start | Finish | Predecessors | Complete | Constraint | Resources | Work | Actual work |
| --- | --- | --- | --- | --- | --- | --- | --- | --- | --- | --- | --- | --- |
| 1728 | 3.72 | **Установить насос с ножами в 3 цех под раковину мойки на жирах** |  | 11.5d | 2026-10-13 09:00 A | 2026-10-27 13:00 A |  | 100% |  |  | 9.17h | 9.17h |
| 1729 | 3.72.1 | Заказать необходимые комплектующие, переходники |  | 1h | 2026-10-13 09:00 A | 2026-10-13 10:00 A |  | 100% | start no earlier than 2026-10-13 09:00 | Зорькин В | 1h | 1h |
| 1730 | 3.72.2 | контроль |  | 10min | 2026-10-22 09:00 A | 2026-10-22 09:10 A |  | 100% | start no earlier than 2026-10-22 09:00 | Зорькин В | 0.17h | 0.17h |
| 1731 | 3.72.3 | Установить насос с ножами в 3 цех под раковину мойки на жирах | manual | 4h | 2026-10-27 09:00 A | 2026-10-27 13:00 A |  | 100% | start no earlier than 2026-10-27 09:00 | Труфанов А; Некрасов А | 8h | 8h |
| 1732 | 3.73 | сопряжение круглой входной воронки в экструдер с квадратом выхода прекондиционера как в 2ц |  | 5h | 2026-09-29 09:00 A | 2026-09-29 15:00 A |  | 100% | start no earlier than 2026-09-29 09:00 | Бундин В | 5h | 5h |
| 1733 | 3.74 | **обеспечить быстрое переключение продукта из барабана годен/брак - охладитель/тазик** |  | 3.06d | 2026-09-19 09:00 A | 2026-09-22 09:30 A |  | 100% |  |  | 21h | 21h |
| 1734 | 3.74.1 | Модернизация лотка для удаления брака из барабанов, а именно: | milestone | 0h | 2026-09-19 09:00 A | 2026-09-19 09:00 A |  | 100% | start no earlier than 2026-09-19 09:00 | Макаревич А |  |  |
| 1735 | 3.74.2 | демонтировать отбойник, направляющий продукт в центр |  | 2h | 2026-09-19 09:00 A | 2026-09-19 11:00 A |  | 100% | start no earlier than 2026-09-19 09:00 | Макаревич А | 2h | 2h |
| 1736 | 3.74.3 | сделать торцевую стенку на шарнире с наклоном под барабан. Шарнир на высоте кронштейнов сетки. Шарнир дверной / как от печей |  | 4h | 2026-09-19 11:00 A | 2026-09-19 16:00 A | 1735 | 100% | start no earlier than 2026-09-18 08:00 | Макаревич А | 4h | 4h |
| 1737 | 3.74.4 | сделать фиксатор стенки в положении закрыто в виде щеколды. Безопасный быстрый |  | 2h | 2026-09-20 09:00 A | 2026-09-20 11:00 A | 1736 | 100% | start no earlier than 2026-09-20 09:00 | Макаревич А | 2h | 2h |
| 1738 | 3.74.5 | сделать "притвор", закрывающий щель после разрезания стенки. Все края защита от пореза либо зачистить либо лента |  | 4h | 2026-09-20 11:00 A | 2026-09-20 16:00 A | 1737 | 100% | start no earlier than 2026-09-18 08:00 | Макаревич А | 4h | 4h |
| 1739 | 3.74.6 | изготовить новый отбойник, направляющий продукт в центр, ниже опущенной стенки на сброс, не широкий, что бы удобно былоо менять сетку |  | 2h | 2026-09-20 16:00 A | 2026-09-20 18:00 A | 1738 | 100% | start no earlier than 2026-09-18 08:00 | Макаревич А | 2h | 2h |
| 1740 | 3.74.7 | Доработка короба после барабанов для ссыпки в емкость, установка ограничителей, язычка. Подробности у Труфанова |  | 6h | 2026-09-21 09:00 A | 2026-09-21 16:00 A |  | 100% | start no earlier than 2026-09-21 08:00 | Макаревич А | 6h | 6h |
| 1741 | 3.74.8 | установить на место, испытание |  | 30min | 2026-09-22 09:00 A | 2026-09-22 09:30 A |  | 100% | start no earlier than 2026-09-22 09:00 | Некрасов А; Труфанов А | 1h | 1h |
| 1742 | 3.75 | **Дражжировка** |  | 13.25d | 2026-09-17 09:00 A | 2026-09-30 11:00 A |  | 100% |  |  | 14h | 14h |
| 1743 | 3.75.1 | Повесить мощную цепь, за которую можно опускать и поднимать защиту |  | 1h | 2026-09-18 09:00 A | 2026-09-18 10:00 A |  | 100% | start no earlier than 2026-09-18 09:00 | Бундин В | 1h | 1h |
| 1744 | 3.75.2 | Сделать ограничитель, когда опускаешь защиту на себя, на уровне перил |  | 1h | 2026-09-17 09:00 A | 2026-09-17 10:00 A |  | 100% | start no earlier than 2026-09-17 08:00 | Бундин В | 1h | 1h |
| 1745 | 3.75.3 | Сделать из отбойников рессор уаз отбойники на защите паллет, чтоб не било когда падает (позвони, обьясню) |  | 2h | 2026-09-17 09:00 A | 2026-09-17 11:00 A |  | 100% | start no earlier than 2026-09-17 08:00 | Бундин В | 2h | 2h |
| 1746 | 3.75.4 | Перенести частотник со стены ближе к барабанам, смонтировать на раму барабанов |  | 2h | 2026-09-30 09:00 A | 2026-09-30 11:00 A |  | 100% | start no earlier than 2026-09-30 09:00 | Дедов В | 2h | 2h |
| 1747 | 3.75.5 | на коневейер циклон-барабан установить полосу сбоку ленты не дающую грануле скатываться обратно, примеры посмотреть в 1 цеху |  | 1h | 2026-09-22 09:00 A | 2026-09-22 10:00 A |  | 100% | start no earlier than 2026-09-22 09:00 | Тимофеев В | 1h | 1h |
| 1748 | 3.75.6 | Изготовить и установить уши на конце конвейера в барабан (чтоб гранула не попадала внутрь ленты) |  | 2h | 2026-09-21 09:00 A | 2026-09-21 11:00 A |  | 100% | start no earlier than 2026-09-21 09:00 | Тимофеев В | 2h | 2h |
| 1749 | 3.75.7 | Доделать и установить язык между барабанами |  | 1h | 2026-09-21 09:00 A | 2026-09-21 10:00 A |  | 100% | start no earlier than 2026-09-21 09:00 | Тимофеев В | 1h | 1h |
| 1750 | 3.75.8 | Увеличить «язычек» между барабанами на жирах (просыпается много гранулы |  | 4h | 2026-09-17 09:00 A | 2026-09-17 13:00 A |  | 100% | start no earlier than 2026-09-17 09:00 | Тимофеев В | 4h | 4h |
| 1751 | 3.76 | **Разобрать регулировку ножевого узла, достать вал на котором установлен штурвал** |  | 18d | 2026-09-21 09:00 A | 2026-10-11 11:00 A |  | 100% |  |  | 3.5h | 3.5h |
| 1752 | 3.76.1 | Снять вал, передать Зорькину |  | 1h | 2026-09-22 09:00 A | 2026-09-22 10:00 A |  | 100% | start no earlier than 2026-09-22 09:00 | Тимофеев В | 1h | 1h |
| 1753 | 3.76.2 | Заявка по образцу |  | 20min | 2026-09-21 09:00 A | 2026-09-21 09:20 A |  | 100% | start no earlier than 2026-09-21 09:00 | Зорькин В | 0.33h | 0.33h |
| 1754 | 3.76.3 | контроль |  | 10min | 2026-09-28 09:00 A | 2026-09-28 09:10 A | 1753SF+7d | 100% | start no earlier than 2026-09-28 09:00 | Зорькин В | 0.17h | 0.17h |
| 1755 | 3.76.4 | установка, получить на складе, лежат 2 вала один новый, другой образец, забрать оба | manual | 2h | 2026-10-11 09:00 A | 2026-10-11 11:00 A | 1754FS+1d | 100% | start no earlier than 2026-10-11 09:00 | Бобренок В | 2h | 2h |
| 1756 | 3.77 | Между шлюзовым питателем и конвейером на жирах сделать ограничение, чтоб не разлеталась гранула и не мешало двигать конвейер |  | 3h | 2026-09-15 09:00 A | 2026-09-15 12:00 A |  | 100% | start no earlier than 2026-09-15 09:00 | Тимофеев В | 3h | 3h |

| ID | WBS | Task | Type | Duration | Start | Finish | Predecessors | Complete | Actual finish | Total slack | Constraint | Resources | Work | Actual work |
| --- | --- | --- | --- | --- | --- | --- | --- | --- | --- | --- | --- | --- | --- | --- |
| 1757 | 3.78 | **Найти и установить жироуловитель с синего склада на жирах мойка** |  | 15.12d | 2026-09-16 09:00 A | 2026-10-01 10:00 A |  | 100% |  |  |  |  | 3.33h | 3.33h |
| 1758 | 3.78.1 | Составить список необходимых материлов для подключения (передать зорькину) |  | 1h | 2026-09-16 09:00 A | 2026-09-16 10:00 A |  | 100% |  |  | start no earlier than 2026-09-16 08:00 | Тимофеев В; Зорькин В | 2h | 2h |
| 1759 | 3.78.2 | Заявка |  | 15min | 2026-09-16 10:00 A | 2026-09-16 10:15 A | 1758 | 100% |  |  | start no earlier than 2026-09-16 08:00 | Зорькин В | 0.25h | 0.25h |
| 1760 | 3.78.3 | Контроль |  | 5min | 2026-09-24 09:00 A | 2026-09-24 09:05 A | 1759FS+7d | 100% |  |  | start no earlier than 2026-09-24 09:00 | Зорькин В | 0.08h | 0.08h |
| 1761 | 3.78.4 | Монтаж |  | 1h | 2026-10-01 09:00 A | 2026-10-01 10:00 A | 1760 | 100% |  |  | start no earlier than 2026-10-01 09:00 | Тимофеев В | 1h | 1h |
| 1762 | 3.79 | монтаж оконечные кожухи на конвейер после охладителя, что бы гранула не разлеталась при перевороте ленты |  | 4h | 2026-09-21 09:00 A | 2026-09-21 13:00 A |  | 100% |  |  | start no earlier than 2026-09-22 09:00 | Тимофеев В | 4h | 4h |
| 1763 | 3.80 | Перенести регулировку подачи жира, ближе к барабанам. Перенос частотник на раму барабанов |  | 4h | 2026-10-06 09:00 | 2026-10-06 13:00 |  |  |  | 116.09d | start no earlier than 2026-10-06 09:00 | Тимофеев В | 4h |  |
| 1764 | 3.81 | Проблема с закрыванием дверцы привода ножей (шарнир с мотором ножей при закрывании теряет соосность, сделать упор) |  | 1h | 2026-09-15 09:00 A | 2026-09-15 10:00 A |  | 100% |  |  | start no earlier than 2026-09-15 09:00 | Тимофеев В | 1h | 1h |
| 1765 | 3.82 | Разобраться почему закусывает резьбу прижима ножей к фильере (испытывать после установки штурвала) |  | 1h | 2026-09-15 09:00 A | 2026-09-15 10:00 A |  | 100% |  |  | start no earlier than 2026-09-15 09:00 | Тимофеев В | 1h | 1h |
| 1766 | 3.83 | Регулировка ножей на экструдере — сделать «штурвал»; |  | 2h | 2026-09-15 09:00 A | 2026-09-15 11:00 A |  | 100% |  |  | start no earlier than 2026-09-15 09:00 | Тимофеев В | 2h | 2h |
| 1767 | 3.84 | **Гранулы выходили из печи со следами смазки** |  | 0.5d | 2026-10-01 09:00 A | 2026-10-01 13:00 A |  | 100% |  |  |  |  | 4h | 4h |
| 1768 | 3.84.1 | (сделать направляющие в печи); |  | 4h | 2026-10-01 09:00 A | 2026-10-01 13:00 A |  | 100% |  |  | start no earlier than 2026-10-02 09:00 | Тимофеев В | 4h | 4h |
| 1769 | 3.85 | **С двигателя экструдера выдавило много масла;** |  | 33.5d | 2026-09-18 09:00 A | 2026-10-27 13:00 |  | 100% | 2026-11-06 16:00 |  |  |  | 11.25h | 11.25h |
| 1770 | 3.85.1 | установить поплавок на верхний уровень для блокировки насоса- осмотр |  | 4h | 2026-09-18 09:00 A | 2026-09-18 13:00 A |  | 100% |  |  | start no earlier than 2026-09-18 09:00 | Бобренок В | 4h | 4h |
| 1771 | 3.85.2 | заявка на датчики |  | 1h | 2026-09-18 14:00 A | 2026-09-18 15:00 A | 1770 | 100% |  |  | start no earlier than 2026-09-18 08:00 | Зорькин В | 1h | 1h |
| 1772 | 3.85.3 | контроль достачки |  | 15min | 2026-09-25 15:00 A | 2026-09-25 15:15 A | 1771FS+7d | 100% |  |  | start no earlier than 2026-09-18 08:00 | Зорькин В | 0.25h | 0.25h |
| 1773 | 3.85.4 | монтаж датчик в редуктор |  | 2h | 2026-11-05 09:00 A | 2026-11-05 11:00 A | 1772FS+1d | 100% |  |  | start no earlier than 2026-11-05 09:00 | Дедов В | 2h | 2h |
| 1774 | 3.85.5 | подключение датчика в схему - блокировка по уровню |  | 4h | 2026-11-06 11:00 A | 2026-11-06 16:00 A | 1773FS+1d | 100% |  |  | start no earlier than 2026-11-05 09:00 | Тимофеев В | 4h | 4h |
| 1775 | 3.86 | Заменить кран подачи воды (второй слева) на втором предкондиционере — |  | 1h | 2026-09-14 09:00 A | 2026-09-14 10:00 A |  | 100% |  |  | start no earlier than 2026-09-14 09:00 | Тимофеев В | 1h | 1h |
| 1776 | 3.87 | **По схемам Труфанова разобраться с автоматикой шкафа и подключить 3 датчика уровня и подписать, где и что находится +кнопки и переключатели на шкафу тоже подписать** |  | 1.06d | 2026-09-07 09:00 A | 2026-09-08 09:30 A |  | 100% |  |  |  |  | 8.5h | 8.5h |
| 1777 | 3.87.1 | изучение схему |  | 8h | 2026-09-07 09:00 A | 2026-09-07 18:00 A |  | 100% |  |  | start no earlier than 2026-09-07 09:00 | Дедов В | 8h | 8h |
| 1778 | 3.87.2 | подкл 2я нория по датчику уровня |  | 30min | 2026-09-08 09:00 A | 2026-09-08 09:30 A |  | 100% |  |  | start no earlier than 2026-09-08 08:00 | Дедов В | 0.5h | 0.5h |
| 1779 | 3.88 | **установить ограничитель на дверь что бы попадала под движение рольворот** |  | 24.12d | 2026-09-22 09:00 A | 2026-10-20 10:00 A |  | 100% |  |  |  |  | 2.5h | 2.5h |
| 1780 | 3.88.1 | заявка |  | 15min | 2026-09-22 09:00 A | 2026-09-22 09:15 A |  | 100% |  |  | start no earlier than 2026-09-22 09:00 | Зорькин В | 0.25h | 0.25h |
| 1781 | 3.88.2 | контроль доставки |  | 15min | 2026-09-28 09:00 A | 2026-09-28 09:15 A | 1780FS+5d | 100% |  |  | start no earlier than 2026-09-28 09:00 | Зорькин В | 0.25h | 0.25h |
| 1782 | 3.88.3 | монтаж |  | 1h | 2026-10-20 09:00 A | 2026-10-20 10:00 A | 1781FS+1d | 100% |  |  | start no earlier than 2026-10-20 09:00 | Тимофеев В; Николаев | 2h | 2h |
| 1783 | 3.89 | приварить к люку сливной ямы вспомогательную ручку (ручка весит на стеллаже в слесарке) | manual | 2h | 2026-08-30 09:00 | 2026-08-30 11:00 |  |  |  |  | start no earlier than 2026-08-30 09:00 | Бундин В | 2h |  |

| ID | WBS | Task | Type | Duration | Start | Finish | Predecessors | Complete | Remaining | Total slack | Constraint | Resources | Work | Actual work |
| --- | --- | --- | --- | --- | --- | --- | --- | --- | --- | --- | --- | --- | --- | --- |
| 1784 | 3.90 | **монтаж унитаз, получить на складе** |  | 0d | 2026-08-17 09:00 A | 2026-08-17 09:00 A |  | 100% |  |  |  |  |  |  |
| 1785 | 3.90.1 | крышка бачка лопнувшая- поменять по гарантии | milestone | 0d | 2026-08-17 09:00 A | 2026-08-17 09:00 A |  | 100% |  |  | start no earlier than 2026-08-17 09:00 | Зорькин В |  |  |
| 1786 | 3.91 | закрыить металлом 1.5мм щель стена / площадка загрузки муки. Между рольворотой и стеной с окнами |  | 2h | 2026-08-15 09:00 A | 2026-08-17 11:00 A |  | 100% |  |  | start no earlier than 2026-08-15 09:00 | Бундин В | 2h | 2h |
| 1787 | 3.92 | закрыть щель битумной лентой стык площадка-профлист стенка. Полоску клеить из нутри, обезжирить. |  | 2h | 2026-08-16 09:00 A | 2026-08-17 11:00 A |  | 100% |  |  | start no earlier than 2026-08-16 09:00 | Бундин В | 2h | 2h |
| 1788 | 3.93 | монтаж светильник в корридор / лестница на площадку жиров |  | 3h | 2026-08-16 09:00 A | 2026-08-17 12:00 A |  | 100% |  |  | start no earlier than 2026-08-16 09:00 | Бундин В | 3h | 3h |
| 1789 | 3.94 | **ломает гранулу после печи** |  | 17.12d? | 2026-08-18 09:00 A | 2026-09-09 10:00 A |  | 100% |  |  |  |  | 18.5h | 18.5h |
| 1790 | 3.94.1 | тест на ручной загрузке |  | 2h | 2026-08-18 09:00 A | 2026-08-18 11:00 A |  | 100% |  |  | start no earlier than 2026-08-18 09:00 | Шуранов Ю | 2h | 2h |
| 1791 | 3.94.2 | полная раборка трассы на ревизию острых граней? |  | 2h | 2026-08-19 09:00 A | 2026-08-19 11:00 A |  | 100% |  |  | start no earlier than 2026-08-19 09:00 | Тимофеев В | 2h | 2h |
| 1792 | 3.94.3 | определить параметры нории для запроса цены |  | 2h | 2026-08-18 09:00 A | 2026-08-18 11:00 A |  | 100% |  |  | start no earlier than 2026-08-18 09:00 | Шуранов Ю | 2h | 2h |
| 1793 | 3.94.4 | контроль отвта |  | 15min | 2026-09-03 09:00 A | 2026-09-03 09:15 A | 1792FS+5d | 100% |  |  | start no earlier than 2026-09-03 09:00 | Зорькин В | 0.25h | 0.25h |
| 1794 | 3.94.5 | изготовить новый отвод 90 с фланцем, учесть степеньку |  | 1h | 2026-09-02 09:00 A | 2026-09-02 10:00 A |  | 100% |  |  | start no earlier than 2026-09-09 09:00 | Макаревич А | 1h | 1h |
| 1795 | 3.94.6 | тест |  | 1h | 2026-08-19 09:00 A | 2026-08-19 10:00 A |  | 100% |  |  | start no earlier than 2026-08-19 09:00 | Тимофеев В; Шуранов Ю | 2h | 2h |
| 1796 | 3.94.7 | переварить фланец на угловом соединении (объясню по телефону). То же самое | milestone | 0h | 2026-09-04 09:00 A | 2026-09-04 09:00 A |  | 100% |  |  | start no earlier than 2026-09-04 09:00 | Макаревич А |  |  |
| 1797 | 3.94.8 | печать переходника на 3д принтере |  | 1d? | 2026-08-31 09:00 A | 2026-08-31 18:00 A |  | 100% |  |  | start no earlier than 2026-08-31 09:00 | Домоводов К | 8h | 8h |
| 1798 | 3.94.9 | проверка размещения нории от квадропака |  | 15min | 2026-08-18 09:00 A | 2026-08-18 09:15 A |  | 100% |  |  | start no earlier than 2026-08-18 09:00 | Шуранов Ю | 0.25h | 0.25h |
| 1799 | 3.94.10 | установить угловой фланец на пневмотрассу |  | 1h | 2026-09-09 09:00 A | 2026-09-09 10:00 A |  | 100% |  |  | start no earlier than 2026-09-09 09:00 | Тимофеев В | 1h | 1h |
| 1800 | 3.95 | сделать перемычку на нижней части системы загрузки палет подачи жиров и гидрализата | manual | 3h | 2026-08-15 09:00 A | 2026-08-15 12:00 A |  | 100% |  |  | start no earlier than 2026-08-15 09:00 | Бундин В | 3h | 3h |
| 1801 | 3.96 | **сборка квадропака 3 цех** |  | 69.12d | 2026-08-14 09:00 A | 2026-11-06 10:00 |  | 97% | 2.23d | 92.47d |  |  | 45h | 44h |
| 1802 | 3.96.1 | скрутку силовых кабелей на полу усилить мех защитой - распред коробку или на подобии - что если случайно наступят изолента не выдержит |  | 1h | 2026-10-20 09:00 A | 2026-10-20 10:00 A |  | 100% |  |  | start no earlier than 2026-10-20 09:00 | Бундин В | 1h | 1h |
| 1803 | 3.96.2 | уложить проводку в шкафу управления в кабельные лотки, крышки закрыть |  | 1h | 2026-11-06 09:00 | 2026-11-06 10:00 |  |  |  | 92.47d | start no earlier than 2026-11-06 09:00 | Бобренок В | 1h |  |
| 1804 | 3.96.3 | Монтаж/позиционирование квадропака |  | 5h | 2026-09-02 09:00 A | 2026-09-02 15:00 A |  | 100% |  |  | start no earlier than 2026-09-02 09:00 | Труфанов А | 5h | 5h |
| 1805 | 3.96.4 | перестановка норий, задействовать бункер |  | 2h | 2026-08-17 09:00 A | 2026-08-17 11:00 A |  | 100% |  |  | start no earlier than 2026-08-17 09:00 | Тимофеев В; Некрасов А | 4h | 4h |
| 1806 | 3.96.5 | сборка накопительный стол |  | 2h | 2026-08-19 09:00 A | 2026-08-19 11:00 A | 1805 | 100% |  |  | start no earlier than 2026-08-19 09:00 | Тимофеев В | 2h | 2h |
| 1807 | 3.96.6 | подключение дозатор |  | 1h | 2026-08-14 09:00 A | 2026-08-14 10:00 A |  | 100% |  |  | start no earlier than 2026-08-14 09:00 | Труфанов А | 1h | 1h |
| 1808 | 3.96.7 | зарисовка схема ШУ нория - понять управление бункером |  | 4h | 2026-08-14 09:00 A | 2026-08-14 13:00 A |  | 100% |  |  | start no earlier than 2026-08-14 09:00 | Труфанов А | 4h | 4h |
| 1809 | 3.96.8 | подключение нория к упаковке |  | 2h | 2026-08-14 14:00 A | 2026-08-14 16:00 A | 1808 | 100% |  |  | start no earlier than 2026-08-14 09:00 | Труфанов А | 2h | 2h |
| 1810 | 3.96.9 | подключение вводный кабель (питание) информация у Труфанова |  | 2h | 2026-09-04 09:00 A | 2026-09-04 11:00 A | 1809 | 100% |  |  | start no earlier than 2026-09-04 09:00 | Бундин В; Труфанов А | 4h | 4h |
| 1811 | 3.96.10 | тест на пакетах |  | 4h | 2026-10-21 09:00 A | 2026-10-21 13:00 A |  | 100% |  |  | start no earlier than 2026-10-21 09:00 | Труфанов А; Зорькин В | 8h | 8h |
| 1812 | 3.96.11 | тест с операторами определить производительность |  | 2h | 2026-10-26 09:00 A | 2026-10-26 11:00 A |  | 100% |  |  | start no earlier than 2026-10-26 09:00 | Труфанов А; Зорькин В; Некрасов А | 6h | 6h |
| 1813 | 3.96.12 | подключениекомпрессор |  | 1h | 2026-09-03 09:00 A | 2026-09-03 10:00 A | 1810 | 100% |  |  | start no earlier than 2026-09-03 09:00 | Бобренок В | 1h | 1h |
| 1814 | 3.96.13 | Установка квадропака (позиционирование нижней машины) информация у Труфанова |  | 2h | 2026-09-02 09:00 A | 2026-09-02 11:00 A |  | 100% |  |  | start no earlier than 2026-09-02 09:00 | Труфанов А; Бундин В | 4h | 4h |
| 1815 | 3.96.14 | Выставить опоры верхней рамы и лестницы по уровню |  | 1h | 2026-09-02 09:00 A | 2026-09-02 10:00 A |  | 100% |  |  | start no earlier than 2026-09-02 08:00 | Бундин В | 1h | 1h |
| 1816 | 3.96.15 | Редуктор стола повернуть кабелем к электрощиту (на столе) |  | 30min | 2026-09-02 09:00 A | 2026-09-02 09:30 A |  | 100% |  |  | start no earlier than 2026-09-02 08:00 | Бундин В | 0.5h | 0.5h |
| 1817 | 3.96.16 | Провод от редуктора и кнопки в гофре закрепить по раме стола завести в шкаф |  | 30min | 2026-09-02 09:00 A | 2026-09-02 09:30 A |  | 100% |  |  | start no earlier than 2026-09-02 08:00 | Бундин В | 0.5h | 0.5h |
| 1818 | 3.97 | сделать ручку и зацепной крюк для открытия люка сливной ямы | manual | 2h | 2026-08-08 09:00 A | 2026-08-08 11:00 A |  | 100% |  |  | start no earlier than 2026-08-08 09:00 | Бобренок В | 2h | 2h |

| ID | WBS | Task | Type | Duration | Start | Finish | Predecessors | Complete | Constraint | Resources | Work | Actual work |
| --- | --- | --- | --- | --- | --- | --- | --- | --- | --- | --- | --- | --- |
| 1819 | 3.98 | **карусель добавить перемычку снизу, чтобы не выпал мешок** |  | 30.25d | 2026-08-18 09:00 A | 2026-09-22 11:00 A |  | 100% |  |  | 2.33h | 2.33h |
| 1820 | 3.98.1 | заказать краску |  | 10min | 2026-08-18 09:00 A | 2026-08-18 09:10 A |  | 100% | start no earlier than 2026-08-18 09:00 | Шуранов Ю | 0.17h | 0.17h |
| 1821 | 3.98.2 | контроль доставки |  | 10min | 2026-08-31 09:00 A | 2026-08-31 09:10 A | 1820FS+5d | 100% | start no earlier than 2026-08-31 09:00 | Зорькин В | 0.17h | 0.17h |
| 1822 | 3.98.3 | покрасить перемычки система безопасности) |  | 2h | 2026-09-22 09:00 A | 2026-09-22 11:00 A | 1821FS+1d | 100% | start no earlier than 2026-09-22 09:00 | Тимофеев В | 2h | 2h |
| 1823 | 3.99 | убрать битумную ленту снаружи мезонина |  | 1h | 2026-08-04 08:00 A | 2026-08-04 10:00 A |  | 100% | start no earlier than 2026-08-04 08:00 | Макаревич А | 1h | 1h |
| 1824 | 3.100 | хорошо закрепить шланг подачи воды в прекондеционер |  | 2h | 2026-08-04 08:00 A | 2026-08-04 11:00 A |  | 100% | start no earlier than 2026-08-04 08:00 | Макаревич А | 2h | 2h |
| 1825 | 3.101 | на выходе ротаметра поменять шланг большего диаметра |  | 1h | 2026-07-31 08:00 A | 2026-07-31 10:00 A |  | 100% | start no earlier than 2026-07-31 08:00 | Тимофеев В | 1h | 1h |
| 1826 | 3.102 | покрасить кронштейн крепления ротаметра |  | 1h | 2026-07-31 09:00 A | 2026-07-31 10:00 A |  | 100% | start no earlier than 2026-07-31 09:00 | Бундин В | 1h | 1h |
| 1827 | 3.103 | не набирает заданную температуру 4 зона экструдера- разобраться |  | 2h | 2026-07-30 08:00 A | 2026-07-30 11:00 A |  | 100% | start no earlier than 2026-07-30 08:00 | Дедов В | 2h | 2h |
| 1828 | 3.104 | сборка кожухи на печи |  | 2h | 2026-07-15 09:00 A | 2026-07-15 11:00 A |  | 100% | start no earlier than 2026-07-15 09:00 | Бундин В | 2h | 2h |
| 1829 | 3.105 | **установить зеркало сферическое на бункер** |  | 15.5d | 2026-07-07 09:00 A | 2026-07-28 13:00 A |  | 100% |  |  | 5h | 5h |
| 1830 | 3.105.1 | заявка |  | 1h | 2026-07-07 09:00 A | 2026-07-07 10:00 A |  | 100% | start no earlier than 2026-07-07 09:00 | Зорькин В | 1h | 1h |
| 1831 | 3.105.2 | контроль доставки | milestone | 0d | 2026-07-17 10:00 A | 2026-07-17 10:00 A | 1830FS+10d | 100% | start no earlier than 2026-07-14 08:00 | Зорькин В |  |  |
| 1832 | 3.105.3 | монтаж |  | 4h | 2026-07-28 09:00 A | 2026-07-28 13:00 A | 1831FS+1d | 100% | start no earlier than 2026-07-28 09:00 | Макаревич А | 4h | 4h |
| 1833 | 3.106 | поиск след от смазки на охладителе |  | 1h | 2026-07-10 09:00 A | 2026-07-10 10:00 A |  | 100% | start no earlier than 2026-07-10 09:00 | Тимофеев В; Зорькин В | 2h | 2h |
| 1834 | 3.107 | **установить наосос центробежный на бочку слив с парогенератора, врезать штуцер в бочку** |  | 0.25d | 2026-07-15 09:00 A | 2026-07-15 11:00 A |  | 100% |  |  | 4h | 4h |
| 1835 | 3.107.1 | орг закуп с курьером |  | 2h | 2026-07-15 09:00 A | 2026-07-15 11:00 A |  | 100% | start no earlier than 2026-07-15 09:00 | Зорькин В | 2h | 2h |
| 1836 | 3.107.2 | монтаж штуцер |  | 2h | 2026-07-15 09:00 A | 2026-07-15 11:00 A |  | 100% | start no earlier than 2026-07-15 09:00 | Бобренок В | 2h | 2h |
| 1837 | 3.108 | **вода идет не стабильно** |  | 4.38d | 2026-07-09 09:00 A | 2026-07-15 12:00 A |  | 100% |  |  | 8h | 8h |
| 1838 | 3.108.1 | Поставить гидроаккумулятор на насос между выходом насосной станции и 3-х ходомым краном подачи воды в экструдер и заменить трубки на шланги |  | 3h | 2026-07-09 09:00 A | 2026-07-09 12:00 A |  | 100% | start no earlier than 2026-07-09 09:00 | Тимофеев В | 3h | 3h |
| 1839 | 3.108.2 | тест работы воды с ПГ на давлении питательного насоса 3+ |  | 1h | 2026-07-10 09:00 A | 2026-07-10 10:00 A |  | 100% | start no earlier than 2026-07-10 09:00 | Зорькин В; Тимофеев В | 2h | 2h |
| 1840 | 3.108.3 | орг закуп с курьером |  | 2h | 2026-07-15 09:00 A | 2026-07-15 11:00 A | 1835SS | 100% | start no earlier than 2026-07-13 09:00 | Зорькин В | 2h | 2h |
| 1841 | 3.108.4 | замена шланг напорный с насоса до ротаметра |  | 1h | 2026-07-15 11:00 A | 2026-07-15 12:00 A | 1840 | 100% | start no earlier than 2026-07-13 09:00 | Бобренок В | 1h | 1h |
| 1842 | 3.109 | Доработать крутилку ссыпа гранулы, прихватить на сварку |  | 1h | 2026-07-09 09:00 A | 2026-07-09 10:00 A |  | 100% | start no earlier than 2026-07-09 09:00 | Макаревич А | 1h | 1h |
| 1843 | 3.110 | удлинить лоток ножевого узла, до кромки загрузки применик пневмотранспорта |  | 3h | 2026-07-09 09:00 A | 2026-07-09 12:00 A |  | 100% | start no earlier than 2026-07-09 09:00 | Макаревич А | 3h | 3h |
| 1844 | 3.111 | Снять торцевые дверцы на печи для доступа к сетке |  | 1h | 2026-07-08 09:00 A | 2026-07-08 10:00 A |  | 100% | start no earlier than 2026-07-08 08:00 | Бундин В | 1h | 1h |
| 1845 | 3.112 | Снять кожухи на редукторах на цепях |  | 1h | 2026-07-08 09:00 A | 2026-07-08 10:00 A |  | 100% | start no earlier than 2026-07-08 08:00 | Бундин В | 1h | 1h |
| 1846 | 3.113 | Установка раковины,унитаза в 3 цеху 2 этаж |  | 4h | 2026-07-07 09:00 A | 2026-07-07 13:00 A |  | 100% | start no earlier than 2026-07-07 09:00 | Бундин В | 4h | 4h |
| 1847 | 3.114 | Установить тройник на компрессор маленький, на входе. (тройни пришел сегодня на склад) |  | 1h | 2026-07-08 09:00 A | 2026-07-08 10:00 A |  | 100% | start no earlier than 2026-07-08 08:00 | Бундин В | 1h | 1h |
| 1848 | 3.115 | Вернуть упакованный унитаз на склад |  | 30min | 2026-07-08 09:00 A | 2026-07-08 09:30 A |  | 100% | start no earlier than 2026-07-08 08:00 | Бундин В | 0.5h | 0.5h |

| ID | WBS | Task | Type | Duration | Start | Finish | Predecessors | Complete | Actual start | Actual finish | Total slack | Constraint | Resources | Work | Actual work |
| --- | --- | --- | --- | --- | --- | --- | --- | --- | --- | --- | --- | --- | --- | --- | --- |
| 1849 | 3.116 | **на тепловых реле 1 и 2 смесителя добавить порог выключения** |  | 1h? | 2026-07-11 09:00 | 2026-07-11 10:00 |  | 100% | 2026-07-14 09:00 | 2026-09-03 10:00 |  |  |  | 1.5h | 1.5h |
| 1850 | 3.116.1 | заявка на тепловые реле с большим номинолом |  | 15min | 2026-07-14 09:00 A | 2026-07-14 09:15 A |  | 100% |  |  |  | start no earlier than 2026-07-14 08:00 | Зорькин В | 0.25h | 0.25h |
| 1851 | 3.116.2 | доставка контроль |  | 15min | 2026-08-28 09:00 A | 2026-08-28 09:15 A | 1850FS+5d | 100% |  |  |  | start no earlier than 2026-08-28 09:00 | Зорькин В | 0.25h | 0.25h |
| 1852 | 3.116.3 | замена тепловых реле, получить на складе |  | 1h | 2026-09-03 09:00 A | 2026-09-03 10:00 A | 1851FS+1d | 100% |  |  |  | start no earlier than 2026-09-03 09:00 | Бобренок В | 1h | 1h |
| 1853 | 3.117 | сделать ручки с резьбой для снятия матрицы экструдера |  | 2h | 2026-07-04 09:00 A | 2026-07-06 11:00 A |  | 100% |  |  |  | start no earlier than 2026-07-04 09:00 | Макаревич А | 2h | 2h |
| 1854 | 3.118 | сделать противоудары головы на циклоне в зоне жиров | manual | 1h | 2026-07-26 09:00 A | 2026-07-26 10:00 A |  | 100% |  |  |  | start no earlier than 2026-07-26 09:00 | Макаревич А | 1h | 1h |
| 1855 | 3.119 | сделать откидную крышку на ножевом узле (расскажу как) |  | 8h | 2026-07-04 09:00 A | 2026-07-06 18:00 A |  | 100% |  |  |  | start no earlier than 2026-07-04 09:00 | Макаревич А | 8h | 8h |
| 1856 | 3.120 | подклинивает охладитель (все ярусы)- разобраться почему |  | 2h | 2026-07-11 09:00 A | 2026-07-13 11:00 A |  | 100% |  |  |  | start no earlier than 2026-07-11 09:00 | Макаревич А | 2h | 2h |
| 1857 | 3.121 | **откалибровать весы красных смесителей, муку с контрольным весом обеспечит 5ц** |  | 2h? | 2026-07-29 09:00 A | 2026-07-29 11:00 |  | 100% |  | 2026-08-03 18:00 |  |  | Дедов В | 10h | 10h |
| 1858 | 3.121.1 | вызвать специалистов |  | 1d? | 2026-08-03 09:00 A | 2026-08-03 18:00 A |  | 100% |  |  |  | start no earlier than 2026-08-03 09:00 | Шуранов Ю | 8h | 8h |
| 1859 | 3.122 | **установка частотника на шнек подачи со смесителей на ногу опоры шнека в разрыв питания шнека** |  | 0.12d | 2026-07-04 09:00 A | 2026-07-06 10:00 A |  | 100% |  |  |  |  |  | 1h | 1h |
| 1860 | 3.122.1 | демонтировать частотник шнека (в слесарку) |  | 1h | 2026-07-04 09:00 A | 2026-07-06 10:00 A |  | 100% |  |  |  | start no earlier than 2026-07-04 09:00 | Дедов В | 1h | 1h |
| 1861 | 3.123 | щель запенить выход из цеха |  | 1d? | 2026-07-02 09:00 A | 2026-07-02 18:00 A |  | 100% |  |  |  | start no earlier than 2026-07-02 09:00 | Олег | 8h | 8h |
| 1862 | 3.124 | силиконим двери прекондиционера (одну эксперимент) |  | 2h | 2026-07-02 09:00 A | 2026-07-02 11:00 A |  | 100% |  |  |  | start no earlier than 2026-07-03 09:00 | Дедов В | 2h | 2h |
| 1863 | 3.125 | наростить лопатку датчика переполнения на приемном лотке прекондиционера |  | 1h | 2026-06-30 09:00 A | 2026-06-30 10:00 A |  | 100% |  |  |  | start no earlier than 2026-06-30 09:00 | Бундин В | 1h | 1h |
| 1864 | 3.126 | установка бака стабилизации на подачу воды в прекондеционер (подключение) |  | 2h | 2026-07-02 09:00 A | 2026-07-02 11:00 A |  | 100% |  |  |  | start no earlier than 2026-07-02 09:00 | Тимофеев В | 2h | 2h |
| 1865 | 3.127 | изготовить фильтры на установки охлаждения |  | 1d? | 2026-07-06 09:00 | 2026-07-06 18:00 |  |  |  |  | 189.59d | start no earlier than 2026-07-06 09:00 | Тимофеев В | 8h |  |
| 1866 | 3.128 | удлинить горловину для второго красного смесителя |  | 2h | 2026-06-29 09:00 A | 2026-06-29 11:00 A |  | 100% |  |  |  | start no earlier than 2026-06-29 09:00 | Бундин В | 2h | 2h |
| 1867 | 3.129 | закрепить датчик сырья лопаткой в горке, под магнитом. Бункер экструдера |  | 4h | 2026-06-27 09:00 A | 2026-06-29 13:00 A |  | 100% |  |  |  | start no earlier than 2026-06-27 09:00 | Бундин В | 4h | 4h |
| 1868 | 3.130 | над магнитом сделать приемную воронку, борта, чтобы не пересыпалось сырье |  | 4h | 2026-06-27 09:00 A | 2026-06-29 13:00 A |  | 100% |  |  |  | start no earlier than 2026-06-27 09:00 | Бундин В | 4h | 4h |
| 1869 | 3.131 | удлинить воронку смесителя до горловины шнека. Приготовить сварщику, обяснить что нужно сделать. Вместо вибратора |  | 4h | 2026-06-27 09:00 A | 2026-06-29 13:00 A |  | 100% |  |  |  | start no earlier than 2026-06-27 09:00 | Дедов В; Бундин В | 8h | 8h |
| 1870 | 3.132 | байпас для масленной станции |  | 2h | 2026-07-01 09:00 A | 2026-07-01 11:00 A |  | 100% |  |  |  | start no earlier than 2026-07-01 09:00 | Тимофеев В | 2h | 2h |
| 1871 | 3.133 | **площадка для операторов для доступа к бункеру, что бы не наступали на краны** |  | 0.12d | 2026-07-02 09:00 A | 2026-07-02 10:00 A |  | 100% |  |  |  |  | Макаревич А; Некрасов А | 4h | 4h |
| 1872 | 3.133.1 | убрать заусенцы болгаркой |  | 1h | 2026-07-02 09:00 A | 2026-07-02 10:00 A |  | 100% |  |  |  | start no earlier than 2026-07-02 09:00 | Макаревич А; Тимофеев В | 2h | 2h |

| ID | WBS | Task | Type | Duration | Start | Finish | Predecessors | Complete | Constraint | Resources | Work | Actual work |
| --- | --- | --- | --- | --- | --- | --- | --- | --- | --- | --- | --- | --- |
| 1873 | 3.134 | **монтаж второй площадки с другой стороны (лестницу берем у 5 цеха -белую)** |  | 0.12d | 2026-07-03 09:00 A | 2026-07-03 10:00 A |  | 100% |  | Макаревич А; Некрасов А | 3h | 3h |
| 1874 | 3.134.1 | покрасить лестницу (мастер ц.1 даст людей- контроль) |  | 1h | 2026-07-03 09:00 A | 2026-07-03 10:00 A |  | 100% | start no earlier than 2026-07-03 09:00 | Макаревич А | 1h | 1h |
| 1875 | 3.135 | закрутить крышку двигателя улитки на циклоне жиров |  | 1h | 2026-06-25 09:00 A | 2026-06-25 10:00 A |  | 100% | start no earlier than 2026-06-25 09:00 | Дедов В | 1h | 1h |
| 1876 | 3.136 | укоротить шланг подачи масла | manual | 1h | 2026-06-25 08:00 A | 2026-06-25 09:00 A |  | 100% | start no earlier than 2026-06-25 08:00 | Макаревич А | 1h | 1h |
| 1877 | 3.137 | проверка подачи воды на парогенератор и прекондиционер, почему клапан подачи в бак заблокирован. |  | 2h | 2026-06-25 09:00 A | 2026-06-25 11:00 A |  | 100% | start no earlier than 2026-06-25 09:00 | Дедов В | 2h | 2h |
| 1878 | 3.138 | проверить парогенератор |  | 0.5h | 2026-06-25 09:00 A | 2026-06-25 09:30 A |  | 100% | start no earlier than 2026-06-25 09:00 | Дедов В | 0.5h | 0.5h |
| 1879 | 3.139 | вскрыть парогенератор, чистка электродов- фото |  | 3h | 2026-06-25 08:00 A | 2026-06-25 12:00 A |  | 100% | start no earlier than 2026-06-25 08:00 | Макаревич А | 3h | 3h |
| 1880 | 3.140 | подключить ролеты на охладителе |  | 1h | 2026-06-25 09:00 A | 2026-06-25 10:00 A |  | 100% | start no earlier than 2026-06-25 09:00 | Дедов В | 1h | 1h |
| 1881 | 3.141 | изготовление и установка шибера в лоток |  | 2h | 2026-06-25 09:00 A | 2026-06-25 11:00 A |  | 100% | start no earlier than 2026-06-25 09:00 | Дедов В | 2h | 2h |
| 1882 | 3.142 | контроль печи, будет включена пока не перестанет дымить |  | 1h | 2026-06-24 09:00 A | 2026-06-24 10:00 A |  | 100% | start no earlier than 2026-06-24 09:00 | Труфанов А; Макаревич А | 2h | 2h |
| 1883 | 3.143 | **взять на складе у Веры кронштейн под щетку, закрепить на него саму щетку и прикрутить на мезонине навесок в сторону ворот** |  | 28.38d | 2026-07-07 09:00 A | 2026-08-14 12:00 A |  | 100% |  |  | 3.5h | 3.5h |
| 1884 | 3.143.1 | заказать профиль 5мм |  | 15min | 2026-07-07 09:00 A | 2026-07-07 09:15 A |  | 100% | start no earlier than 2026-07-07 09:00 | Зорькин В | 0.25h | 0.25h |
| 1885 | 3.143.2 | контроль досставки |  | 15min | 2026-07-17 09:15 A | 2026-07-17 09:30 A | 1884FS+10d | 100% | start no earlier than 2026-07-07 09:00 | Зорькин В | 0.25h | 0.25h |
| 1886 | 3.143.3 | прикрепить на клепки/ саморезу щетку и установить на мезонине где ворота (все это находиться в 3 ц. справа на входе) Еще одна щетка есть у веры на складе, висела на кабинке | manual | 3h | 2026-08-14 09:00 A | 2026-08-14 12:00 A | 1885 | 100% |  | Макаревич А | 3h | 3h |
| 1887 | 3.144 | кабель трется о дверь, уложить в лоток, приподнять -закрепить к воздуховоду |  | 3h | 2026-06-24 09:00 A | 2026-06-24 12:00 A |  | 100% | start no earlier than 2026-06-24 09:00 | Труфанов А | 3h | 3h |
| 1888 | 3.145 | на частотнике пневмоулитки на жирах- увеличить время разгона и торможения |  | 1h | 2026-06-23 09:00 A | 2026-06-23 10:00 A |  | 100% | start no earlier than 2026-06-23 09:00 | Труфанов А | 1h | 1h |
| 1889 | 3.146 | проверить редукторы на печи (утечка есть или нет) |  | 1h | 2026-06-23 09:00 A | 2026-06-23 10:00 A |  | 100% | start no earlier than 2026-06-23 09:00 | Труфанов А | 1h | 1h |
| 1890 | 3.147 | убрать трубу нерж в коридоре возле охладителя в комнату на выходе из цеха | manual | 1h | 2026-06-20 09:00 A | 2026-06-20 10:00 A |  | 100% | start no earlier than 2026-06-20 09:00 | Бундин В | 1h | 1h |
| 1891 | 3.148 | капает с улитки вытяжки печи- просверлить сверло 6мм |  | 1h | 2026-06-20 09:00 A | 2026-06-22 10:00 A |  | 100% | start no earlier than 2026-06-20 09:00 | Дедов В | 1h | 1h |
| 1892 | 3.149 | герметизация всех стыков вневмотрубы аллюминевым скотчем (улитка с печи на жиры) | manual | 1h | 2026-06-21 09:00 A | 2026-06-21 10:00 A |  | 100% | start no earlier than 2026-06-21 09:00 | Труфанов А | 1h | 1h |
| 1893 | 3.150 | отпилить одну перекладину опоры вентиляции, чтобы открывалась дверь печи | manual | 3h | 2026-06-21 09:00 A | 2026-06-21 12:00 A |  | 100% | start no earlier than 2026-06-21 09:00 | Бундин В | 3h | 3h |
| 1894 | 3.151 | проверка подачи воды в прекондиционер | manual | 1h | 2026-06-21 09:00 A | 2026-06-21 10:00 A |  | 100% | start no earlier than 2026-06-21 09:00 | Труфанов А | 1h | 1h |
| 1895 | 3.152 | включаем печь, прожигаем масло- чтобы вагорело и не дымило… контроль |  | 1h | 2026-06-23 09:00 A | 2026-06-23 10:00 A |  | 100% | start no earlier than 2026-06-23 09:00 | Шуранов Ю | 1h | 1h |
| 1896 | 3.153 | прикрутить горловину прекондиционера (находиться в комнате на выходе из цеха) | manual | 1h | 2026-06-20 09:00 A | 2026-06-20 10:00 A |  | 100% | start no earlier than 2026-06-20 09:00 | Бундин В | 1h | 1h |
| 1897 | 3.154 | на 1 и 2 зоне температура растет больше факта- проверить |  | 1h | 2026-06-23 09:00 A | 2026-06-23 10:00 A |  | 100% | start no earlier than 2026-06-23 09:00 | Труфанов А | 1h | 1h |
| 1898 | 3.155 | собрать парогенератор (насос+ вход вода в парик) |  | 1h | 2026-06-19 09:00 A | 2026-06-19 10:00 A |  | 100% | start no earlier than 2026-06-19 09:00 | Дедов В | 1h | 1h |
| 1899 | 3.156 | увеличить частоту на пневмоулитку с печи в жиры |  | 1h | 2026-06-19 09:00 A | 2026-06-19 10:00 A |  | 100% | start no earlier than 2026-06-19 09:00 | Дедов В | 1h | 1h |
| 1900 | 3.157 | трубу жиротопки утеплить |  | 2h | 2026-06-18 09:00 A | 2026-06-18 11:00 A |  | 100% | start no earlier than 2026-06-18 08:00 | Труфанов А | 2h | 2h |
| 1901 | 3.158 | установка смесителя душа 2 этаж продолжить |  | 4h | 2026-07-07 09:00 A | 2026-07-07 13:00 A |  | 100% | start no earlier than 2026-07-07 09:00 | Бундин В | 4h | 4h |
| 1902 | 3.159 | на прекондеционере настроить премыкание на всех дверцах | manual | 3h | 2026-06-21 09:00 A | 2026-06-21 12:00 A |  | 100% | start no earlier than 2026-06-21 09:00 | Труфанов А | 3h | 3h |
| 1903 | 3.160 | обрезить шпильки, которые торчат, на воздуховодах вентиляции (зона навесок и жиров) |  | 2h | 2026-06-18 09:00 A | 2026-06-18 11:00 A |  | 100% | start no earlier than 2026-06-18 08:00 | Труфанов А | 2h | 2h |

| ID | WBS | Task | Type | Duration | Start | Finish | Predecessors | Complete | Constraint | Resources | Work | Actual work |
| --- | --- | --- | --- | --- | --- | --- | --- | --- | --- | --- | --- | --- |
| 1904 | 3.161 | **модернизация схема ШУ жиротопки - отключается циркуляц насос при достжении температуры** |  | 5.5d | 2026-06-07 09:00 A | 2026-06-15 13:00 A |  | 100% |  |  | 5h | 5h |
| 1905 | 3.161.1 | изучить схему, согласовать предложения модернизации |  | 1h | 2026-06-07 09:00 A | 2026-06-08 10:00 A |  | 100% | start no earlier than 2026-06-07 09:00 | Дедов В | 1h | 1h |
| 1906 | 3.161.2 | реализации модернизации |  | 4h | 2026-06-15 09:00 A | 2026-06-15 13:00 A | 1905 | 100% | start no earlier than 2026-06-15 09:00 | Дедов В | 4h | 4h |
| 1907 | 3.162 | **сборка квадропак с системой дозации** |  | 56.5d | 2026-06-18 09:00 A | 2026-09-04 13:00 A |  | 100% |  |  | 67h | 67h |
| 1908 | 3.162.1 | сборка нория |  | 8h | 2026-07-17 09:00 A | 2026-07-17 18:00 A |  | 100% | start no earlier than 2026-07-17 09:00 | Некрасов А; Тимофеев В | 15h | 15h |
| 1909 | 3.162.2 | сборка площадка |  | 4h | 2026-07-20 09:00 A | 2026-07-20 13:00 A | 1908 | 100% | start no earlier than 2026-07-09 08:00 | Некрасов А; Тимофеев В | 8h | 8h |
| 1910 | 3.162.3 | монтаж весы |  | 4h | 2026-07-20 14:00 A | 2026-07-20 18:00 A | 1909 | 100% | start no earlier than 2026-07-09 08:00 | Некрасов А; Тимофеев В | 8h | 8h |
| 1911 | 3.162.4 | подключить квадропак / пусконаладка |  | 4h | 2026-09-04 09:00 A | 2026-09-04 13:00 A |  | 100% | start no earlier than 2026-09-04 09:00 | Зорькин В; Труфанов А | 8h | 8h |
| 1912 | 3.162.5 | разгрузка / распаковка |  | 1h | 2026-06-18 09:00 A | 2026-06-18 10:00 A |  | 100% | start no earlier than 2026-06-18 09:00 | Некрасов А; Тимофеев В | 1h | 1h |
| 1913 | 3.162.6 | сборка рама в 1ц над столом выгрузки пакетов. Примерка/доработка рамы по месту |  | 4h | 2026-07-09 09:00 A | 2026-07-09 13:00 A |  | 100% | start no earlier than 2026-07-09 09:00 | Некрасов А; Макаревич А; Тимофеев В | 11h | 11h |
| 1914 | 3.162.7 | сборка дозатор |  | 4h | 2026-07-09 09:00 A | 2026-07-09 13:00 A |  | 100% | start no earlier than 2026-07-09 09:00 | Зорькин В; Макаревич А; Некрасов А; Тимофеев В | 16h | 16h |
| 1915 | 3.163 | устранить заусенцы пол площадки жиротопки. Рвет тряпку уборщица. |  | 4h | 2026-05-31 09:00 A | 2026-06-01 13:00 A |  | 100% | start no earlier than 2026-05-31 09:00 | Макаревич А | 4h | 4h |
| 1916 | 3.164 | **востановить насос циркуляция воды на жиротопке** |  | 8.32d | 2026-06-06 09:00 A | 2026-06-18 11:35 A |  | 100% |  |  | 3.58h | 3.58h |
| 1917 | 3.164.1 | разборка насос / выяснить причину заклинивания |  | 1h | 2026-06-06 09:00 A | 2026-06-08 10:00 A |  | 100% | start no earlier than 2026-06-06 09:00 | Бундин В | 1h | 1h |
| 1918 | 3.164.2 | заявка аналог |  | 20min | 2026-06-08 09:00 A | 2026-06-08 09:20 A | 1917 | 100% | start no earlier than 2026-06-08 09:00 | Шуранов Ю | 0.33h | 0.33h |
| 1919 | 3.164.3 | контроль доставка |  | 15min | 2026-06-17 09:20 A | 2026-06-17 09:35 A | 1918FS+7d | 100% | start no earlier than 2026-06-05 08:00 | Шуранов Ю | 0.25h | 0.25h |
| 1920 | 3.164.4 | замена |  | 2h | 2026-06-18 09:35 A | 2026-06-18 11:35 A | 1919FS+1d | 100% | start no earlier than 2026-06-05 08:00 | Тимофеев В | 2h | 2h |
| 1921 | 3.165 | **жиротопка** |  | 9.5d | 2026-06-09 09:00 A | 2026-06-22 13:00 A |  | 100% |  |  | 9h | 9h |
| 1922 | 3.165.1 | (проверить двигатель и сам насос) |  | 1h | 2026-06-09 09:00 A | 2026-06-09 10:00 A |  | 100% | start no earlier than 2026-06-09 09:00 | Тимофеев В | 1h | 1h |
| 1923 | 3.165.2 | ремонт заклинившего насоса жиров (сняли сегодя голову ) |  | 1h | 2026-06-18 09:00 A | 2026-06-18 10:00 A | 1922 | 100% | start no earlier than 2026-06-18 09:00 | Труфанов А | 1h | 1h |
| 1924 | 3.165.3 | установить насос, который перебрал Труфанов поставить на штатное место / если не заработает ставим новый | manual | 1h | 2026-06-21 09:00 A | 2026-06-21 10:00 A | 1923 | 100% | start no earlier than 2026-06-21 09:00 | Бундин В | 1h | 1h |
| 1925 | 3.165.4 | восстановить работу пускателя на насос перекачки с бака в бак |  | 4h | 2026-06-20 09:00 A | 2026-06-22 13:00 A |  | 100% | start no earlier than 2026-06-20 09:00 | Дедов В | 4h | 4h |
| 1926 | 3.165.5 | подключить все шланги подачи жира в баки | manual | 2h | 2026-06-22 09:00 A | 2026-06-22 11:00 A |  | 100% | start no earlier than 2026-06-22 09:00 | Труфанов А | 2h | 2h |
| 1927 | 3.166 | **трасса нерж жиротопка- баки, найти утечки устранить** |  | 0.75d | 2026-05-23 09:00 A | 2026-05-25 16:00 A |  | 100% |  |  | 6h | 6h |
| 1928 | 3.166.1 | заварить места утечки и восстановить утеплитель + греющий кабель |  | 6h | 2026-05-23 09:00 A | 2026-05-25 16:00 A |  | 100% | start no earlier than 2026-05-23 09:00 | Макаревич А | 6h | 6h |

| ID | WBS | Task | Duration | Start | Finish | Predecessors | Complete | Actual start | Actual finish | Constraint | Resources | Work | Actual work |
| --- | --- | --- | --- | --- | --- | --- | --- | --- | --- | --- | --- | --- | --- |
| 1929 | 3.167 | **защита ворот на мезонине загрузки** | 8h? | 2026-05-22 09:00 | 2026-05-22 18:00 |  | 100% | 2026-05-29 09:00 | 2026-08-13 13:00 |  |  | 27h | 27h |
| 1930 | 3.167.1 | покрасить конструкцию | 2h | 2026-05-31 09:00 A | 2026-06-01 11:00 A |  | 100% |  |  | start no earlier than 2026-05-31 09:00 | Макаревич А | 2h | 2h |
| 1931 | 3.167.2 | приварить дополнительную перекладину на защиту воротины | 2h | 2026-07-07 09:00 A | 2026-07-07 11:00 A |  | 100% |  |  | start no earlier than 2026-07-07 09:00 | Труфанов А; Тимофеев В | 4h | 4h |
| 1932 | 3.167.3 | заказать щетку и битумную ленту | 1h | 2026-05-31 11:00 A | 2026-06-01 10:00 A | 1930 | 100% |  |  | start no earlier than 2026-05-22 09:00 | Шуранов Ю | 1h | 1h |
| 1933 | 3.167.4 | контроль доставки | 1d? | 2026-05-31 12:00 A | 2026-06-01 18:00 A | 1932 | 100% |  |  | start no earlier than 2026-05-29 09:00 | Шуранов Ю | 8h | 8h |
| 1934 | 3.167.5 | установка щетки | 4h | 2026-08-13 09:00 A | 2026-08-13 13:00 A |  | 100% |  |  | start no earlier than 2026-08-13 09:00 | Макаревич А | 4h | 4h |
| 1935 | 3.167.6 | монтаж | 1d? | 2026-05-29 09:00 A | 2026-05-29 18:00 A |  | 100% |  |  | start no earlier than 2026-05-29 09:00 | Некрасов А | 8h | 8h |
| 1936 | 3.168 | установить щетку на поломоечную машину (щетка на складе) | 2h | 2026-05-21 09:00 A | 2026-05-21 11:00 A |  | 100% |  |  | start no earlier than 2026-05-21 08:00 | Бундин В | 2h | 2h |
| 1937 | 3.169 | площадка мезонина зона фасовки- убрать щели профиля битумной лентой | 2h | 2026-05-21 09:00 A | 2026-05-21 11:00 A |  | 100% |  |  | start no earlier than 2026-05-21 09:00 | Бундин В | 2h | 2h |
| 1938 | 3.170 | прикрутить дюзы форсунок подачи воды в прекондиционер, взять у меня на столе. | 1h | 2026-05-22 09:00 A | 2026-05-22 10:00 A |  | 100% |  |  | start no earlier than 2026-05-22 09:00 | Тимофеев В | 1h | 1h |
| 1939 | 3.171 | проверить насос подачи жира со 2 бака на барабаны, Викторович его разобрал | 2h | 2026-05-19 08:00 A | 2026-05-19 11:00 A |  | 100% |  |  | start no earlier than 2026-05-19 08:00 | Дедов В | 2h | 2h |
| 1940 | 3.172 | проверить рабочий или нет циркуляционный насос для змеевика на жиротопке | 1h | 2026-05-19 08:00 A | 2026-05-19 10:00 A |  | 100% |  |  | start no earlier than 2026-05-19 08:00 | Дедов В | 1h | 1h |
| 1941 | 3.173 | проверка оборудования на жирах водой | 3h | 2026-05-19 09:00 A | 2026-05-19 12:00 A |  | 100% |  |  | start no earlier than 2026-05-20 09:00 | Тимофеев В | 3h | 3h |
| 1942 | 3.174 | покраска пол под лотком барабан-охладитель | 1h | 2026-05-15 09:00 A | 2026-05-15 10:00 A |  | 100% |  |  | start no earlier than 2026-05-15 09:00 | Бобренок В | 1h | 1h |
| 1943 | 3.175 | **ремонт ворот рольставня** | 4.12d | 2026-05-14 09:00 A | 2026-05-20 10:00 A |  | 100% |  |  |  |  | 2h | 2h |
| 1944 | 3.175.1 | вызывать сервис | 1h | 2026-05-14 09:00 A | 2026-05-14 10:00 A |  | 100% |  |  | start no earlier than 2026-05-14 09:00 | Зорькин В | 1h | 1h |
| 1945 | 3.175.2 | контроль работ | 1h | 2026-05-20 09:00 A | 2026-05-20 10:00 A |  | 100% |  |  | start no earlier than 2026-05-20 09:00 | Зорькин В | 1h | 1h |
| 1946 | 3.176 | вырезать косая пластина в воронку пневмотранспорта на подачу жиров | 2h | 2026-05-14 09:00 A | 2026-05-14 11:00 A |  | 100% |  |  | start no earlier than 2026-05-14 09:00 | Макаревич А | 2h | 2h |
| 1947 | 3.177 | убрать бороду от вентиляторов | 4h | 2026-05-12 09:00 A | 2026-05-12 13:00 A |  | 100% |  |  | start no earlier than 2026-05-12 09:00 | Некрасов А; Труфанов А | 8h | 8h |
| 1948 | 3.178 | монтаж кабель управления заслонками вентиляторы окно | 4h | 2026-05-20 09:00 A | 2026-05-20 13:00 A |  | 100% |  |  | start no earlier than 2026-05-22 09:00 | Некрасов А; Бундин В | 8h | 8h |
| 1949 | 3.179 | **автоматика управления смесителями** | 80.38d | 2026-05-04 09:00 A | 2026-08-24 12:00 A |  | 100% |  |  |  |  | 35h | 35h |
| 1950 | 3.179.1 | поменять местами переключатели управления смесителями левый что бы включал поперечный смеситель | 2h | 2026-07-12 09:00 A | 2026-07-13 11:00 A |  | 100% |  |  | start no earlier than 2026-07-12 09:00 | Дедов В | 2h | 2h |
| 1951 | 3.179.2 | сделать подключение красных смесителей по схеме Домоводова | 22h | 2026-05-18 09:00 A | 2026-05-20 16:00 A |  | 100% |  |  | start no earlier than 2026-05-19 09:00 | Дедов В | 22h | 22h |
| 1952 | 3.179.3 | доработка схемы управления смесителями по логике ТЗ, упорядочить монтаж, промаркировать соденения | 8h | 2026-05-04 09:00 A | 2026-05-04 18:00 A |  | 100% |  |  | start no earlier than 2026-05-04 09:00 | Дедов В | 8h | 8h |
| 1953 | 3.179.4 | уложить красиво все провода в шкафу управления смесителями | 3h | 2026-08-24 09:00 A | 2026-08-24 12:00 A |  | 100% |  |  | start no earlier than 2026-08-24 09:00 | Дедов В | 3h | 3h |

| ID | WBS | Task | Type | Duration | Start | Finish | Predecessors | Complete | Constraint | Resources | Work | Actual work |
| --- | --- | --- | --- | --- | --- | --- | --- | --- | --- | --- | --- | --- |
| 1954 | 3.180 | **установить воздуховод на 300мм на красные смесители** |  | 6.25d | 2026-05-08 08:00 A | 2026-05-18 11:00 A |  | 100% |  |  | 4h | 4h |
| 1955 | 3.180.1 | заказать другой диаметр | milestone | 0d | 2026-05-08 08:00 A | 2026-05-08 08:00 A |  | 100% | start no earlier than 2026-05-08 08:00 | Зорькин В |  |  |
| 1956 | 3.180.2 | установить ф300 | milestone | 0h | 2026-05-13 09:00 A | 2026-05-13 09:00 A |  | 100% | start no earlier than 2026-05-13 09:00 | Тимофеев В; Зорькин В |  |  |
| 1957 | 3.180.3 | красные смесители вернуть воздуховоды (доработать рукав пересыпки воронка-смеситель) |  | 2h | 2026-05-13 09:00 A | 2026-05-13 11:00 A |  | 100% | start no earlier than 2026-05-13 09:00 | Тимофеев В | 2h | 2h |
| 1958 | 3.180.4 | сборка рукав на второй смеситель. Сшить по образцу |  | 2h | 2026-05-18 09:00 A | 2026-05-18 11:00 A |  | 100% | start no earlier than 2026-05-18 09:00 | Тимофеев В | 2h | 2h |
| 1959 | 3.181 | проверить почему не запускается приточная вентиляция в вент. Камере 7,5кВт |  | 1h | 2026-04-29 08:00 A | 2026-04-29 10:00 A |  | 100% | start no earlier than 2026-04-29 08:00 | Дедов В | 1h | 1h |
| 1960 | 3.182 | прозвонить кнопку индикации водителя под сиденьем (позвони объясню) |  | 2h | 2026-04-15 09:00 A | 2026-04-15 11:00 A |  | 100% | start no earlier than 2026-04-15 08:00 | Бундин В | 2h | 2h |
| 1961 | 3.183 | проверить приход с Китая по шнекам и гильзам |  | 1h | 2026-04-09 09:00 A | 2026-04-09 10:00 A |  | 100% | start no earlier than 2026-04-09 08:00 | Шуранов Ю | 1h | 1h |
| 1962 | 3.184 | собрать и установить мойку (со старой прикрутить смеситель) мойка у Веры на складе на 2 верхнем ярусе стеллажей | manual | 2h | 2026-04-05 09:00 A | 2026-04-05 11:00 A |  | 100% | start no earlier than 2026-04-05 09:00 | Труфанов А | 2h | 2h |
| 1963 | 3.185 | вывоз 3 поддона с мусором |  | 30min | 2026-03-24 09:00 A | 2026-03-24 09:30 A |  | 100% | start no earlier than 2026-03-24 09:00 | Некрасов А; Труфанов А | 1h | 1h |
| 1964 | 3.186 | установить отбойники на стеллажи | manual | 8h | 2026-03-29 09:00 A | 2026-03-29 18:00 A |  | 100% | start no earlier than 2026-03-29 09:00 | Бундин В | 8h | 8h |
| 1965 | 3.187 | установить отбойники на стеллажи | manual | 6h | 2026-04-18 09:00 A | 2026-04-18 16:00 A |  | 100% | start no earlier than 2026-04-18 09:00 | Бобренок В | 6h | 6h |
| 1966 | 3.188 | уборка зона курилка / венткамера |  | 4h | 2026-03-17 09:00 A | 2026-03-17 13:00 A |  | 100% | start no earlier than 2026-03-17 09:00 | Тимофеев В; Некрасов А; Макаревич А; Труфанов А | 16h | 16h |
| 1967 | 3.189 | **сборка квадропак** |  | 13.25d | 2026-05-06 09:00 A | 2026-05-25 11:00 A |  | 100% |  |  | 14h | 14h |
| 1968 | 3.189.1 | подвести воздух к квадропаку |  | 4h | 2026-05-22 09:00 A | 2026-05-22 13:00 A |  | 100% | start no earlier than 2026-05-22 09:00 | Тимофеев В | 4h | 4h |
| 1969 | 3.189.2 | установить перед пневмораспределителями влагоотделитель |  | 2h | 2026-05-24 09:00 A | 2026-05-25 11:00 A |  | 100% | start no earlier than 2026-05-24 09:00 | Дедов В | 2h | 2h |
| 1970 | 3.189.3 | подключить квадропак к щитку кабель 5х2,5 |  | 4h | 2026-05-06 09:00 A | 2026-05-06 13:00 A |  | 100% | start no earlier than 2026-05-06 09:00 | Труфанов А; Тимофеев В | 8h | 8h |
| 1971 | 3.190 | крепление магистрали компрессора. Зона дрожировки |  | 1h | 2026-03-08 09:00 A | 2026-03-09 10:00 A |  | 100% | start no earlier than 2026-03-08 09:00 | Бундин В | 1h | 1h |
| 1972 | 3.191 | Собрать транспортер тип2 (уточнить у Шуранова)/ доделать |  | 3h | 2026-03-08 09:00 A | 2026-03-09 12:00 A |  | 100% | start no earlier than 2026-03-08 09:00 | Бобренок В | 3h | 3h |
| 1973 | 3.192 | **Покраска лестницы** |  | 43d | 2026-03-04 09:00 A | 2026-05-01 18:00 A |  | 100% |  |  | 116.33h | 116.33h |
| 1974 | 3.192.1 | Заявка на краску |  | 20min | 2026-03-04 09:00 A | 2026-03-04 09:20 A |  | 100% | start no earlier than 2026-03-04 09:00 | Зорькин В | 0.33h | 0.33h |
| 1975 | 3.192.2 | Доставка |  | 10d | 2026-03-04 09:20 A | 2026-03-18 09:20 A | 1974 | 100% | start no earlier than 2026-03-03 08:00 | Карабанов | 80h | 80h |
| 1976 | 3.192.3 | Работа по покраске |  | 6h | 2026-04-28 09:00 A | 2026-04-28 16:00 A | 1975 | 100% | start no earlier than 2026-04-28 09:00 | оперторы2; Олег | 12h | 12h |
| 1977 | 3.192.4 | покраска колонны в коридоре |  | 4h | 2026-04-28 09:00 A | 2026-04-28 13:00 A |  | 100% | start no earlier than 2026-04-28 08:00 | оперторы2; Олег | 8h | 8h |
| 1978 | 3.192.5 | покарска потолок в корридоре |  | 2d | 2026-04-30 09:00 A | 2026-05-01 18:00 A |  | 100% | start no earlier than 2026-04-30 09:00 | оператор2 | 16h | 16h |

| ID | WBS | Task | Duration | Start | Finish | Predecessors | Complete | Actual start | Actual finish | Total slack | Constraint | Resources | Work | Actual work |
| --- | --- | --- | --- | --- | --- | --- | --- | --- | --- | --- | --- | --- | --- | --- |
| 1979 | 3.193 | **доработка лотка барабан-охладитель - снизить скорость падения, установить сетку** | 1.5d? | 2026-04-14 09:00 | 2026-04-15 13:00 |  | 100% | 2026-05-13 09:00 | 2026-06-17 18:00 |  |  |  | 46.75h | 46.75h |
| 1980 | 3.193.1 | сборка кронштейны + стека | 5h | 2026-05-13 09:00 A | 2026-05-13 15:00 A |  | 100% |  |  |  | start no earlier than 2026-05-13 09:00 | Труфанов А; Некрасов А | 10h | 10h |
| 1981 | 3.193.2 | сборка ручки, установка. Фотоотчет | 2h | 2026-05-15 09:00 A | 2026-05-15 11:00 A |  | 100% |  |  |  | start no earlier than 2026-05-15 09:00 | Некрасов А; Труфанов А | 4h | 4h |
| 1982 | 3.193.3 | сборка вращающаяся заслонка | 4h | 2026-05-15 11:00 A | 2026-05-15 16:00 A | 1981 | 100% |  |  |  | start no earlier than 2026-05-15 09:00 | Некрасов А; Труфанов А | 8h | 8h |
| 1983 | 3.193.4 | доработка пластины, что бы не клинила | 1h | 2026-05-21 09:00 A | 2026-05-21 10:00 A |  | 100% |  |  |  | start no earlier than 2026-05-22 09:00 | Некрасов А; Бундин В | 2h | 2h |
| 1984 | 3.193.5 | заказ на лазере пластину для регулировки шибера | 1d? | 2026-05-25 09:00 A | 2026-05-25 18:00 A |  | 100% |  |  |  | start no earlier than 2026-05-25 09:00 | Зорькин В | 8h | 8h |
| 1985 | 3.193.6 | чертеж пластина фиксации рычага | 2h | 2026-05-19 09:00 A | 2026-05-19 11:00 A | 1982 | 100% |  |  |  | start no earlier than 2026-05-19 09:00 | Зорькин В | 2h | 2h |
| 1986 | 3.193.7 | заявка на изготвление на лазер | 15min | 2026-05-20 11:00 A | 2026-05-20 11:15 A | 1985FS+1d | 100% |  |  |  | start no earlier than 2026-05-15 08:00 | Зорькин В | 0.25h | 0.25h |
| 1987 | 3.193.8 | контроль изг | 15min | 2026-06-01 09:00 A | 2026-06-01 09:15 A | 1986FS+5d | 100% |  |  |  | start no earlier than 2026-06-01 09:00 | Зорькин В | 0.25h | 0.25h |
| 1988 | 3.193.9 | доставка орг | 15min | 2026-06-05 09:00 A | 2026-06-05 09:15 A | 1987FS+1d | 100% |  |  |  | start no earlier than 2026-06-05 09:00 | Зорькин В | 0.25h | 0.25h |
| 1989 | 3.193.10 | сборка рычага | 4h | 2026-06-08 09:15 A | 2026-06-08 14:15 A | 1988FS+1d | 100% |  |  |  | start no earlier than 2026-06-06 09:00 | Бундин В | 4h | 4h |
| 1990 | 3.193.11 | сделать напраляшку на шибере регулируемую- сыпит в одну сторону | 1d? | 2026-06-17 09:00 A | 2026-06-17 18:00 A |  | 100% |  |  |  | start no earlier than 2026-06-23 09:00 | Тимофеев В | 8h | 8h |
| 1991 | 3.194 | сборка система отопления 2 этаж | 1d? | 2026-06-15 09:00 | 2026-06-15 18:00 |  |  |  |  | 204.59d | start no earlier than 2026-06-15 09:00 | Труфанов А; Некрасов А; Олег | 24h |  |
| 1992 | 3.195 | **заменить сопряжение смесителей на гибк вставку** | 29.25d | 2026-03-19 09:00 A | 2026-04-29 11:00 A |  | 100% |  |  |  |  |  | 122.5h | 122.5h |
| 1993 | 3.195.1 | заявка | 30min | 2026-03-19 09:00 A | 2026-03-19 09:30 A |  | 100% |  |  |  | start no earlier than 2026-03-19 09:00 | Зорькин В | 0.5h | 0.5h |
| 1994 | 3.195.2 | доставка | 15d | 2026-03-19 09:30 A | 2026-04-09 09:30 A | 1993 | 100% |  |  |  | start no earlier than 2026-02-27 08:00 | Карабанов | 120h | 120h |
| 1995 | 3.195.3 | замена | 2h | 2026-04-29 09:00 A | 2026-04-29 11:00 A | 1994 | 100% |  |  |  | start no earlier than 2026-04-29 09:00 | Тимофеев В | 2h | 2h |
| 1996 | 3.196 | **приточная вентиляция** | 154.25d | 2026-03-06 09:00 A | 2026-09-29 11:00 A |  | 100% |  |  |  |  |  | 13.5h | 13.5h |
| 1997 | 3.196.1 | визит Евгения. Контроль монтажа | 30min | 2026-03-06 09:00 A | 2026-03-06 09:30 A |  | 100% |  |  |  | start no earlier than 2026-03-06 09:00 | Домоводов К | 0.5h | 0.5h |
| 1998 | 3.196.2 | подключить силовой кабель в ШУ (лежит в лотке) | 3h | 2026-03-13 09:00 A | 2026-03-13 12:00 A |  | 100% |  |  |  | start no earlier than 2026-03-13 09:00 | Подрядчик | 3h | 3h |
| 1999 | 3.196.3 | монтаж изоляционных прокладок вводный автомат между фазами | 2h | 2026-09-24 09:00 A | 2026-09-24 11:00 A |  | 100% |  |  |  | start no earlier than 2026-09-24 09:00 | Дедов В | 2h | 2h |
| 2000 | 3.196.4 | подключить нулевой провод шкаф управления | 2h | 2026-09-24 09:00 A | 2026-09-24 11:00 A |  | 100% |  |  |  | start no earlier than 2026-09-24 09:00 | Дедов В | 2h | 2h |
| 2001 | 3.196.5 | монтаж перемычек от автомата на ТВ реле . Звонить Дедову | 2h | 2026-09-24 09:00 A | 2026-09-24 11:00 A |  | 100% |  |  |  | start no earlier than 2026-09-24 09:00 | Дедов В | 2h | 2h |
| 2002 | 3.196.6 | замена схемы включения вентилятор вытяжка / приточка | 2h | 2026-05-04 09:00 A | 2026-05-04 11:00 A |  | 100% |  |  |  | start no earlier than 2026-05-04 09:00 | Дедов В | 2h | 2h |
| 2003 | 3.196.7 | проверить все подключения / тест | 2h | 2026-09-29 09:00 A | 2026-09-29 11:00 A |  | 100% |  |  |  | start no earlier than 2026-09-29 09:00 | Дедов В | 2h | 2h |
| 2004 | 3.197 | установить гидроаккумулятор | 2h | 2026-03-03 09:00 A | 2026-03-03 11:00 A |  | 100% |  |  |  | start no earlier than 2026-03-03 09:00 | Тимофеев В | 2h | 2h |
| 2005 | 3.198 | тест герметичности. жиропровод нерж оборудовать греющим кабелем + утеплитель. | 2h | 2026-06-01 09:00 A | 2026-06-01 11:00 A |  | 100% |  |  |  | start no earlier than 2026-05-31 09:00 | Макаревич А | 2h | 2h |

| ID | WBS | Task | Type | Duration | Start | Finish | Complete | Actual finish | Total slack | Constraint | Resources | Work | Actual work |
| --- | --- | --- | --- | --- | --- | --- | --- | --- | --- | --- | --- | --- | --- |
| 2006 | 3.199 | **установить перила площадка загрузки навески** |  | 0.25d | 2026-05-27 09:00 A | 2026-05-27 11:00 A | 100% |  |  |  |  | 2h | 2h |
| 2007 | 3.199.1 | покрасить перила |  | 2h | 2026-05-27 09:00 A | 2026-05-27 11:00 A | 100% |  |  | start no earlier than 2026-05-27 09:00 | оператор2 | 2h | 2h |
| 2008 | 3.200 | дорабать качелю безопасности на площадке загрузки навески что бы не задевала за вентиляцию |  | 2h | 2026-05-12 09:00 A | 2026-05-12 11:00 A | 100% |  |  | start no earlier than 2026-05-12 09:00 | Некрасов А | 2h | 2h |
| 2009 | 3.201 | подготовить отражатели тепла на подшипники печи линия 4 |  | 8h | 2025-09-01 09:00 | 2025-09-01 18:00 |  |  | 409.59d | start no earlier than 2025-08-30 09:00 | Тимофеев В | 8h |  |
| 2010 | 3.202 | усилить раму прекондиционера |  | 1d? | 2026-04-28 08:00 A | 2026-04-28 18:00 A | 100% |  |  | start no earlier than 2026-04-28 08:00 | Тимофеев В | 8h | 8h |
| 2011 | 3.203 | переместить магнит загрузки сырья |  | 2h | 2026-05-07 09:00 A | 2026-05-07 11:00 A | 100% |  |  | start no earlier than 2026-05-07 09:00 | Тимофеев В | 2h | 2h |
| 2012 | 3.204 | труба выход пара греет шнек - переместить |  | 1d? | 2026-06-19 09:00 A | 2026-06-19 18:00 A | 100% |  |  | start no earlier than 2026-06-19 09:00 | Тимофеев В | 8h | 8h |
| 2013 | 3.205 | герметизация примыкание на выходе из печи |  | 2d | 2026-05-18 09:00 A | 2026-05-19 18:00 A | 100% |  |  | start no earlier than 2026-05-18 09:00 | Олег | 16h | 16h |
| 2014 | 3.206 | обшить стены курилки |  | 2d | 2026-04-30 09:00 A | 2026-05-01 18:00 A | 100% |  |  | start no earlier than 2026-04-30 09:00 | Олег; Некрасов А | 32h | 32h |
| 2015 | 3.207 | покраска рамы воздуховодов уличные |  | 4h | 2026-05-27 09:00 | 2026-05-27 13:00 |  |  | 218.09d | start no earlier than 2026-05-27 09:00 | оператор2 | 4h |  |
| 2016 | 3.208 | Выяснить количество теплопотерь с печи на входе |  | 1h | 2026-08-28 09:00 | 2026-08-28 10:00 |  |  | 151.47d | start no earlier than 2026-08-28 09:00 | Зорькин В; Бобренок В | 2h |  |
| 2017 | 3.209 | Переделка входа пневмотрассы с печи на жиры, сделать плавный переход из двух углов по 45 |  | 4h | 2026-07-24 09:00 A | 2026-07-24 13:00 A | 100% |  |  | start no earlier than 2026-07-24 09:00 | Бундин В | 4h | 4h |
| 2018 | 3.210 | **Печь** |  | 0d | 2026-07-25 09:00 A | 2026-07-26 11:00 A | 100% |  |  |  |  | 6h | 6h |
| 2019 | 3.210.1 | Переделка входа пневмотрассы с печи на жиры, сделать плавный переход из двух углов по 45, закончить если Валентин не доделал или взять в работу если Валентин не начал. Уточнить у него как он хотел сделать. | manual | 4h | 2026-07-25 09:00 A | 2026-07-25 13:00 A | 100% |  |  | start no earlier than 2026-07-25 09:00 | Макаревич А | 4h | 4h |
| 2020 | 3.210.2 | 4 зона шкаф управления не набирает заданную температуру, выяснить причину/устранить | manual | 2h | 2026-07-26 09:00 A | 2026-07-26 11:00 A | 100% |  |  | start no earlier than 2026-07-26 09:00 | Бобренок В | 2h | 2h |
| 2021 | 3.211 | **розетки** |  | 0.25d | 2026-07-25 09:00 A | 2026-07-27 11:00 A | 100% |  |  |  |  | 6h | 6h |
| 2022 | 3.211.1 | Монтаж розетки для болера, где мойка экструдера, подключиться к резерву ШУ на экструдере | manual | 2h | 2026-07-25 09:00 A | 2026-07-25 11:00 A | 100% |  |  | start no earlier than 2026-07-25 09:00 | Бобренок В | 2h | 2h |
| 2023 | 3.211.2 | Монтаж розетки, где ворота выхода готовой продукции | manual | 2h | 2026-07-27 09:00 A | 2026-07-27 11:00 A | 100% |  |  |  | Некрасов А; Труфанов А | 4h | 4h |
| 2024 | 3.212 | **Дражжировка** |  | 0d | 2026-07-26 09:00 A | 2026-07-26 11:00 A | 100% |  |  |  |  | 2h | 2h |
| 2025 | 3.212.1 | Устранить течь за раковиной. Вода перекрывается на потолке возле главной вентилляции | manual | 2h | 2026-07-26 09:00 A | 2026-07-26 11:00 A | 100% |  |  | start no earlier than 2026-07-26 09:00 | Бобренок В | 2h | 2h |
| 2026 | 3.213 | обшить стены вент камеры |  | 2d | 2026-05-06 09:00 A | 2026-05-07 18:00 A | 100% |  |  | start no earlier than 2026-05-06 09:00 | Олег; Некрасов А | 32h | 32h |
| 2027 | 3.214 | убрать металл 100*100 в зону охладителя или корридор |  | 1h | 2026-03-02 09:00 A | 2026-03-02 10:00 A | 100% |  |  | start no earlier than 2026-03-02 09:00 | Некрасов А; Труфанов А | 2h | 2h |
| 2028 | 4 | **4 склад** |  | 109.75d | 2026-03-13 09:00 A | 2026-07-15 16:00 | 100% | 2026-07-29 11:00 |  |  |  | 93.25h | 93.25h |
| 2029 | 4.1 | реверс направления кнопок движения вперед-назад ричтрака |  | 2h | 2026-07-14 08:00 A | 2026-07-14 11:00 A | 100% |  |  | start no earlier than 2026-07-14 08:00 | Дедов В | 2h | 2h |
| 2030 | 4.2 | 2 ветки не работают светильники -разобраться |  | 1h | 2026-07-02 09:00 A | 2026-07-02 10:00 A | 100% |  |  | start no earlier than 2026-07-02 09:00 | Тимофеев В | 1h | 1h |
| 2031 | 4.3 | Выяснить почему перегорают светильники |  | 2h | 2026-07-29 08:00 A | 2026-07-29 11:00 A | 100% |  |  | start no earlier than 2026-07-29 08:00 | Дедов В | 2h | 2h |
| 2032 | 4.4 | замена светильников |  | 8h | 2026-04-17 09:00 A | 2026-04-17 18:00 A | 100% |  |  | start no earlier than 2026-04-17 08:00 | Некрасов А; Труфанов А | 16h | 16h |
| 2033 | 4.5 | сборка рохли 1шт |  | 1h | 2026-03-13 09:00 A | 2026-03-13 10:00 A | 100% |  |  | start no earlier than 2026-03-13 09:00 | Тимофеев В | 1h | 1h |
| 2034 | 4.6 | ремонт обрамление погрузочной рампы |  | 4h | 2026-05-28 09:00 A | 2026-05-28 13:00 A | 100% |  |  | start no earlier than 2026-05-28 09:00 | Олег | 4h | 4h |
| 2035 | 4.7 | замена неисправных светильников |  | 1d | 2026-03-14 09:00 A | 2026-03-16 18:00 A | 100% |  |  | start no earlier than 2026-03-14 09:00 | Некрасов А; Бобренок В | 15h | 15h |

| ID | WBS | Task | Type | Duration | Start | Finish | Predecessors | Complete | Remaining | Actual start | Total slack | Constraint | Resources | Work | Actual work |
| --- | --- | --- | --- | --- | --- | --- | --- | --- | --- | --- | --- | --- | --- | --- | --- |
| 2036 | 4.8 | **замена неисправных светильников** |  | 87.75d | 2026-03-16 09:00 A | 2026-07-15 16:00 A |  | 100% |  |  |  |  |  | 52.25h | 52.25h |
| 2037 | 4.8.1 | заявка светильники |  | 15min | 2026-03-16 09:00 A | 2026-03-16 09:15 A |  | 100% |  |  |  | start no earlier than 2026-03-16 09:00 | Шуранов Ю | 0.25h | 0.25h |
| 2038 | 4.8.2 | доставка |  | 5d | 2026-03-16 09:15 A | 2026-03-23 09:15 A | 2037 | 100% |  |  |  | start no earlier than 2026-03-12 08:00 | Карабанов | 40h | 40h |
| 2039 | 4.8.3 | замена |  | 6h | 2026-07-15 09:00 A | 2026-07-15 16:00 A | 2038 | 100% |  |  |  | start no earlier than 2026-07-15 09:00 | Некрасов А; Труфанов А | 12h | 12h |
| 2040 | 5 | **5 цех** |  | 974.25d? | 2023-05-29 09:00 A | 2027-02-02 11:00 |  | 64% | 350.88d? |  | 26.34d |  |  | 1963.25h | 1253.42h |
| 2041 | 5.1 | Монтаж освещения на улицу |  | 2h | 2026-11-27 09:00 | 2026-11-27 11:00 |  |  |  |  | 73.34d | start no earlier than 2026-11-27 09:00 | Труфанов А; Некрасов А | 4h |  |
| 2042 | 5.2 | Сделать защелку для прижима сетки на дробилку |  | 1h | 2026-11-09 09:00 A | 2026-11-09 10:00 A |  | 100% |  |  |  | start no earlier than 2026-11-09 08:00 | Некрасов А | 1h | 1h |
| 2043 | 5.3 | монтаж защелки на дробилку |  | 1h | 2026-11-09 09:00 A | 2026-11-09 10:00 A |  | 100% |  |  |  | start no earlier than 2026-11-09 09:00 | Макаревич А | 1h | 1h |
| 2044 | 5.4 | Замена резинок на дробилке, осмотре всех уплотнений/замена при необходимости | manual | 1h | 2026-11-09 09:00 A | 2026-11-09 10:00 A |  | 100% |  |  |  | start no earlier than 2026-11-09 09:00 | Макаревич А | 1h | 1h |
| 2045 | 5.5 | Поставить крышку, которую изготовил бобренок, для тельфера |  | 1h | 2026-11-06 09:00 | 2026-11-06 10:00 |  |  |  |  | 92.47d | start no earlier than 2026-11-06 08:00 | Макаревич А; Николаев | 2h |  |
| 2046 | 5.6 | ТО в пятом цеху, осмотр, дефектовка, протяжка на всем оборудовании | manual | 6h | 2026-11-06 09:00 | 2026-11-06 16:00 |  |  |  |  |  | start no earlier than 2026-11-06 09:00 | Макаревич А; Николаев | 12h |  |
| 2047 | 5.7 | Запенить отверстие от кабеля в углу | manual | 30min | 2026-11-08 09:00 A | 2026-11-08 09:30 A |  | 100% |  |  |  | start no earlier than 2026-11-08 09:00 | Дедов В | 0.5h | 0.5h |
| 2048 | 5.8 | 5а подключить автоматику ворот |  | 1h | 2026-11-10 09:00 | 2026-11-10 10:00 |  |  |  |  | 88.47d | start no earlier than 2026-11-10 09:00 | Некрасов А | 1h |  |
| 2049 | 5.9 | Подготовка к монтажу доп отопления 5 цех. Собрать список материала, чего не хватает. Что расстаскали |  | 1h | 2026-11-30 09:00 | 2026-11-30 10:00 |  |  |  |  | 72.47d | start no earlier than 2026-11-30 09:00 | Труфанов А; Некрасов А | 2h |  |
| 2050 | 5.10 | ремонт хомут с сито |  | 2h | 2026-10-27 09:00 A | 2026-10-27 11:00 A |  | 100% |  |  |  | start no earlier than 2026-10-27 08:00 | Бундин В | 2h | 2h |
| 2051 | 5.11 | изготовить ящик-крышку 5гран для щитка с контакторами на растариватель |  | 2h | 2026-10-29 09:00 A | 2026-10-29 11:00 A |  | 100% |  |  |  | start no earlier than 2026-10-29 09:00 | Бобренок В | 2h | 2h |
| 2052 | 5.12 | Ремонт дробилки |  | 3h | 2026-10-27 09:00 A | 2026-10-27 12:00 A |  | 100% |  |  |  | start no earlier than 2026-10-27 08:00 | Тимофеев В; Бобренок В; Николаев | 9h | 9h |
| 2053 | 5.13 | **изготовить бункер нерж** |  | 77d? | 2026-06-06 09:00 | 2026-09-16 18:00 |  | 97% | 2.29d? | 2026-03-16 09:00 |  |  |  | 151.5h | 147.5h |
| 2054 | 5.13.1 | доработка / покрасить уголок |  | 4h | 2026-10-19 09:00 A | 2026-10-19 13:00 A |  | 100% |  |  |  | start no earlier than 2026-10-19 08:00 | Бундин В | 4h | 4h |
| 2055 | 5.13.2 | печать фланец |  | 2h | 2026-10-22 09:00 | 2026-10-22 11:00 |  |  |  |  | 103.34d | start no earlier than 2026-10-22 09:00 | Домоводов К | 2h |  |
| 2056 | 5.13.3 | установить фильтр воздушный на крышку |  | 2h | 2026-10-22 09:00 | 2026-10-22 11:00 |  |  |  |  | 103.34d | start no earlier than 2026-10-22 09:00 | Бобренок В | 2h |  |
| 2057 | 5.13.4 | составить чертеж |  | 1h | 2026-03-16 09:00 A | 2026-03-16 10:00 A |  | 100% |  |  |  | start no earlier than 2026-03-16 09:00 | Зорькин В | 1h | 1h |
| 2058 | 5.13.5 | заявка на нерж |  | 30min | 2026-03-16 10:00 A | 2026-03-16 10:30 A | 2057 | 100% |  |  |  | start no earlier than 2026-02-27 08:00 | Зорькин В | 0.5h | 0.5h |
| 2059 | 5.13.6 | доставка |  | 10d | 2026-04-23 09:00 A | 2026-05-06 18:00 A | 2058 | 100% |  |  |  | start no earlier than 2026-04-23 09:00 | Карабанов | 80h | 80h |
| 2060 | 5.13.7 | проверка черетежей / подготовка к сборке |  | 1h | 2026-10-12 09:00 A | 2026-10-12 10:00 A |  | 100% |  |  |  | start no earlier than 2026-10-12 09:00 | Труфанов А; Зорькин В | 2h | 2h |
| 2061 | 5.13.8 | сборка | manual | 2d | 2026-10-16 09:00 A | 2026-10-17 18:00 A | 2059, 2060 | 100% |  |  |  | start no earlier than 2026-10-16 09:00 | Макаревич А; Труфанов А | 32h | 32h |
| 2062 | 5.13.9 | сборка шибер |  | 1d? | 2026-10-16 09:00 A | 2026-10-16 18:00 A |  | 100% |  |  |  | start no earlier than 2026-10-16 09:00 | Макаревич А | 8h | 8h |
| 2063 | 5.13.10 | покраска рама |  | 1d? | 2026-10-17 09:00 A | 2026-10-17 18:00 A |  | 100% |  |  |  | start no earlier than 2026-10-17 09:00 | Бундин В | 8h | 8h |
| 2064 | 5.13.11 | сборка крышка с крепеж для магнита |  | 1d? | 2026-10-19 09:00 A | 2026-10-19 18:00 A |  | 100% |  |  |  | start no earlier than 2026-10-19 08:00 | Труфанов А | 8h | 8h |
| 2065 | 5.13.12 | доработка / перевоз бункера / монтаж |  | 4h | 2026-10-20 09:00 A | 2026-10-20 13:00 A |  | 100% |  |  |  | start no earlier than 2026-10-20 09:00 | Труфанов А | 4h | 4h |
| 2066 | 5.14 | Закрепить табличку с графиком работы цеха, взять в кабинете у мастеров, можно присверлить, но аккуратно, посмотреть варианты крепляния на других цехах |  | 1h | 2026-10-12 09:00 A | 2026-10-12 10:00 A |  | 100% |  |  |  | start no earlier than 2026-10-12 08:00 | Бундин В | 1h | 1h |
| 2067 | 5.15 | Выбрать болеменее нормальные балки 2 шт для стеллажей лежат рядом с 5а в углу и закрепить их по аналогу других балок |  | 2h | 2026-10-13 09:00 A | 2026-10-13 11:00 A |  | 100% |  |  |  | start no earlier than 2026-10-13 09:00 | Макаревич А; Труфанов А | 4h | 4h |

| ID | WBS | Task | Duration | Start | Finish | Predecessors | Complete | Remaining | Total slack | Free slack | Constraint | Resources | Work | Actual work |
| --- | --- | --- | --- | --- | --- | --- | --- | --- | --- | --- | --- | --- | --- | --- |
| 2068 | 5.16 | **сборка полок для стеллажей архив бухгалтерии** | 8d? | 2026-10-22 09:00 | 2026-11-02 18:00 |  |  |  | 95.59d |  |  |  | 24h |  |
| 2069 | 5.16.1 | контроль доставка материал | 1d? | 2026-10-22 09:00 | 2026-10-22 18:00 |  |  |  | 100.59d | 5d | start no earlier than 2026-10-22 09:00 | Зорькин В | 8h |  |
| 2070 | 5.16.2 | сборка полок для стеллажей архив бухгалтерии | 1d? | 2026-11-02 09:00 | 2026-11-02 18:00 | 2069FS+1d |  |  | 95.59d |  | start no earlier than 2026-11-02 09:00 | Тимофеев В; Николаев | 16h |  |
| 2071 | 5.17 | **монтаж тепловые пушки подвесные 5 цех** | 86d | 2026-08-21 09:00 A | 2026-12-01 18:00 |  | 36% | 55.04d | 70.59d |  |  |  | 41h | 9h |
| 2072 | 5.17.1 | составить схему монтажа | 4h | 2026-08-26 09:00 A | 2026-08-26 13:00 A |  | 100% |  |  |  | start no earlier than 2026-08-26 09:00 | Зорькин В | 4h | 4h |
| 2073 | 5.17.2 | заявка на тепловые пушки вулкан | 2h | 2026-08-21 09:00 A | 2026-08-21 11:00 A |  | 100% |  |  |  | start no earlier than 2026-08-21 09:00 | Зорькин В | 2h | 2h |
| 2074 | 5.17.3 | контроль остатки нерж труба, фтинги | 2h | 2026-09-07 09:00 A | 2026-09-07 11:00 A | 2073 | 100% |  |  |  | start no earlier than 2026-09-07 09:00 | Зорькин В | 2h | 2h |
| 2075 | 5.17.4 | контроль доставки | 1h | 2026-09-21 09:00 A | 2026-09-21 10:00 A | 2074FS+7d | 100% |  |  |  | start no earlier than 2026-09-21 09:00 | Зорькин В | 1h | 1h |
| 2076 | 5.17.5 | монтаж | 2d | 2026-11-30 09:00 | 2026-12-01 18:00 | 2075FS+1d |  |  | 70.59d |  | start no earlier than 2026-11-30 09:00 | Некрасов А; Труфанов А | 32h |  |
| 2077 | 5.18 | на 2 этаж раковина Установка смесителей (краны) с гибкой подводкой, получить на складе | 1h | 2026-09-21 09:00 A | 2026-09-21 10:00 A |  | 100% |  |  |  | start no earlier than 2026-09-21 09:00 | Некрасов А | 1h | 1h |
| 2078 | 5.19 | ремонт дека от вибросито | 3h | 2026-09-12 09:00 A | 2026-09-12 12:00 A |  | 100% |  |  |  | start no earlier than 2026-09-12 09:00 | Макаревич А | 3h | 3h |
| 2079 | 5.20 | **установить зажим троса на тельфер** | 56d? | 2026-09-03 09:00 A | 2026-11-06 18:00 |  | 3% | 54.35d? | 91.59d |  |  |  | 16.5h | 0.25h |
| 2080 | 5.20.1 | заявка | 15min | 2026-09-03 09:00 A | 2026-09-03 09:15 A |  | 100% |  |  |  | start no earlier than 2026-09-03 09:00 | Зорькин В | 0.25h | 0.25h |
| 2081 | 5.20.2 | контроль доставки | 15min | 2026-10-28 09:00 | 2026-10-28 09:15 | 1246FS+5d |  |  | 97.56d | 5.97d | start no earlier than 2026-10-28 09:00 | Зорькин В | 0.25h |  |
| 2082 | 5.20.3 | монтаж (узнать у Артема) | 1d? | 2026-11-06 09:00 | 2026-11-06 18:00 | 1247FS+1d, 2081FS+1d |  |  | 91.59d |  | start no earlier than 2026-11-06 09:00 | Макаревич А; Николаев | 16h |  |
| 2083 | 5.21 | **ремонт насос водоснабжения** | 73.25d | 2026-09-03 09:00 A | 2026-11-26 11:00 A |  | 100% |  |  |  |  |  | 4.5h | 4.5h |
| 2084 | 5.21.1 | перекрутить американку для удобного обслуживания | 2h | 2026-11-26 09:00 A | 2026-11-26 11:00 A |  | 100% |  |  |  | start no earlier than 2026-11-26 09:00 | Макаревич А | 2h | 2h |
| 2085 | 5.21.2 | Сказать параметры, шильдик насосной станции передать зорькину | 15min | 2026-09-03 09:00 A | 2026-09-03 09:15 A |  | 100% |  |  |  | start no earlier than 2026-09-03 09:00 | Тимофеев В | 0.25h | 0.25h |
| 2086 | 5.21.3 | конртроль поставки | 15min | 2026-09-10 09:00 A | 2026-09-10 09:15 A | 2085 | 100% |  |  |  | start no earlier than 2026-09-10 09:00 | Зорькин В | 0.25h | 0.25h |
| 2087 | 5.21.4 | замена | 1h | 2026-09-11 09:15 A | 2026-09-11 10:15 A | 2086FS+1d | 100% |  |  |  | start no earlier than 2026-09-11 09:00 | Некрасов А; Макаревич А | 2h | 2h |
| 2088 | 5.22 | воставноить заземление на обоих ситах | 2h | 2026-09-04 09:00 A | 2026-09-04 11:00 A |  | 100% |  |  |  | start no earlier than 2026-09-04 09:00 | Бобренок В | 2h | 2h |
| 2089 | 5.23 | востановить контакт пульт тельфера у стены (переменный контакт при движении кабеля у пульта) | 1h | 2026-09-03 09:00 A | 2026-09-03 10:00 A |  | 100% |  |  |  | start no earlier than 2026-09-03 08:00 | Бобренок В | 1h | 1h |
| 2090 | 5.24 | подключить Олегу сварочный автомат | 1h | 2026-08-31 09:00 A | 2026-08-31 10:00 A |  | 100% |  |  |  | start no earlier than 2026-08-31 09:00 | Тимофеев В | 1h | 1h |
| 2091 | 5.25 | **подготовить сетку на мал дробилку 3 и 4мм** | 11.12d | 2026-09-12 09:00 A | 2026-09-23 10:00 A |  | 100% |  |  |  |  |  | 1.5h | 1.5h |
| 2092 | 5.25.1 | проверка отстатков сетки на складах | 30min | 2026-09-12 09:00 A | 2026-09-12 09:30 A |  | 100% |  |  |  | start no earlier than 2026-09-12 09:00 | Макаревич А | 0.5h | 0.5h |
| 2093 | 5.25.2 | вырезатиь сетку в размер | 1h | 2026-09-23 09:00 A | 2026-09-23 10:00 A | 2092FS+1d | 100% |  |  |  | start no earlier than 2026-09-29 09:00 | Тимофеев В | 1h | 1h |
| 2094 | 5.26 | ревизия шнека | 3h | 2026-08-17 09:00 A | 2026-08-17 12:00 A |  | 100% |  |  |  | start no earlier than 2026-08-17 09:00 | Бобренок В; Некрасов А | 6h | 6h |

| ID | WBS | Task | Type | Duration | Start | Finish | Predecessors | Complete | Remaining | Total slack | Free slack | Constraint | Resources | Work | Actual work |
| --- | --- | --- | --- | --- | --- | --- | --- | --- | --- | --- | --- | --- | --- | --- | --- |
| 2095 | 5.27 | **свет в туалет передать крепление светильника** |  | 1.12d | 2026-08-14 09:00 A | 2026-08-17 10:00 A |  | 100% |  |  |  |  |  | 2.25h | 2.25h |
| 2096 | 5.27.1 | проверить наличие светильника с боковым монтажем |  | 15min | 2026-08-14 09:00 A | 2026-08-14 09:15 A |  | 100% |  |  |  | start no earlier than 2026-08-14 09:00 | Домоводов К | 0.25h | 0.25h |
| 2097 | 5.27.2 | замена светильника / или закрепить |  | 1h | 2026-08-17 09:00 A | 2026-08-17 10:00 A | 2096 | 100% |  |  |  | start no earlier than 2026-08-15 09:00 | Бундин В | 1h | 1h |
| 2098 | 5.27.3 | закрепить светильник в коридоре -вход в туалет |  | 1h | 2026-08-17 09:00 A | 2026-08-17 10:00 A |  | 100% |  |  |  | start no earlier than 2026-08-17 09:00 | Бундин В | 1h | 1h |
| 2099 | 5.28 | трещина вибросито №2 1см ремонт |  | 6h | 2026-08-27 09:00 A | 2026-08-27 16:00 A |  | 100% |  |  |  | start no earlier than 2026-08-27 09:00 | Макаревич А | 6h | 6h |
| 2100 | 5.29 | трещина вибросито №1 кольцо. ремонт |  | 4h | 2026-08-28 09:00 A | 2026-08-28 13:00 A |  | 100% |  |  |  | start no earlier than 2026-08-28 09:00 | Макаревич А | 4h | 4h |
| 2101 | 5.30 | **проект новая дробилка** |  | 40.03d | 2026-08-21 09:00 A | 2026-10-06 09:15 |  | 17% | 33.37d | 116.56d |  |  |  | 144.25h | 24h |
| 2102 | 5.30.1 | **кабель для доп мощности** |  | 40.03d | 2026-08-21 09:00 A | 2026-10-06 09:15 |  | 17% | 33.37d | 116.56d |  |  |  | 144.25h | 24h |
| 2103 | 5.30.1.1 | составить ТЗ на монтаж кабеля |  | 3d | 2026-08-21 09:00 A | 2026-08-25 18:00 A |  | 100% |  |  |  | start no earlier than 2026-08-21 09:00 | Домоводов К | 24h | 24h |
| 2104 | 5.30.1.2 | получить КП / счет договор | milestone | 0d | 2026-09-09 09:00 | 2026-09-09 09:00 | 2103FS+2d |  |  | 116.56d | 0d | start no earlier than 2026-09-09 09:00 | Домоводов К |  |  |
| 2105 | 5.30.1.3 | предоплата |  | 15min | 2026-09-10 09:00 | 2026-09-10 09:15 | 2104FS+1d |  |  | 116.56d | 0d | start no earlier than 2026-08-10 08:00 | Домоводов К | 0.25h |  |
| 2106 | 5.30.1.4 | монтаж |  | 15d | 2026-09-20 09:15 | 2026-10-06 09:15 | 2105FS+10d |  |  | 116.56d |  | start no earlier than 2026-08-10 08:00 | Подрядчик | 120h |  |
| 2107 | 5.31 | **монтаж вода в 5ц** |  | 64.01d | 2026-08-10 08:00 A | 2026-10-26 09:05 |  | 96% | 2.66d | 101.58d |  |  |  | 128.08h | 125.08h |
| 2108 | 5.31.1 | Подключение греющего кабеля |  | 3h | 2026-09-16 09:00 A | 2026-09-16 12:00 A |  | 100% |  |  |  | start no earlier than 2026-09-16 09:00 | Некрасов А; Труфанов А | 6h | 6h |
| 2109 | 5.31.2 | подклюючить воду на прямую |  | 2h | 2026-09-14 09:00 A | 2026-09-14 11:00 A |  | 100% |  |  |  | start no earlier than 2026-09-15 09:00 | Тимофеев В | 2h | 2h |
| 2110 | 5.31.3 | Все доделать/подключить |  | 6h | 2026-09-18 09:00 A | 2026-09-18 16:00 A |  | 100% |  |  |  | start no earlier than 2026-09-18 09:00 | Труфанов А; Некрасов А | 12h | 12h |
| 2111 | 5.31.4 | установить в конце линии расширительный бак / защита от гидроудара |  | 2h | 2026-09-21 09:00 A | 2026-09-21 11:00 A |  | 100% |  |  |  | start no earlier than 2026-09-21 09:00 | Труфанов А; Некрасов А | 4h | 4h |
| 2112 | 5.31.5 | Установка точек воды для пожврного гидранта и набора воды для поломоечной машинки цех 3,4,5а и 5 |  | 6h | 2026-09-22 09:00 A | 2026-09-22 16:00 A |  | 100% |  |  |  | start no earlier than 2026-09-22 09:00 | Труфанов А; Некрасов А | 12h | 12h |
| 2113 | 5.31.6 | переключение линии "без бачка" |  | 2h | 2026-09-22 09:00 A | 2026-09-22 11:00 A | 2111 | 100% |  |  |  | start no earlier than 2026-09-22 09:00 | Труфанов А; Некрасов А | 4h | 4h |
| 2114 | 5.31.7 | тестирование системы |  | 2h | 2026-09-21 09:00 A | 2026-09-21 11:00 A | 2113 | 100% |  |  |  | start no earlier than 2026-09-18 08:00 | Труфанов А; Некрасов А | 4h | 4h |
| 2115 | 5.31.8 | выяснить возможность обмена тройников 1+1/4-1/2 на 3/4-1/2 |  | 15min | 2026-09-21 09:00 A | 2026-09-21 09:15 A |  | 100% |  |  |  | start no earlier than 2026-09-21 09:00 | Зорькин В | 0.25h | 0.25h |
| 2116 | 5.31.9 | Прокнуть греющий кабель | manual | 3h | 2026-09-16 09:00 A | 2026-09-16 12:00 A |  | 100% |  |  |  |  | Некрасов А; Труфанов А | 6h | 6h |
| 2117 | 5.31.10 | **монтаж трассы по 3ц** |  | 4.5d | 2026-08-11 09:00 A | 2026-08-17 13:00 A |  | 100% |  |  |  |  |  | 16.5h | 16.5h |
| 2118 | 5.31.10.1 | заявка хомуты сантех - получить дату поставки |  | 15min | 2026-08-11 09:00 A | 2026-08-11 09:15 A |  | 100% |  |  |  | start no earlier than 2026-08-11 09:00 | Домоводов К | 0.25h | 0.25h |
| 2119 | 5.31.10.2 | контроль доставки |  | 15min | 2026-08-14 09:15 A | 2026-08-14 09:30 A | 2118FS+3d | 100% |  |  |  | start no earlier than 2026-08-10 08:00 | Зорькин В | 0.25h | 0.25h |
| 2120 | 5.31.10.3 | монтаж продложть |  | 4h | 2026-08-14 09:30 A | 2026-08-14 14:30 A | 2119 | 100% |  |  |  | start no earlier than 2026-08-10 08:00 | Некрасов А; Бундин В | 8h | 8h |
| 2121 | 5.31.10.4 | монтаж продложть |  | 4h | 2026-08-17 09:00 A | 2026-08-17 13:00 A | 2119 | 100% |  |  |  | start no earlier than 2026-08-17 09:00 | Некрасов А; Бобренок В | 8h | 8h |

| ID | WBS | Task | Type | Duration | Start | Finish | Predecessors | Complete | Remaining | Total slack | Constraint | Resources | Work | Actual work |
| --- | --- | --- | --- | --- | --- | --- | --- | --- | --- | --- | --- | --- | --- | --- |
| 2122 | 5.31.11 | **монтаж труба в земле между 3 и 4ц- УЗО на грей кабель** |  | 64.01d | 2026-08-10 08:00 A | 2026-10-26 09:05 |  | 75% | 15.89d | 101.58d |  |  | 19.08h | 16.08h |
| 2123 | 5.31.11.1 | монтаж ф32 в ф40 |  | 4h | 2026-08-10 08:00 A | 2026-08-10 13:00 A |  | 100% |  |  | start no earlier than 2026-08-10 08:00 | Некрасов А; Макаревич А | 8h | 8h |
| 2124 | 5.31.11.2 | заявка греющий кабель внтуреннего монтажа + |  | 1h | 2026-08-11 09:00 A | 2026-08-11 10:00 A | 2123 | 100% |  |  | start no earlier than 2026-08-11 09:00 | Домоводов К | 1h | 1h |
| 2125 | 5.31.11.3 | заявка защита УЗО |  | 1h | 2026-08-24 09:00 A | 2026-08-24 10:00 A |  | 100% |  |  | start no earlier than 2026-08-24 09:00 | Зорькин В | 1h | 1h |
| 2126 | 5.31.11.4 | контоль доставка |  | 5min | 2026-10-26 09:00 A | 2026-10-26 09:05 A | 2124FS+5d, 2125 | 100% |  |  | start no earlier than 2026-10-26 09:00 | Зорькин В | 0.08h | 0.08h |
| 2127 | 5.31.11.5 | монтаж кабеля |  | 3h | 2026-09-16 12:00 A | 2026-09-16 16:00 A | 2126FS+1d, 2108 | 100% |  |  | start no earlier than 2026-09-16 09:00 | Некрасов А; Макаревич А | 6h | 6h |
| 2128 | 5.31.11.6 | монтаж щиток кабеля с УЗО |  | 3h | 2026-09-14 09:00 | 2026-09-14 12:00 |  |  |  | 137.22d | start no earlier than 2026-09-14 09:00 | Дедов В | 3h |  |
| 2129 | 5.31.12 | **монтаж трассы по воздуху м/д 4 и 5А** |  | 9.5d | 2026-08-11 09:00 A | 2026-08-24 13:00 A |  | 100% |  |  |  |  | 9.25h | 9.25h |
| 2130 | 5.31.12.1 | подготовка материал |  | 1h | 2026-08-11 09:00 A | 2026-08-11 10:00 A |  | 100% |  |  | start no earlier than 2026-08-11 09:00 | Некрасов А; Макаревич А | 1h | 1h |
| 2131 | 5.31.12.2 | контроль поставки рым 10 |  | 15min | 2026-08-21 09:00 A | 2026-08-21 09:15 A |  | 100% |  |  | start no earlier than 2026-08-21 09:00 | Зорькин В | 0.25h | 0.25h |
| 2132 | 5.31.12.3 | монтаж |  | 4h | 2026-08-24 09:00 A | 2026-08-24 13:00 A | 2131 | 100% |  |  | start no earlier than 2026-08-24 09:00 | Некрасов А; Тимофеев В | 8h | 8h |
| 2133 | 5.31.13 | монтаж щиток греющего кабеля по воздуху |  | 4h | 2026-09-16 09:00 A | 2026-09-16 13:00 A |  | 100% |  |  | start no earlier than 2026-09-16 09:00 | Труфанов А | 4h | 4h |
| 2134 | 5.31.14 | монтаж трассы по 4ц |  | 6h | 2026-08-18 09:00 A | 2026-08-18 16:00 A | 2119 | 100% |  |  | start no earlier than 2026-08-18 09:00 | Некрасов А; Макаревич А | 11h | 11h |
| 2135 | 5.31.15 | монтаж трассы по 5ц |  | 4h | 2026-08-19 09:00 A | 2026-08-19 13:00 A | 2134 | 100% |  |  | start no earlier than 2026-08-19 09:00 | Некрасов А; Макаревич А | 8h | 8h |
| 2136 | 5.31.16 | монтаж трассы по 5ц |  | 6h | 2026-08-24 09:00 A | 2026-08-24 16:00 A | 2134 | 100% |  |  | start no earlier than 2026-08-24 09:00 | Некрасов А; Макаревич А | 10h | 10h |
| 2137 | 5.32 | замена светильника перегоревшего у Большакова в кабинете |  | 2h | 2026-08-06 09:00 A | 2026-08-06 11:00 A |  | 100% |  |  | start no earlier than 2026-08-07 09:00 | Труфанов А | 2h | 2h |
| 2138 | 5.33 | устранить утечку воды в душе |  | 1h | 2026-08-06 09:00 A | 2026-08-06 10:00 A |  | 100% |  |  | start no earlier than 2026-08-06 08:00 | Бундин В | 1h | 1h |
| 2139 | 5.34 | **установить унитаз на 3 этаже** |  | 3.38d? | 2026-08-04 09:00 A | 2026-08-07 12:00 A |  | 100% |  |  |  | Бобренок В | 38h | 38h |
| 2140 | 5.34.1 | заказать гофру и гибкую вставку |  | 1d? | 2026-08-04 09:00 A | 2026-08-04 18:00 A |  | 100% |  |  | start no earlier than 2026-08-04 08:00 | Шуранов Ю | 8h | 8h |
| 2141 | 5.34.2 | установка унитаза (гофротруба и гибкая подводка и коронка у Большакова) коронку вернуть Большакову |  | 3h | 2026-08-07 09:00 A | 2026-08-07 12:00 A |  | 100% |  |  | start no earlier than 2026-08-07 09:00 | Труфанов А | 3h | 3h |
| 2142 | 5.35 | монтаж свет в туалете 3 этаж (оператора дадут в помощь) | manual | 6h | 2026-08-09 09:00 A | 2026-08-09 16:00 A |  | 100% |  |  | start no earlier than 2026-08-09 09:00 | Бобренок В | 6h | 6h |
| 2143 | 5.36 | прикрутить смотровые окна на дробилке, не хватает саморезов- просыпается сырье |  | 1h | 2026-08-02 09:00 A | 2026-08-03 10:00 A |  | 100% |  |  | start no earlier than 2026-08-02 09:00 | Макаревич А | 1h | 1h |
| 2144 | 5.37 | сборка ограничиетелей на сетку №2 для сито из лазера |  | 4h | 2026-07-17 09:00 A | 2026-07-17 13:00 A |  | 100% |  |  | start no earlier than 2026-07-17 09:00 | Макаревич А | 4h | 4h |
| 2145 | 5.38 | ремонт сетки, хомуты с 5ц |  | 2h | 2026-07-15 09:00 A | 2026-07-15 11:00 A |  | 100% |  |  | start no earlier than 2026-07-15 09:00 | Бундин В | 2h | 2h |
| 2146 | 5.39 | вырезать сетку 2мм на большую дробилку |  | 2h | 2026-07-15 09:00 A | 2026-07-15 11:00 A |  | 100% |  |  | start no earlier than 2026-07-15 09:00 | Бобренок В | 2h | 2h |
| 2147 | 5.40 | заменаить ножи на мал дробилке |  | 6h | 2026-07-06 08:00 A | 2026-07-06 16:00 A |  | 100% |  |  | start no earlier than 2026-07-06 08:00 | Дедов В | 6h | 6h |
| 2148 | 5.41 | заварить хомут от деко 5 ц. в слесарке |  | 2h | 2026-07-11 09:00 A | 2026-07-13 11:00 A |  | 100% |  |  | start no earlier than 2026-07-11 09:00 | Макаревич А | 2h | 2h |
| 2149 | 5.42 | Дефектовка кнопок растаривателя, ремонт, клинит кнопку |  | 30min | 2026-07-06 08:00 A | 2026-07-06 09:30 A |  | 100% |  |  | start no earlier than 2026-07-06 08:00 | Дедов В | 0.5h | 0.5h |
| 2150 | 5.43 | сито просечка с лазера - доплнить 4шт до 6-8 уголоков ограничителей. |  | 2h | 2026-06-26 08:00 A | 2026-06-26 11:00 A |  | 100% |  |  | start no earlier than 2026-06-26 08:00 | Макаревич А | 2h | 2h |
| 2151 | 5.44 | просечки нерж. наварить уголки, чтобы не падало внутрь |  | 2h | 2026-06-25 08:00 A | 2026-06-25 11:00 A |  | 100% |  |  | start no earlier than 2026-06-25 08:00 | Макаревич А | 2h | 2h |
| 2152 | 5.45 | на поворотную кнопку реверса шнека №1 установить бокс (взять на складе) |  | 1h | 2026-06-24 09:00 A | 2026-06-24 10:00 A |  | 100% |  |  | start no earlier than 2026-06-24 09:00 | Труфанов А | 1h | 1h |
| 2153 | 5.46 | развернуть ножи на большой дробилке, если не успеваем передаем по смене |  | 3h | 2026-06-23 08:00 A | 2026-06-23 12:00 A |  | 100% |  |  | start no earlier than 2026-06-23 08:00 | Труфанов А; Макаревич А | 6h | 6h |

| ID | WBS | Task | Duration | Start | Finish | Predecessors | Complete | Remaining | Actual finish | Total slack | Free slack | Constraint | Resources | Work | Actual work |
| --- | --- | --- | --- | --- | --- | --- | --- | --- | --- | --- | --- | --- | --- | --- | --- |
| 2154 | 5.47 | **протянуть все болтовые соединения: шиберы растаривателей, металлоконструкции под бункера и т.д. если нет болта - прикручиваем** | 3h? | 2026-06-23 09:00 A | 2026-06-23 12:00 |  | 100% |  | 2026-06-23 18:00 |  |  |  | Труфанов А | 11h | 11h |
| 2155 | 5.47.1 | заказать краску | 1d? | 2026-06-23 09:00 A | 2026-06-23 18:00 A |  | 100% |  |  |  |  | start no earlier than 2026-06-23 08:00 | Шуранов Ю | 8h | 8h |
| 2156 | 5.48 | проверить откуда гайку нашли на магните, растариватель-дробилка -шнеки -крепление магнитов | 1h | 2026-06-22 09:00 A | 2026-06-22 10:00 A |  | 100% |  |  |  |  | start no earlier than 2026-06-22 08:00 | Бундин В | 1h | 1h |
| 2157 | 5.49 | **закрепить штурвал на растаривателе 1** | 1d? | 2026-06-23 09:00 A | 2026-06-23 18:00 A |  | 100% |  |  |  |  |  | Бундин В | 16h | 16h |
| 2158 | 5.49.1 | заказываем растариватель | 1d? | 2026-06-23 09:00 A | 2026-06-23 18:00 A |  | 100% |  |  |  |  | start no earlier than 2026-06-23 09:00 | Шуранов Ю | 8h | 8h |
| 2159 | 5.50 | заварить просеиватель ближе к стеллажам и на правом (расскажу как) | 3h | 2026-06-11 09:00 A | 2026-06-11 12:00 A |  | 100% |  |  |  |  | start no earlier than 2026-06-11 09:00 | Бундин В | 3h | 3h |
| 2160 | 5.51 | ремонт просечку с вибросито, передать в 5ц | 2h | 2026-06-12 09:00 A | 2026-06-12 11:00 A |  | 100% |  |  |  |  | start no earlier than 2026-06-12 09:00 | Бундин В | 2h | 2h |
| 2161 | 5.52 | ремонт хомут с вибросито | 2h | 2026-06-05 09:00 A | 2026-06-05 11:00 A |  | 100% |  |  |  |  | start no earlier than 2026-06-05 08:00 | Бундин В | 2h | 2h |
| 2162 | 5.53 | заварить хомут от деко 5 ц. в слесарке | 2h | 2026-07-14 09:00 A | 2026-07-14 11:00 A |  | 100% |  |  |  |  | start no earlier than 2026-07-14 09:00 | Бундин В | 2h | 2h |
| 2163 | 5.54 | **востановить коробку тельфера** | 186.25d | 2026-06-04 09:00 A | 2027-02-02 11:00 |  | 59% | 76.33d |  | 26.34d |  |  |  | 5.08h | 3h |
| 2164 | 5.54.1 | найти производителя тельфера и выяснить марку коробку / найти в продаже подходящий артикул | 2h | 2026-06-04 09:00 A | 2026-06-04 11:00 A |  | 100% |  |  |  |  | start no earlier than 2026-06-04 09:00 | Шуранов Ю | 2h | 2h |
| 2165 | 5.54.2 | заявка | 1h | 2026-06-05 09:00 A | 2026-06-05 10:00 A |  | 100% |  |  |  |  | start no earlier than 2026-06-05 09:00 | Шуранов Ю | 1h | 1h |
| 2166 | 5.54.3 | доставка контроль | 5min | 2026-09-18 09:00 | 2026-09-18 09:05 |  |  |  |  | 133.33d | 106.99d | start no earlier than 2026-09-18 09:00 | Домоводов К | 0.08h |  |
| 2167 | 5.54.4 | замена | 2h | 2027-02-02 09:00 | 2027-02-02 11:00 | 2166 |  |  |  | 26.34d |  | start no earlier than 2027-02-02 09:00 | Некрасов А | 2h |  |
| 2168 | 5.55 | замена пускатель тельфер 24дц / найти/изготовить + установить крышку контакторов / доработать крепеж кабеля к тросу | 1h | 2026-05-27 09:00 A | 2026-05-27 10:00 A |  | 100% |  |  |  |  | start no earlier than 2026-05-27 09:00 | Некрасов А; Бундин В | 2h | 2h |
| 2169 | 5.56 | проверка всех банок АКБ штабелера / замена неисправных | 2h | 2026-05-30 09:00 A | 2026-06-01 11:00 A |  | 100% |  |  |  |  | start no earlier than 2026-05-30 09:00 | Бобренок В | 2h | 2h |
| 2170 | 5.57 | посмотреть что с тельфером на дробилке | 1h | 2026-05-26 09:00 A | 2026-05-26 10:00 A |  | 100% |  |  |  |  | start no earlier than 2026-05-26 09:00 | Некрасов А | 1h | 1h |
| 2171 | 5.58 | приварить магниты на сито | 0.5h | 2026-05-26 09:00 A | 2026-05-26 09:30 A |  | 100% |  |  |  |  | start no earlier than 2026-05-26 09:00 | Некрасов А | 0.5h | 0.5h |
| 2172 | 5.59 | заварить растариватель №2 | 4h | 2026-05-25 08:00 A | 2026-05-25 13:00 A |  | 100% |  |  |  |  | start no earlier than 2026-05-25 08:00 | Тимофеев В; Некрасов А | 7h | 7h |
| 2173 | 5.60 | уложить красиво кабель в гофре зона дробилки | 1h | 2026-05-19 09:00 A | 2026-05-19 10:00 A |  | 100% |  |  |  |  | start no earlier than 2026-05-19 09:00 | Бундин В; Некрасов А | 2h | 2h |
| 2174 | 5.61 | заварить 2 просечки от сито и отправить все на 5 цех | 1h | 2026-05-19 09:00 A | 2026-05-19 10:00 A |  | 100% |  |  |  |  | start no earlier than 2026-05-19 09:00 | Бундин В | 1h | 1h |
| 2175 | 5.62 | сделать дублирующий пост (вкл. И выкл. Смесителя) на мезонине дробилки | 4h | 2026-05-18 08:00 A | 2026-05-18 13:00 A |  | 100% |  |  |  |  | start no earlier than 2026-05-18 08:00 | Дедов В | 4h | 4h |
| 2176 | 5.63 | прошприцевать сам двигатель дробилки | 1h | 2026-05-19 09:00 A | 2026-05-19 10:00 A |  | 100% |  |  |  |  | start no earlier than 2026-05-19 09:00 | Некрасов А; Бундин В | 2h | 2h |
| 2177 | 5.64 | **сборка схемы блокировки дробилки при открытом люке** | 7.25d? | 2026-05-17 09:00 A | 2026-05-27 11:00 A |  | 100% |  |  |  |  |  |  | 17h | 17h |
| 2178 | 5.64.1 | монтаж кабель | 4h | 2026-05-17 09:00 A | 2026-05-18 13:00 A |  | 100% |  |  |  |  | start no earlier than 2026-05-17 09:00 | Макаревич А | 4h | 4h |
| 2179 | 5.64.2 | сборка схема | 2h | 2026-05-27 09:00 A | 2026-05-27 11:00 A | 2178 | 100% |  |  |  |  | start no earlier than 2026-05-27 09:00 | Дедов В | 2h | 2h |
| 2180 | 5.64.3 | заказать концевики | 1d? | 2026-05-25 09:00 A | 2026-05-25 18:00 A |  | 100% |  |  |  |  | start no earlier than 2026-05-25 08:00 | Шуранов Ю | 8h | 8h |
| 2181 | 5.64.4 | доделать схему блокировки- концевики LA167-Z8/122 на складе | 3h | 2026-05-26 09:00 A | 2026-05-26 12:00 A |  | 100% |  |  |  |  | start no earlier than 2026-05-26 09:00 | Дедов В | 3h | 3h |
| 2182 | 5.65 | проверка центровки мотора после замены подшипнка + замена подшипник задний | 4h | 2026-05-12 08:00 A | 2026-05-12 13:00 A |  | 100% |  |  |  |  | start no earlier than 2026-05-12 08:00 | Тимофеев В; Бобренок В | 8h | 8h |
| 2183 | 5.66 | заварить сито | 2h | 2026-05-08 08:00 A | 2026-05-08 11:00 A |  | 100% |  |  |  |  | start no earlier than 2026-05-08 08:00 | Макаревич А | 2h | 2h |
| 2184 | 5.67 | закрепить штурвал, чтобы не болтался на растаривателе 1 | 1h | 2026-05-08 08:00 A | 2026-05-08 10:00 A |  | 100% |  |  |  |  | start no earlier than 2026-05-08 08:00 | Макаревич А | 1h | 1h |
| 2185 | 5.68 | посмотреть компрессор (если проблема в предохранителе- то взять у меня на столе)пароль8989 | 1h | 2026-05-08 08:00 A | 2026-05-08 10:00 A |  | 100% |  |  |  |  | start no earlier than 2026-05-08 08:00 | Дедов В | 1h | 1h |
| 2186 | 5.69 | проверить на 2х котлах давление в системе отопления- где нужно долить воды. И слить воду система отопления 5а цех | 2h | 2026-05-06 08:00 A | 2026-05-06 11:00 A |  | 100% |  |  |  |  | start no earlier than 2026-05-06 08:00 | Бобренок В | 2h | 2h |

| ID | WBS | Task | Type | Duration | Start | Finish | Predecessors | Complete | Actual start | Actual finish | Total slack | Constraint | Resources | Work | Actual work |
| --- | --- | --- | --- | --- | --- | --- | --- | --- | --- | --- | --- | --- | --- | --- | --- |
| 2187 | 5.70 | **ремонт сито (попробовать заклеить эпоксидкой) / ремонт у производсителя** |  | 13d | 2026-05-13 09:00 A | 2026-05-29 18:00 A |  | 100% |  |  |  |  |  | 0.75h | 0.75h |
| 2188 | 5.70.1 | отправить сито на ремонт производителю |  | 30min | 2026-05-13 09:00 A | 2026-05-13 09:30 A |  | 100% |  |  |  | start no earlier than 2026-05-13 09:00 | Шуранов Ю | 0.5h | 0.5h |
| 2189 | 5.70.2 | контроль доставки |  | 15min | 2026-05-29 17:45 A | 2026-05-29 18:00 A | 2188SF+15d | 100% |  |  |  | start no earlier than 2026-05-12 08:00 | Шуранов Ю | 0.25h | 0.25h |
| 2190 | 5.71 | зачистить приемный бункер после дробилке болгаркой |  | 1h | 2026-04-30 08:00 A | 2026-04-30 10:00 A |  | 100% |  |  |  | start no earlier than 2026-04-30 08:00 | Дедов В | 1h | 1h |
| 2191 | 5.72 | **ремонт стиральной машинки / шум подшипника** |  | 1d? | 2026-04-27 09:00 | 2026-04-27 18:00 |  |  |  |  | 239.59d |  |  | 8h |  |
| 2192 | 5.72.1 | договор |  | 1d? | 2026-04-27 09:00 | 2026-04-27 18:00 |  |  |  |  | 239.59d | start no earlier than 2026-04-27 08:00 | Шуранов Ю | 8h |  |
| 2193 | 5.73 | **ремонт утечки с системы отопления** |  | 1.12d | 2026-05-04 09:00 | 2026-05-05 10:00 |  | 100% | 2026-05-07 09:00 | 2026-05-08 10:00 |  |  |  | 10h | 10h |
| 2194 | 5.73.1 | слив воды |  | 4h | 2026-05-07 09:00 A | 2026-05-07 13:00 A |  | 100% |  |  |  | start no earlier than 2026-05-07 09:00 | Макаревич А | 4h | 4h |
| 2195 | 5.73.2 | ремонт утечки |  | 2h | 2026-05-07 13:00 A | 2026-05-07 16:00 A | 2194 | 100% |  |  |  | start no earlier than 2026-04-27 08:00 | Макаревич А | 2h | 2h |
| 2196 | 5.73.3 | заправить воду / опресовать |  | 4h | 2026-05-07 15:00 A | 2026-05-08 10:00 A | 2195 | 100% |  |  |  | start no earlier than 2026-04-27 08:00 | Макаревич А | 4h | 4h |
| 2197 | 5.74 | долить в систему отопления воды цех 5а, электрокотел не включаем. Работаем на газ котле |  | 1h | 2026-04-24 09:00 A | 2026-04-24 10:00 A |  | 100% |  |  |  | start no earlier than 2026-04-24 08:00 | Бундин В | 1h | 1h |
| 2198 | 5.75 | вывезти шнек на синий склад |  | 1h | 2026-04-23 09:00 A | 2026-04-23 10:00 A |  | 100% |  |  |  | start no earlier than 2026-04-24 09:00 | Бобренок В; Тимофеев В | 2h | 2h |
| 2199 | 5.76 | взять на зажима для троса на складе и натянуть трос на воротах 5а |  | 2h | 2026-04-25 09:00 A | 2026-04-27 11:00 A |  | 100% |  |  |  | start no earlier than 2026-04-25 09:00 | Макаревич А | 2h | 2h |
| 2200 | 5.77 | убавить температуры на газ котлах |  | 1h | 2026-04-24 09:00 A | 2026-04-24 10:00 A |  | 100% |  |  |  | start no earlier than 2026-04-24 09:00 | Шуранов Ю | 1h | 1h |
| 2201 | 5.78 | заварить сито и хомуты |  | 1h | 2026-04-24 09:00 A | 2026-04-24 10:00 A |  | 100% |  |  |  | start no earlier than 2026-04-24 09:00 | Тимофеев В | 1h | 1h |
| 2202 | 5.79 | проверка вибросит детальный осмотр с полной разборкой / ремонт трещин |  | 4h | 2026-04-21 09:00 A | 2026-04-21 13:00 A |  | 100% |  |  |  | start no earlier than 2026-04-21 09:00 | Бундин В | 4h | 4h |
| 2203 | 5.80 | протяжка анкеров стеллажей, болтается |  | 2h | 2026-04-20 09:00 A | 2026-04-20 11:00 A |  | 100% |  |  |  | start no earlier than 2026-04-20 09:00 | Макаревич А | 2h | 2h |
| 2204 | 5.81 | замена потускневших ламп в инсекютере. Мастеру сообщить кол-во. б/у складывать в коробку |  | 2h | 2026-05-06 09:00 A | 2026-05-06 11:00 A |  | 100% |  |  |  | start no earlier than 2026-05-06 09:00 | Бобренок В | 2h | 2h |
| 2205 | 5.82 | переворачиваем молотки дробилка |  | 4h | 2026-04-15 09:00 A | 2026-04-15 13:00 A |  | 100% |  |  |  | start no earlier than 2026-04-17 08:00 | Макаревич А; Тимофеев В | 8h | 8h |
| 2206 | 5.83 | завершить работы по примыканию к кровли 5А (излишки изоспан) |  | 1d? | 2026-06-19 09:00 | 2026-06-19 18:00 |  |  |  |  | 200.59d | start no earlier than 2026-06-19 09:00 | Олег | 8h |  |
| 2207 | 5.84 | монтаж тамбур для завоза навесок |  | 10d | 2026-04-16 09:00 | 2026-04-29 18:00 |  |  |  |  | 237.59d | start no earlier than 2026-04-16 08:00 | Некрасов А; Олег | 160h |  |
| 2208 | 5.85 | вырезать верхушку еврокуба возле мусорки, будет туда засыпать отсев для дворника | manual | 1h | 2026-04-18 09:00 A | 2026-04-18 10:00 A |  | 100% |  |  |  | start no earlier than 2026-04-18 09:00 | Макаревич А | 1h | 1h |
| 2209 | 5.86 | заварить хомуты и сетки от сито |  | 1h | 2026-04-14 09:00 A | 2026-04-14 10:00 A |  | 100% |  |  |  | start no earlier than 2026-04-14 08:00 | Труфанов А | 1h | 1h |
| 2210 | 5.87 | проверить дист. Воду на штабелере, если нужно долить (фото модели акб) |  | 1h | 2026-04-13 09:00 A | 2026-04-13 10:00 A |  | 100% |  |  |  | start no earlier than 2026-04-13 08:00 | Бундин В | 1h | 1h |
| 2211 | 5.88 | установка шнека отремонтированного обратно на дробилку |  | 6h | 2026-04-21 09:00 A | 2026-04-21 16:00 A |  | 100% |  |  |  | start no earlier than 2026-04-21 09:00 | Некрасов А; Труфанов А | 12h | 12h |
| 2212 | 5.89 | установка бойлера отремонтированного в туалет, а с туалета на 2 этаж, мастер выделит человека в помощь |  | 4h | 2026-04-13 09:00 A | 2026-04-13 13:00 A |  | 100% |  |  |  | start no earlier than 2026-04-13 09:00 | Труфанов А | 4h | 4h |
| 2213 | 5.90 | замена паука на расстаривателе- высокие бэги не могут поднять до конца |  | 1h | 2026-04-10 08:00 A | 2026-04-10 10:00 A |  | 100% |  |  |  | start no earlier than 2026-04-10 08:00 | Тимофеев В | 1h | 1h |

| ID | WBS | Task | Type | Duration | Start | Finish | Predecessors | Complete | Actual start | Actual finish | Constraint | Resources | Work | Actual work |
| --- | --- | --- | --- | --- | --- | --- | --- | --- | --- | --- | --- | --- | --- | --- |
| 2214 | 5.91 | **получить насос Wilo, установить на 1 газовый котел** |  | 0.12d | 2026-04-10 09:00 A | 2026-04-10 10:00 A |  | 100% |  |  |  | Бундин В | 2h | 2h |
| 2215 | 5.91.1 | проверить направление подачи воды, посмотреть по аналогии 2 котла |  | 1h | 2026-04-10 09:00 A | 2026-04-10 10:00 A |  | 100% |  |  | start no earlier than 2026-04-10 09:00 | Тимофеев В | 1h | 1h |
| 2216 | 5.92 | ремот сеток с сито |  | 2h | 2026-04-06 09:00 A | 2026-04-06 11:00 A |  | 100% |  |  | start no earlier than 2026-04-06 08:00 | Труфанов А | 2h | 2h |
| 2217 | 5.93 | на выходах из сито №1 и №2 установить сетки с бортиками |  | 2h | 2026-04-06 09:00 A | 2026-04-06 11:00 A |  | 100% |  |  | start no earlier than 2026-04-06 08:00 | Труфанов А | 2h | 2h |
| 2218 | 5.94 | сыпит сырье с дробилки (вход) |  | 2h | 2026-06-15 09:00 A | 2026-06-15 11:00 A |  | 100% |  |  | start no earlier than 2026-06-13 09:00 | Некрасов А; Труфанов А | 4h | 4h |
| 2219 | 5.95 | востановить ручной штурвал заслонки на растаривателе дробилки |  | 1h | 2026-04-02 08:00 A | 2026-04-02 10:00 A |  | 100% |  |  | start no earlier than 2026-04-02 08:00 | Бобренок В | 1h | 1h |
| 2220 | 5.96 | изготовить штурвал заслонки на растариватель вибросита у стены |  | 2h | 2026-04-13 09:00 A | 2026-04-13 11:00 A |  | 100% |  |  | start no earlier than 2026-04-13 09:00 | Труфанов А | 2h | 2h |
| 2221 | 5.97 | монтаж отбойников | manual | 6h | 2026-04-18 09:00 A | 2026-04-18 16:00 A |  | 100% |  |  | start no earlier than 2026-04-18 09:00 | Бобренок В | 6h | 6h |
| 2222 | 5.98 | **ремонт шкаф управления шнеком 1 растариватель (замена щитка взять на складе)** |  | 13.5d? | 2026-04-21 09:00 | 2026-05-07 13:00 |  | 100% | 2026-04-17 09:00 | 2026-04-29 09:30 |  |  | 91.75h | 91.75h |
| 2223 | 5.98.1 | вывод кнопки управления частотником на ШУ (если нужно замена частотника) с мастером согласовать остановку |  | 5h | 2026-04-20 09:00 A | 2026-04-20 15:00 A |  | 100% |  |  | start no earlier than 2026-04-20 09:00 | Дедов В | 5h | 5h |
| 2224 | 5.98.2 | установить кнопочный пост |  | 2h | 2026-04-21 09:00 A | 2026-04-21 11:00 A |  | 100% |  |  | start no earlier than 2026-04-21 09:00 | Дедов В | 2h | 2h |
| 2225 | 5.98.3 | заявка кнопка SB7 |  | 15min | 2026-04-21 09:00 A | 2026-04-21 09:15 A |  | 100% |  |  | start no earlier than 2026-04-21 09:00 | Зорькин В | 0.25h | 0.25h |
| 2226 | 5.98.4 | доставка |  | 5d | 2026-04-21 09:15 A | 2026-04-28 09:15 A | 2225 | 100% |  |  | start no earlier than 2026-04-20 08:00 | Карабанов | 40h | 40h |
| 2227 | 5.98.5 | замена |  | 1h | 2026-04-27 09:15 A | 2026-04-27 10:15 A | 2226 | 100% |  |  | start no earlier than 2026-04-20 08:00 | Дедов В | 1h | 1h |
| 2228 | 5.98.6 | ремонт корпус |  | 1h | 2026-04-17 09:00 A | 2026-04-17 10:00 A | 2223 | 100% |  |  | start no earlier than 2026-04-09 09:00 | Труфанов А | 1h | 1h |
| 2229 | 5.98.7 | **замена корпус** |  | 6.06d | 2026-04-21 09:00 A | 2026-04-29 09:30 A |  | 100% |  |  |  |  | 42.5h | 42.5h |
| 2230 | 5.98.7.1 | заявка |  | 30min | 2026-04-21 09:00 A | 2026-04-21 09:30 A |  | 100% |  |  | start no earlier than 2026-03-31 08:00 | Зорькин В | 0.5h | 0.5h |
| 2231 | 5.98.7.2 | доставка |  | 5d | 2026-04-21 09:30 A | 2026-04-29 09:30 A | 2230 | 100% |  |  | start no earlier than 2026-03-31 08:00 | Карабанов | 40h | 40h |
| 2232 | 5.98.7.3 | замена |  | 2h | 2026-04-28 09:30 A | 2026-04-28 11:30 A | 2231 | 100% |  |  | start no earlier than 2026-04-14 09:00 | Тимофеев В | 2h | 2h |
| 2233 | 5.99 | получить фланец на складе NMRV040 и установить мотор-редуктор на расстаривателе №1 |  | 2h | 2026-04-28 09:00 A | 2026-04-28 11:00 A |  | 100% |  |  | start no earlier than 2026-04-28 09:00 | Бундин В | 2h | 2h |
| 2234 | 5.100 | убрать красный скотч везде в дробилке, сделать крепление фильтра с малой дробилки на ленточный хомут |  | 3h | 2026-03-27 09:00 A | 2026-03-27 12:00 A |  | 100% |  |  | start no earlier than 2026-03-27 08:00 | Труфанов А | 3h | 3h |
| 2235 | 5.101 | ремонт вибросито |  | 4h | 2026-03-27 08:00 A | 2026-03-27 13:00 A |  | 100% |  |  | start no earlier than 2026-03-27 08:00 | Тимофеев В; Некрасов А | 7h | 7h |
| 2236 | 5.102 | заварить сито возле слесарки (2 шт) и деки 2 шт |  | 3h | 2026-03-26 09:00 A | 2026-03-26 12:00 A |  | 100% |  |  | start no earlier than 2026-03-26 08:00 | Труфанов А | 3h | 3h |
| 2237 | 5.103 | сделать отбойник на входную дверь |  | 1h | 2026-03-28 09:00 A | 2026-03-30 10:00 A |  | 100% |  |  | start no earlier than 2026-03-28 09:00 | Бундин В | 1h | 1h |
| 2238 | 5.104 | сделать трап в курилку |  | 3h | 2026-04-01 09:00 A | 2026-04-01 12:00 A |  | 100% |  |  | start no earlier than 2026-04-01 09:00 | Бундин В | 3h | 3h |
| 2239 | 5.105 | заварить бункер дробилки |  | 2h | 2026-03-24 09:00 A | 2026-03-24 11:00 A |  | 100% |  |  | start no earlier than 2026-03-24 09:00 | Некрасов А; Труфанов А | 4h | 4h |
| 2240 | 5.106 | перенос металл с торца стеллажа напротив ВРУ / на син склад |  | 1h | 2026-03-25 09:00 A | 2026-03-25 10:00 A |  | 100% |  |  | start no earlier than 2026-03-25 09:00 | Бобренок В | 1h | 1h |
| 2241 | 5.107 | пульт управления шибером растариватель правый демонтаж красный скотч / закрепить |  | 1h | 2026-03-22 09:00 A | 2026-03-23 10:00 A |  | 100% |  |  | start no earlier than 2026-03-22 09:00 | Бобренок В | 1h | 1h |
| 2242 | 5.108 | установить корпус на переключатель реверса шнек растаривателя правый / продуть от пыли контакты |  | 30min | 2026-03-22 09:00 A | 2026-03-23 09:30 A |  | 100% |  |  | start no earlier than 2026-03-22 09:00 | Бобренок В | 0.5h | 0.5h |
| 2243 | 5.109 | демонтаж розетки без крышки 2 этаж щиток в фае |  | 30min | 2026-03-25 09:00 A | 2026-03-25 09:30 A |  | 100% |  |  | start no earlier than 2026-03-25 09:00 | Бобренок В | 0.5h | 0.5h |
| 2244 | 5.110 | подлючить розетку для зарядки нового АКБ для штабелера Ц.5А |  | 2h | 2026-03-21 09:00 A | 2026-03-23 11:00 A |  | 100% |  |  | start no earlier than 2026-03-21 09:00 | Дедов В | 2h | 2h |

| ID | WBS | Task | Type | Duration | Start | Finish | Predecessors | Complete | Total slack | Free slack | Constraint | Resources | Work | Actual work |
| --- | --- | --- | --- | --- | --- | --- | --- | --- | --- | --- | --- | --- | --- | --- |
| 2245 | 5.111 | **ремонт шнек с дробилки** |  | 11.75d | 2026-03-17 09:00 A | 2026-04-01 16:00 A |  | 100% |  |  |  |  | 7h | 7h |
| 2246 | 5.111.1 | орг пескоструйка корпус шнека - отправить |  | 1h | 2026-03-17 09:00 A | 2026-03-17 10:00 A |  | 100% |  |  | start no earlier than 2026-03-17 08:00 | Шуранов Ю | 1h | 1h |
| 2247 | 5.111.2 | сборка шнека с ремонта |  | 6h | 2026-04-01 09:00 A | 2026-04-01 16:00 A | 2246 | 100% |  |  | start no earlier than 2026-04-01 09:00 | Некрасов А | 6h | 6h |
| 2248 | 5.112 | установить уплотнения на гофра без красн скотча |  | 4h | 2026-03-20 09:00 A | 2026-03-20 13:00 A |  | 100% |  |  | start no earlier than 2026-03-20 09:00 | Некрасов А; Труфанов А | 8h | 8h |
| 2249 | 5.113 | добавить воду в 4 газ. Котел проверить реальное давление в системе |  | 2h | 2026-03-19 08:00 A | 2026-03-19 11:00 A |  | 100% |  |  | start no earlier than 2026-03-19 08:00 | Бундин В | 2h | 2h |
| 2250 | 5.114 | сменить палярность вращения дробилки / сточило ножи |  | 1h | 2026-03-16 09:00 A | 2026-03-16 10:00 A |  | 100% |  |  | start no earlier than 2026-03-16 09:00 | Труфанов А; Некрасов А | 2h | 2h |
| 2251 | 5.115 | **устанвить ИБП на клапан газ** |  | 0.03d | 2026-03-16 09:00 A | 2026-03-16 09:15 A |  | 100% |  |  |  |  | 0.25h | 0.25h |
| 2252 | 5.115.1 | координация сроков выполнения с газовщиком |  | 15min | 2026-03-16 09:00 A | 2026-03-16 09:15 A |  | 100% |  |  | start no earlier than 2026-03-16 09:00 | Шуранов Ю | 0.25h | 0.25h |
| 2253 | 5.116 | **установить вентилятор с клапаном и фильтром** |  | 11.03d? | 2026-03-18 09:00 | 2026-04-02 09:15 |  |  | 257.56d |  |  |  | 88.25h |  |
| 2254 | 5.116.1 | получить сммету / счет |  | 15min | 2026-03-18 09:00 | 2026-03-18 09:15 |  |  | 257.56d | 0d | start no earlier than 2026-03-18 09:00 | Домоводов К | 0.25h |  |
| 2255 | 5.116.2 | изготовление поставка |  | 10d | 2026-03-18 09:15 | 2026-04-01 09:15 | 2254 |  | 257.56d | 0d | start no earlier than 2026-03-17 08:00 | оплот | 80h |  |
| 2256 | 5.116.3 | монтаж |  | 1d? | 2026-04-01 09:15 | 2026-04-02 09:15 | 2255 |  | 257.56d |  | start no earlier than 2026-03-17 08:00 | оплот | 8h |  |
| 2257 | 5.117 | закрыть отвертстие от демонтированной аспирации фильтротканью. Временно, до изг фильтра |  | 1h | 2026-03-13 08:00 A | 2026-03-13 10:00 A |  | 100% |  |  | start no earlier than 2026-03-13 08:00 | Дедов В | 1h | 1h |
| 2258 | 5.118 | **на отверстие от демонтированной оспирации установить фильтр** |  | 7.01d | 2026-03-20 09:00 A | 2026-03-31 09:05 A |  | 100% |  |  |  |  | 2.08h | 2.08h |
| 2259 | 5.118.1 | получить фильтры |  | 5min | 2026-03-31 09:00 A | 2026-03-31 09:05 A |  | 100% |  |  | start no earlier than 2026-03-31 09:00 | Шуранов Ю | 0.08h | 0.08h |
| 2260 | 5.118.2 | монтаж |  | 1h | 2026-03-20 09:00 A | 2026-03-20 10:00 A | 2259FS+1d | 100% |  |  | start no earlier than 2026-03-20 09:00 | Некрасов А; Труфанов А | 2h | 2h |
| 2261 | 5.119 | **устранить ржавчину шнека после дробилки** |  | 1d? | 2026-03-16 09:00 A | 2026-03-16 18:00 A |  | 100% |  |  |  |  | 16h | 16h |
| 2262 | 5.119.1 | полная разборка / зачистка / сборка |  | 1d? | 2026-03-16 09:00 A | 2026-03-16 18:00 A |  | 100% |  |  | start no earlier than 2026-03-16 09:00 | Труфанов А; Некрасов А | 16h | 16h |
| 2263 | 5.119.2 | согласовать чем можно покрыть шнек внутри | milestone | 0d | 2026-03-16 09:00 A | 2026-03-16 09:00 A |  | 100% |  |  | start no earlier than 2026-03-16 09:00 | Домоводов К |  |  |
| 2264 | 5.120 | заменаить гидро АКБ на насосной станции / замена мебраны и золотника |  | 2h | 2026-03-15 09:00 A | 2026-03-16 11:00 A |  | 100% |  |  | start no earlier than 2026-03-15 09:00 | Бундин В | 2h | 2h |
| 2265 | 5.121 | устарнить выдавливание материала с шнека №1 узел дробилки |  | 4h | 2026-03-13 09:00 A | 2026-03-13 13:00 A |  | 100% |  |  | start no earlier than 2026-03-13 09:00 | Тимофеев В; Бундин В | 8h | 8h |
| 2266 | 5.122 | проверить обр клапан бойлер в гардеробе. Стреляет |  | 30min | 2026-03-13 09:00 A | 2026-03-13 09:30 A |  | 100% |  |  | start no earlier than 2026-03-13 09:00 | Бундин В | 0.5h | 0.5h |
| 2267 | 5.123 | долить дистилят в АКБ штабелер свинцовый |  | 1h | 2026-03-11 09:00 A | 2026-03-11 10:00 A |  | 100% |  |  | start no earlier than 2026-03-11 09:00 | Макаревич А | 1h | 1h |
| 2268 | 5.124 | **замена бойлер туалет** |  | 16.25d | 2026-03-23 09:00 A | 2026-04-14 11:00 A |  | 100% |  |  |  |  | 82.25h | 82.25h |
| 2269 | 5.124.1 | заявка бойлер |  | 15min | 2026-03-23 09:00 A | 2026-03-23 09:15 A |  | 100% |  |  | start no earlier than 2026-03-23 09:00 | Шуранов Ю | 0.25h | 0.25h |
| 2270 | 5.124.2 | доставка |  | 10d | 2026-03-30 09:00 A | 2026-04-10 18:00 A | 2269 | 100% |  |  | start no earlier than 2026-03-29 09:00 | Карабанов | 80h | 80h |
| 2271 | 5.124.3 | монтаж |  | 2h | 2026-04-14 09:00 A | 2026-04-14 11:00 A | 2270 | 100% |  |  | start no earlier than 2026-03-12 08:00 | Тимофеев В | 2h | 2h |
| 2272 | 5.125 | ремонт хомут с вибросито |  | 1h | 2026-03-10 09:00 A | 2026-03-10 10:00 A |  | 100% |  |  | start no earlier than 2026-03-10 09:00 | Макаревич А | 1h | 1h |
| 2273 | 5.126 | Заварить деку на сито |  | 2h | 2026-03-06 09:00 A | 2026-03-06 11:00 A |  | 100% |  |  | start no earlier than 2026-03-06 09:00 | Тимофеев В | 2h | 2h |
| 2274 | 5.127 | Замена двойной розетки (созвон с Шурановым) или спросить у мастера |  | 1h | 2026-03-05 08:00 A | 2026-03-05 10:00 A |  | 100% |  |  | start no earlier than 2026-03-05 08:00 | Дедов В | 1h | 1h |
| 2275 | 5.128 | ошибка Е10 стиральная машинка |  | 1h | 2026-03-04 09:00 A | 2026-03-04 10:00 A |  | 100% |  |  | start no earlier than 2026-03-04 09:00 | Дедов В | 1h | 1h |
| 2276 | 5.129 | ремонт сито, сварка шов |  | 2h | 2026-03-03 09:00 A | 2026-03-03 11:00 A |  | 100% |  |  | start no earlier than 2026-03-03 09:00 | Макаревич А | 2h | 2h |
| 2277 | 5.130 | ремонт растариватель №1 + установить косынки |  | 2h | 2026-03-03 09:00 A | 2026-03-03 11:00 A |  | 100% |  |  | start no earlier than 2026-03-03 09:00 | Некрасов А; Труфанов А | 4h | 4h |

| ID | WBS | Task | Duration | Start | Finish | Predecessors | Complete | Actual start | Constraint | Resources | Work | Actual work |
| --- | --- | --- | --- | --- | --- | --- | --- | --- | --- | --- | --- | --- |
| 2278 | 5.131 | **ремонт растаривателя №3 - клинит заслонку** | 97.81d | 2026-04-20 09:00 A | 2026-09-02 16:30 A |  | 100% |  |  |  | 16.92h | 16.92h |
| 2279 | 5.131.1 | установка ручной штурвал управления шибером | 2h | 2026-04-20 09:00 A | 2026-04-20 11:00 A |  | 100% |  | start no earlier than 2026-04-20 09:00 | Бундин В | 2h | 2h |
| 2280 | 5.131.2 | контроль поставка Зип - оплачивали или нет? | 10min | 2026-08-12 09:00 A | 2026-08-12 09:10 A |  | 100% |  | start no earlier than 2026-08-12 09:00 | Зорькин В | 0.17h | 0.17h |
| 2281 | 5.131.3 | получить счет | 15min | 2026-08-13 09:00 A | 2026-08-13 09:15 A |  | 100% |  | start no earlier than 2026-08-13 09:00 | Домоводов К | 0.25h | 0.25h |
| 2282 | 5.131.4 | контроль поставки | 15min | 2026-08-31 09:15 A | 2026-08-31 09:30 A | 2281FS+12d | 100% |  | start no earlier than 2026-08-31 09:00 | Зорькин В | 0.25h | 0.25h |
| 2283 | 5.131.5 | приемка | 15min | 2026-09-01 09:30 A | 2026-09-01 09:45 A | 2282FS+1d | 100% |  | start no earlier than 2026-08-31 09:00 | Зорькин В | 0.25h | 0.25h |
| 2284 | 5.131.6 | замена | 4h | 2026-09-02 09:30 A | 2026-09-02 14:30 A | 2283FS+1d | 100% |  | start no earlier than 2026-08-12 09:00 | Тимофеев В | 4h | 4h |
| 2285 | 5.131.7 | Ремонт паука с растаривателя, оценить состояние. | 2h | 2026-09-02 09:00 A | 2026-09-02 11:00 A |  | 100% |  | start no earlier than 2026-09-02 09:00 | Тимофеев В | 2h | 2h |
| 2286 | 5.131.8 | установить фланец на редуктор NMRV050 | 2h | 2026-05-18 09:00 A | 2026-05-18 11:00 A |  | 100% |  | start no earlier than 2026-05-20 09:00 | Бобренок В | 2h | 2h |
| 2287 | 5.131.9 | настройка тепловое реле, настройка концевиков | 2h | 2026-09-02 14:30 A | 2026-09-02 16:30 A | 2284, 2286 | 100% |  | start no earlier than 2026-05-08 09:00 | Дедов В | 2h | 2h |
| 2288 | 5.131.10 | доработка пластины, которая клинит | 4h | 2026-05-07 09:00 A | 2026-05-07 13:00 A |  | 100% |  | start no earlier than 2026-05-07 09:00 | Тимофеев В | 4h | 4h |
| 2289 | 5.132 | **установить курилку на раму. Изготовить лавочку** | 19.25d? | 2026-02-28 09:00 A | 2026-03-27 11:00 A |  | 100% |  |  |  | 27h | 27h |
| 2290 | 5.132.1 | сделать удлинители для синей платформы, на которые встанет курилка | 1d? | 2026-02-28 09:00 A | 2026-03-02 18:00 A |  | 100% |  | start no earlier than 2026-02-28 09:00 | Макаревич А | 8h | 8h |
| 2291 | 5.132.2 | закрыть отверстие в полу жзелезом | 1h | 2026-03-13 09:00 A | 2026-03-13 10:00 A |  | 100% |  | start no earlier than 2026-03-13 09:00 | Некрасов А; Труфанов А | 2h | 2h |
| 2292 | 5.132.3 | монтаж фанера на лавочку | 2h | 2026-03-27 09:00 A | 2026-03-27 11:00 A | 2291 | 100% |  | start no earlier than 2026-03-27 09:00 |  |  |  |
| 2293 | 5.132.4 | поворот курилки к стене, от ветра | 1h | 2026-03-20 09:00 A | 2026-03-20 10:00 A |  | 100% |  | start no earlier than 2026-03-20 09:00 | Некрасов А | 1h | 1h |
| 2294 | 5.132.5 | изготовить трап входной | 4h | 2026-03-20 10:00 A | 2026-03-20 15:00 A | 2293 | 100% |  | start no earlier than 2026-03-12 08:00 | Некрасов А | 4h | 4h |
| 2295 | 5.132.6 | изготовить лавку по периметру курилки. На железо будет потом доска или пенка. Металл с остатков 3ц или с синего склада | 1d? | 2026-03-01 09:00 A | 2026-03-02 18:00 A |  | 100% |  | start no earlier than 2026-03-01 09:00 | Макаревич А | 8h | 8h |
| 2296 | 5.132.7 | приготовить ручки за которые будет толпа поднимать руками курилку | 2h | 2026-03-09 09:00 A | 2026-03-09 11:00 A |  | 100% |  | start no earlier than 2026-03-09 09:00 | Некрасов А; Труфанов А | 4h | 4h |
| 2297 | 5.133 | ТО штабелеров - обрезать нитки. Дефектовка подшипников, указать в отчете состояние | 2h | 2026-03-01 09:00 A | 2026-03-02 11:00 A |  | 100% |  | start no earlier than 2026-03-01 09:00 | Макаревич А | 2h | 2h |
| 2298 | 5.134 | **штабелер - замена ролик мачты. Подшипник котка** | 0.01d | 2026-03-03 09:00 A | 2026-03-03 09:05 A |  | 100% |  |  |  | 0.17h | 0.17h |
| 2299 | 5.134.1 | контроль | 5min | 2026-03-03 09:00 A | 2026-03-03 09:05 A |  | 100% |  | start no earlier than 2026-03-03 09:00 | Зорькин В; Тракресурс | 0.17h | 0.17h |
| 2300 | 5.135 | **установить стеллажи для архив образцов** | 25.06d? | 2026-03-03 09:00 | 2026-04-07 09:30 A |  | 100% | 2026-03-05 09:00 |  |  | 227.25h | 227.25h |
| 2301 | 5.135.1 | монтаж освещение | 4h | 2026-03-06 09:00 A | 2026-03-06 13:00 A |  | 100% |  | start no earlier than 2026-03-06 09:00 | Некрасов А; Труфанов А | 8h | 8h |

| ID | WBS | Task | Duration | Start | Finish | Predecessors | Complete | Actual start | Actual finish | Constraint | Resources | Work | Actual work |
| --- | --- | --- | --- | --- | --- | --- | --- | --- | --- | --- | --- | --- | --- |
| 2302 | 5.135.2 | **покрасить стеллажи** | 12.02d | 2026-03-06 14:00 A | 2026-03-24 14:10 A | 2301 | 100% |  |  |  |  | 92.17h | 92.17h |
| 2303 | 5.135.2.1 | Заказать краску не пахнущую для радиаторов | 10min | 2026-03-06 14:00 A | 2026-03-06 14:10 A |  | 100% |  |  | start no earlier than 2026-03-03 09:00 | Зорькин В | 0.17h | 0.17h |
| 2304 | 5.135.2.2 | Доставка | 10d | 2026-03-06 14:10 A | 2026-03-24 14:10 A | 2303 | 100% |  |  | start no earlier than 2026-03-03 09:00 | Карабанов | 80h | 80h |
| 2305 | 5.135.2.3 | покраска | 4h | 2026-03-06 14:00 A | 2026-03-06 18:00 A |  | 100% |  |  | start no earlier than 2026-03-06 09:00 | Некрасов А; Труфанов А | 8h | 8h |
| 2306 | 5.135.2.4 | покраска | 4h | 2026-03-06 14:00 A | 2026-03-06 18:00 A |  | 100% |  |  | start no earlier than 2026-03-06 09:00 | Бундин В | 4h | 4h |
| 2307 | 5.135.3 | занести стеллажи в кабинеты с работниками 5ц | 4h | 2026-03-09 09:00 A | 2026-03-09 13:00 A | 2309 | 100% |  |  | start no earlier than 2026-03-09 09:00 | Бобренок В | 4h | 4h |
| 2308 | 5.135.4 | сборка стеллажей | 4h | 2026-03-13 09:00 A | 2026-03-13 13:00 A |  | 100% |  |  | start no earlier than 2026-03-13 09:00 | Труфанов А; Некрасов А | 8h | 8h |
| 2309 | 5.135.5 | монтаж доп полок с уголка | 4h | 2026-03-08 09:00 A | 2026-03-09 13:00 A | 2310 | 100% |  |  | start no earlier than 2026-03-08 09:00 | Бобренок В | 4h | 4h |
| 2310 | 5.135.6 | напилить фанеру на стеллажи | 8h | 2026-03-15 09:00 A | 2026-03-16 18:00 A |  | 100% |  |  | start no earlier than 2026-03-15 09:00 | Бундин В | 8h | 8h |
| 2311 | 5.135.7 | напилить фанеру на стеллажи | 4h | 2026-03-16 09:00 A | 2026-03-16 13:00 A |  | 100% |  |  | start no earlier than 2026-03-16 09:00 | Макаревич А; Тимофеев В | 8h | 8h |
| 2312 | 5.135.8 | **монтаж двери** | 8.06d? | 2026-03-03 09:00 | 2026-03-11 09:30 |  | 100% | 2026-03-05 09:00 | 2026-04-07 09:30 |  |  | 95.08h | 95.08h |
| 2313 | 5.135.8.1 | заявка фурнитуры | 30min | 2026-03-05 09:00 A | 2026-03-05 09:30 A |  | 100% |  |  | start no earlier than 2026-03-05 09:00 | Зорькин В | 0.5h | 0.5h |
| 2314 | 5.135.8.2 | получить коробку на дверь / контроолль поставки | 5min | 2026-03-18 09:00 A | 2026-03-18 09:05 A |  | 100% |  |  | start no earlier than 2026-03-18 09:00 | Зорькин В | 0.08h | 0.08h |
| 2315 | 5.135.8.3 | монтаж 2 двери | 4h | 2026-03-20 09:00 A | 2026-03-20 13:00 A |  | 100% |  |  | start no earlier than 2026-03-20 09:00 | Тимофеев В; Бундин В | 8h | 8h |
| 2316 | 5.135.8.4 | монтаж замка и ручек | 2h | 2026-03-24 09:00 A | 2026-03-24 11:00 A |  | 100% |  |  | start no earlier than 2026-03-24 09:00 | Тимофеев В | 2h | 2h |
| 2317 | 5.135.8.5 | **монтаж наличноков** | 10.06d | 2026-03-24 09:00 A | 2026-04-07 09:30 A |  | 100% |  |  |  |  | 84.5h | 84.5h |
| 2318 | 5.135.8.5.1 | заявка на наличинки | 30min | 2026-03-24 09:00 A | 2026-03-24 09:30 A |  | 100% |  |  | start no earlier than 2026-03-24 09:00 | Зорькин В | 0.5h | 0.5h |
| 2319 | 5.135.8.5.2 | доставка | 10d | 2026-03-24 09:30 A | 2026-04-07 09:30 A | 2318 | 100% |  |  | start no earlier than 2026-03-20 08:00 | Карабанов | 80h | 80h |
| 2320 | 5.135.8.5.3 | монтаж | 4h | 2026-04-04 09:30 A | 2026-04-06 13:00 A | 2319 | 100% |  |  | start no earlier than 2026-03-20 08:00 | Тимофеев В | 4h | 4h |
| 2321 | 5.136 | **монтаж розеток для весов** | 83d | 2026-03-02 09:00 A | 2026-06-24 18:00 A |  | 100% |  |  |  |  | 98.5h | 98.5h |
| 2322 | 5.136.1 | составить план монтажа, расчет материалов | 30min | 2026-03-02 09:00 A | 2026-03-02 09:30 A |  | 100% |  |  | start no earlier than 2026-03-02 09:00 | Некрасов А; Зорькин В; Труфанов А | 1.5h | 1.5h |
| 2323 | 5.136.2 | заявка трос/ талреп | 30min | 2026-03-02 09:30 A | 2026-03-02 10:00 A | 2322 | 100% |  |  | start no earlier than 2026-02-27 08:00 | Зорькин В | 0.5h | 0.5h |
| 2324 | 5.136.3 | доставка | 10d | 2026-03-02 10:00 A | 2026-03-16 10:00 A | 2323 | 100% |  |  | start no earlier than 2026-02-27 08:00 | Карабанов | 80h | 80h |
| 2325 | 5.136.4 | комплектация | 30min | 2026-06-01 09:00 A | 2026-06-01 09:30 A |  | 100% |  |  | start no earlier than 2026-06-01 09:00 | Зорькин В | 0.5h | 0.5h |
| 2326 | 5.136.5 | монтаж | 8h | 2026-06-24 09:00 A | 2026-06-24 18:00 A | 2324 | 100% |  |  | start no earlier than 2026-06-24 09:00 | Тимофеев В; Макаревич А | 16h | 16h |

| ID | WBS | Task | Duration | Start | Finish | Predecessors | Complete | Remaining | Total slack | Free slack | Constraint | Resources | Work | Actual work |
| --- | --- | --- | --- | --- | --- | --- | --- | --- | --- | --- | --- | --- | --- | --- |
| 2327 | 5.137 | **установить кнопочный пост вентилятора в окно в доступную зону** | 5.06d | 2026-03-03 09:00 A | 2026-03-10 09:30 |  | 1% | 5.01d | 274.53d |  |  |  | 44.5h | 0.5h |
| 2328 | 5.137.1 | заявка частотник 0,5-0,75квт | 30min | 2026-03-03 09:00 A | 2026-03-03 09:30 A |  | 100% |  |  |  | start no earlier than 2026-03-03 09:00 | Зорькин В | 0.5h | 0.5h |
| 2329 | 5.137.2 | доставка | 5d | 2026-03-03 09:30 | 2026-03-10 09:30 | 2328 |  |  | 274.53d |  | start no earlier than 2026-02-27 08:00 | Карабанов | 40h |  |
| 2330 | 5.137.3 | монтаж | 4h | 2026-03-03 09:00 | 2026-03-03 13:00 |  |  |  | 279.09d |  | start no earlier than 2026-03-03 09:00 | Дедов В | 4h |  |
| 2331 | 5.138 | замена местами бойлер с раздевали и кухня | 2h | 2026-02-27 09:00 A | 2026-02-27 11:00 A |  | 100% |  |  |  | start no earlier than 2026-02-27 08:00 | Бундин В; Труфанов А | 4h | 4h |
| 2332 | 5.139 | **установить калорифер на 4 котел** | 17d? | 2026-10-12 09:00 | 2026-11-02 18:00 |  |  |  | 95.59d |  |  |  | 97h |  |
| 2333 | 5.139.1 | заявка | 1h | 2026-10-12 09:00 | 2026-10-12 10:00 |  |  |  | 101.47d | 0d | start no earlier than 2026-10-12 09:00 | Зорькин В | 1h |  |
| 2334 | 5.139.2 | доставка | 10d | 2026-10-12 10:00 | 2026-10-23 10:00 | 2333 |  |  | 101.47d | 5.88d | start no earlier than 2026-02-27 08:00 | Карабанов | 80h |  |
| 2335 | 5.139.3 | монтаж | 1d? | 2026-11-02 09:00 | 2026-11-02 18:00 | 2334 |  |  | 95.59d |  | start no earlier than 2026-11-02 09:00 | Некрасов А; Труфанов А | 16h |  |
| 2336 | 5.140 | аудит по взрывоопасности 5ц | 1d? | 2025-09-03 09:00 | 2025-09-03 18:00 |  |  |  | 407.59d |  | start no earlier than 2025-09-03 09:00 |  |  |  |
| 2337 | 5.141 | **расширить прорем для проезда погрузчика** | 3d? | 2024-05-27 09:00 | 2024-05-29 18:00 |  |  |  | 737.59d |  |  |  | 24h |  |
| 2338 | 5.141.1 | перенос канализ трубы | 1d? | 2024-05-27 09:00 | 2024-05-27 18:00 |  |  |  | 737.59d | 0d | start no earlier than 2024-05-27 09:00 | Некрасов А | 8h |  |
| 2339 | 5.141.2 | монтаж закладных в прорем +400мм | 1d? | 2024-05-28 09:00 | 2024-05-28 18:00 | 2338 |  |  | 737.59d | 0d | start no earlier than 2024-05-17 09:00 | Некрасов А | 8h |  |
| 2340 | 5.141.3 | демонтаж /расширение | 1d? | 2024-05-29 09:00 | 2024-05-29 18:00 | 2339 |  |  | 737.59d |  | start no earlier than 2024-05-17 09:00 | Некрасов А | 8h |  |
| 2341 | 5.142 | подключить концевые выключатели шибера растаривателя | 2h | 2023-06-21 09:00 | 2023-06-21 11:00 |  |  |  | 983.34d |  | start no earlier than 2023-06-21 09:00 | Дедов В | 2h |  |
| 2342 | 5.143 | **установить сирену при включении тельфера** | 119d? | 2023-05-29 09:00 A | 2023-11-09 18:00 |  |  | 118.79d? | 881.59d |  |  |  | 48.08h | 0.08h |
| 2343 | 5.143.1 | заявка на сирену и кабель | 5min | 2023-05-29 09:00 A | 2023-05-29 09:05 A |  | 100% |  |  |  | start no earlier than 2023-05-29 09:00 | Лобанов И | 0.08h | 0.08h |
| 2344 | 5.143.2 | доставка | 5d | 2023-05-29 09:05 | 2023-06-05 09:05 | 2343 |  |  | 994.58d | 112.99d | start no earlier than 2023-05-22 09:00 | Малинина М | 40h |  |
| 2345 | 5.143.3 | монтаж | 1d? | 2023-11-09 09:00 | 2023-11-09 18:00 | 2344 |  |  | 881.59d |  | start no earlier than 2023-11-09 09:00 | Дедов В | 8h |  |
| 2346 | 5.144 | держак мешка для сбора отработанного корма лопатой, что бы второй не держал мешок | 1d? | 2026-05-04 09:00 | 2026-05-04 18:00 |  |  |  | 234.59d |  | start no earlier than 2026-05-04 09:00 | Тимофеев В | 8h |  |
| 2347 | 5.145 | **Замена насосной станции** | 9.25d | 2026-09-01 09:00 A | 2026-09-11 11:00 A |  | 100% |  |  |  |  |  | 6.33h | 6.33h |
| 2348 | 5.145.1 | Замена насоса | 2h | 2026-09-01 09:00 A | 2026-09-01 11:00 A |  | 100% |  |  |  | start no earlier than 2026-09-01 09:00 | Бундин В | 2h | 2h |
| 2349 | 5.145.2 | Заявка на станцию | 15min | 2026-09-02 09:00 A | 2026-09-02 09:15 A |  | 100% |  |  |  | start no earlier than 2026-09-02 08:00 | Зорькин В | 0.25h | 0.25h |
| 2350 | 5.145.3 | контроль доставки | 5min | 2026-09-11 09:00 A | 2026-09-11 09:05 A |  | 100% |  |  |  | start no earlier than 2026-09-11 09:00 | Зорькин В | 0.08h | 0.08h |
| 2351 | 5.145.4 | установка новой насосной станции | 2h | 2026-09-11 09:00 A | 2026-09-11 11:00 A |  | 100% |  |  |  | start no earlier than 2026-09-11 09:00 | Некрасов А; Макаревич А | 4h | 4h |
| 2352 | 5.146 | Попытаться заварить деки и хомуты той проволокой по нерже, что есть у нас | 3h | 2026-07-28 08:00 A | 2026-07-28 12:00 A |  | 100% |  |  |  | start no earlier than 2026-07-28 08:00 | Макаревич А | 3h | 3h |

| ID | WBS | Task | Duration | Start | Finish | Predecessors | Complete | Remaining | Total slack | Constraint | Resources | Work | Actual work |
| --- | --- | --- | --- | --- | --- | --- | --- | --- | --- | --- | --- | --- | --- |
| 2353 | 5.147 | **5 цех** | 0.25d | 2026-04-07 09:00 A | 2026-04-07 11:00 A |  | 100% |  |  |  |  | 3.5h | 3.5h |
| 2354 | 5.147.1 | Установка сеток на сито | 1h | 2026-04-07 09:00 A | 2026-04-07 10:00 A |  | 100% |  |  | start no earlier than 2026-04-07 08:00 | Бундин В | 1h | 1h |
| 2355 | 5.147.2 | **2 цех** | 0.25d | 2026-04-07 09:00 A | 2026-04-07 11:00 A |  | 100% |  |  |  |  | 2.5h | 2.5h |
| 2356 | 5.147.2.1 | Взять шланг с мойки зона экструдера, установить на складе навесок цех 2, для набора воды в кубы | 30min | 2026-04-07 09:00 A | 2026-04-07 09:30 A |  | 100% |  |  | start no earlier than 2026-04-07 08:00 | Бундин В | 0.5h | 0.5h |
| 2357 | 5.147.2.2 | Посмотреть подачу воды на поломоечной машинке | 2h | 2026-04-07 09:00 A | 2026-04-07 11:00 A |  | 100% |  |  | start no earlier than 2026-04-07 08:00 | Бундин В | 2h | 2h |
| 2358 | 6 | **модернизация** | 988.5d? | 2023-06-07 09:00 A | 2027-03-03 13:00 |  | 48% | 510.74d? | 5.09d |  |  | 3394.67h | 2643.67h |
| 2359 | 6.1 | доработка нерж труб для парогенератора (антиэлектрод) | 1h | 2026-07-06 09:00 | 2026-07-06 10:00 |  |  |  | 190.47d | start no earlier than 2026-07-06 09:00 | Тимофеев В | 1h |  |
| 2360 | 6.2 | **Дражжировка 2 линия 1 цех** | 0.25d | 2026-07-29 08:00 A | 2026-07-29 11:00 A |  | 100% |  |  |  |  | 2h | 2h |
| 2361 | 6.2.1 | установка трубки с отверстиями, эксперимент | 2h | 2026-07-29 08:00 A | 2026-07-29 11:00 A |  | 100% |  |  | start no earlier than 2026-07-29 08:00 | Тимофеев В | 2h | 2h |
| 2362 | 6.3 | **поточные весы на входе в барабан жира** | 0.12d | 2026-06-15 09:00 A | 2026-06-15 10:00 A |  | 100% |  |  |  |  | 1h | 1h |
| 2363 | 6.3.1 | запрос КП у НОТИС - весы с дозатором / бункеры | 1h | 2026-06-15 09:00 A | 2026-06-15 10:00 A |  | 100% |  |  | start no earlier than 2026-06-15 09:00 | Зорькин В | 1h | 1h |
| 2364 | 6.4 | **устройство загрузки в смесители** | 0.12d | 2026-03-31 09:00 | 2026-03-31 10:00 |  |  |  | 259.47d |  |  | 1h |  |
| 2365 | 6.4.1 | подбор оборудования, запрос КП | 1h | 2026-03-31 09:00 | 2026-03-31 10:00 |  |  |  | 259.47d | start no earlier than 2026-03-31 08:00 | Зорькин В | 1h |  |
| 2366 | 6.5 | **определить параметры сушки гранулы лаб испытанием** | 6d | 2024-09-09 09:00 A | 2024-09-16 18:00 A |  | 100% |  |  |  |  | 16h | 16h |
| 2367 | 6.5.1 | изучить метод материал, физ законы процесса сушки. | 4h | 2024-09-09 09:00 A | 2024-09-09 13:00 A |  | 100% |  |  | start no earlier than 2024-09-09 09:00 | Зорькин В | 4h | 4h |
| 2368 | 6.5.2 | Определить набор средств измерения и оборыдования для лаб работы. | 4h | 2024-09-09 14:00 A | 2024-09-09 18:00 A | 2367 | 100% |  |  | start no earlier than 2024-09-09 09:00 | Зорькин В | 4h | 4h |
| 2369 | 6.5.3 | разрабоать пошаговый план лаб работы сушки 1кг продукта в термошкафу | 4h | 2024-09-16 09:00 A | 2024-09-16 13:00 A | 2368 | 100% |  |  | start no earlier than 2024-09-16 09:00 | Зорькин В | 4h | 4h |
| 2370 | 6.5.4 | определить зависимость времени сушки от температуры и влажности среды. | 4h | 2024-09-16 14:00 A | 2024-09-16 18:00 A | 2369 | 100% |  |  | start no earlier than 2024-09-06 08:00 | Зорькин В | 4h | 4h |
| 2371 | 6.6 | **станция фильтрации гидролизат с еврокуба в промежут емкость. Фильтр + насос** | 27.25d | 2026-03-13 09:00 A | 2026-04-21 11:00 A |  | 100% |  |  |  |  | 8h | 8h |
| 2372 | 6.6.1 | составить схему размещения насос / фильтр | 1h | 2026-03-13 09:00 A | 2026-03-13 10:00 A |  | 100% |  |  | start no earlier than 2026-03-13 09:00 | Зорькин В | 1h | 1h |
| 2373 | 6.6.2 | заявка фильтр 5" коллона + фитинги РР | 1h | 2026-03-13 10:00 A | 2026-03-13 11:00 A | 2372 | 100% |  |  | start no earlier than 2026-03-12 08:00 | Зорькин В | 1h | 1h |
| 2374 | 6.6.3 | доставка | 10d | 2026-03-13 11:00 A | 2026-03-27 11:00 A | 2373 | 100% |  |  | start no earlier than 2026-03-12 08:00 |  |  |  |
| 2375 | 6.6.4 | сборка насосная станция с фильром в 1ц | 4h | 2026-04-20 09:00 A | 2026-04-20 13:00 A | 2374 | 100% |  |  | start no earlier than 2026-04-20 09:00 | Тимофеев В | 4h | 4h |
| 2376 | 6.6.5 | оформление протокол испытаний | 2h | 2026-04-21 09:00 A | 2026-04-21 11:00 A |  | 100% |  |  | start no earlier than 2026-04-21 09:00 | Зорькин В | 2h | 2h |

| ID | WBS | Task | Type | Duration | Start | Finish | Predecessors | Complete | Remaining | Total slack | Constraint | Resources | Work | Actual work |
| --- | --- | --- | --- | --- | --- | --- | --- | --- | --- | --- | --- | --- | --- | --- |
| 2377 | 6.7 | **тест форсунки на гидролизат фильтрованный гидролизат** |  | 95.25d | 2026-04-21 11:00 A | 2026-09-01 13:00 | 2371 | 72% | 26.28d | 149.09d |  |  | 19h | 15h |
| 2378 | 6.7.1 | подготовить переходник |  | 2h | 2026-04-21 11:00 A | 2026-04-21 13:00 A |  | 100% |  |  | start no earlier than 2026-03-12 08:00 | Тимофеев В | 2h | 2h |
| 2379 | 6.7.2 | тестирование разных форсунок |  | 2h | 2026-04-21 13:00 A | 2026-04-21 16:00 A | 2378 | 100% |  |  | start no earlier than 2026-03-12 08:00 | Тимофеев В; Зорькин В | 4h | 4h |
| 2380 | 6.7.3 | контроль наличия фитингов для подключения насосной фильтровальной станции к еврокубу |  | 30min | 2026-04-24 08:00 A | 2026-04-24 09:30 A |  | 100% |  |  | start no earlier than 2026-04-24 08:00 | Зорькин В; Тимофеев В | 1h | 1h |
| 2381 | 6.7.4 | тест - наполнить канистру с куба гидролизатом через станцию+фильтр |  | 2h | 2026-04-27 09:00 A | 2026-04-27 11:00 A |  | 100% |  |  | start no earlier than 2026-04-27 09:00 | Зорькин В; Тимофеев В | 3h | 3h |
| 2382 | 6.7.5 | фильтрованный гдз распылить форсунками штатным насосом - забивакет |  | 4h | 2026-05-13 09:00 A | 2026-05-13 13:00 A | 2381 | 100% |  |  | start no earlier than 2026-05-13 09:00 | Зорькин В; Тимофеев В | 5h | 5h |
| 2383 | 6.7.6 | проект распыление моторчиком |  | 4h | 2026-09-01 09:00 | 2026-09-01 13:00 |  |  |  | 149.09d | start no earlier than 2026-09-01 09:00 | Домоводов К | 4h |  |
| 2384 | 6.8 | **станция фильтраци куринный жир с еврокуба в промежут емкость. Насос + фильтр** |  | 36.75d? | 2026-03-05 09:00 A | 2026-04-24 16:00 A |  | 100% |  |  |  |  | 46h | 46h |
| 2385 | 6.8.1 | подбор производительный насос и фильтр для жира. Закачка с еврокуба, перекачка через фильтр |  | 1d? | 2026-03-05 09:00 A | 2026-03-05 18:00 A |  | 100% |  |  | start no earlier than 2026-03-05 09:00 | Домоводов К; Зорькин В | 16h | 16h |
| 2386 | 6.8.2 | заявка материалы |  | 1d? | 2026-03-06 09:00 A | 2026-03-06 18:00 A | 2385 | 100% |  |  | start no earlier than 2026-02-27 08:00 | Зорькин В | 8h | 8h |
| 2387 | 6.8.3 | тест насосной станцией с фильтром |  | 1d? | 2026-04-20 09:00 A | 2026-04-20 18:00 A |  | 100% |  |  | start no earlier than 2026-04-20 09:00 | Зорькин В; Тимофеев В | 16h | 16h |
| 2388 | 6.8.4 | сборка второй станции для жира на БГ11А |  | 6h | 2026-04-24 08:00 A | 2026-04-24 16:00 A |  | 100% |  |  | start no earlier than 2026-04-24 08:00 | Тимофеев В | 6h | 6h |
| 2389 | 6.9 | **мешалка гидролизата** |  | 131.12d | 2026-03-03 09:00 A | 2026-09-02 10:00 A |  | 100% |  |  |  |  | 37.08h | 37.08h |
| 2390 | 6.9.1 | определить диаметр вала / где инструкция? Выяснить |  | 20min | 2026-08-28 09:00 A | 2026-08-28 09:20 A |  | 100% |  |  | start no earlier than 2026-08-28 09:00 | Зорькин В | 0.33h | 0.33h |
| 2391 | 6.9.2 | согласовать договор /оплата счет |  | 1h | 2026-03-03 09:00 A | 2026-03-03 10:00 A |  | 100% |  |  | start no earlier than 2026-03-03 09:00 | Домоводов К | 1h | 1h |
| 2392 | 6.9.3 | доставка | milestone | 0d | 2026-08-10 08:00 A | 2026-08-10 08:00 A |  | 100% |  |  | start no earlier than 2026-08-10 08:00 |  |  |  |
| 2393 | 6.9.4 | планирование технологии работы / какие нужны доработки |  | 15min | 2026-08-12 09:00 A | 2026-08-12 09:15 A |  | 100% |  |  | start no earlier than 2026-08-12 09:00 | Домоводов К | 0.25h | 0.25h |
| 2394 | 6.9.5 | сборка и тест с операторами в 1ц. Можно приварить кронштейны под штабелер |  | 4h | 2026-08-12 09:00 A | 2026-08-12 13:00 A |  | 100% |  |  | start no earlier than 2026-08-12 09:00 | Макаревич А | 4h | 4h |
| 2395 | 6.9.6 | составить чертеж кронштейна |  | 1h | 2026-08-17 09:00 A | 2026-08-17 10:00 A |  | 100% |  |  | start no earlier than 2026-08-17 09:00 | Шуранов Ю | 1h | 1h |
| 2396 | 6.9.7 | заявка на лебедка |  | 15min | 2026-08-17 10:00 A | 2026-08-17 10:15 A | 2395 | 100% |  |  | start no earlier than 2026-08-14 09:00 | Шуранов Ю | 0.25h | 0.25h |
| 2397 | 6.9.8 | конроль доставки |  | 15min | 2026-08-22 10:15 A | 2026-08-24 09:15 A | 2396FS+5d | 100% |  |  | start no earlier than 2026-08-14 09:00 | Шуранов Ю | 0.25h | 0.25h |
| 2398 | 6.9.9 | монтаж лебедка |  | 6h | 2026-08-31 09:00 A | 2026-08-31 16:00 A | 2397FS+1d | 100% |  |  | start no earlier than 2026-08-31 09:00 | Некрасов А; Труфанов А | 12h | 12h |
| 2399 | 6.9.10 | монтаж кронштейн под лебедку |  | 6h | 2026-08-31 16:00 A | 2026-09-01 13:00 A | 2398 | 100% |  |  | start no earlier than 2026-08-31 09:00 | Некрасов А; Труфанов А | 12h | 12h |
| 2400 | 6.9.11 | Установить 3-х фазную вилку для мешалки рядом с частотником |  | 2h | 2026-08-31 08:00 A | 2026-08-31 11:00 A |  | 100% |  |  | start no earlier than 2026-08-31 08:00 | Дедов В | 2h | 2h |
| 2401 | 6.9.12 | Установить розетку для электротали, проложить кабель к розетке возле мухобойки |  | 3h | 2026-08-31 08:00 A | 2026-08-31 12:00 A |  | 100% |  |  | start no earlier than 2026-08-31 08:00 | Дедов В | 3h | 3h |
| 2402 | 6.9.13 | Подключить таль к розетке, проложить гофру |  | 1h | 2026-09-02 09:00 A | 2026-09-02 10:00 A |  | 100% |  |  | start no earlier than 2026-09-02 09:00 | Бундин В | 1h | 1h |

| ID | WBS | Task | Duration | Start | Finish | Predecessors | Complete | Remaining | Total slack | Constraint | Resources | Work | Actual work |
| --- | --- | --- | --- | --- | --- | --- | --- | --- | --- | --- | --- | --- | --- |
| 2403 | 6.10 | **качественное нанесение жира тесты** | 275.5d? | 2026-03-02 09:00 A | 2027-03-03 13:00 A |  | 100% |  |  |  |  | 2102h | 2102h |
| 2404 | 6.10.1 | **испытания форсунка 2х фазная 1ц** | 2.25d | 2026-03-02 09:00 A | 2026-03-04 11:00 A |  | 100% |  |  |  |  | 5.5h | 5.5h |
| 2405 | 6.10.1.1 | подготовить кронштейн крепления форсунки к конвейеру | 2h | 2026-03-02 09:00 A | 2026-03-02 11:00 A |  | 100% |  |  | start no earlier than 2026-03-02 09:00 | Тимофеев В | 2h | 2h |
| 2406 | 6.10.1.2 | подготовить пневморедуктор, временно с НОТИС 3ц | 1h | 2026-03-02 11:00 A | 2026-03-02 12:00 A | 2405 | 100% |  |  | start no earlier than 2026-02-27 08:00 | Тимофеев В | 1h | 1h |
| 2407 | 6.10.1.3 | подготовить фильтр 1шт | 30min | 2026-03-02 12:00 A | 2026-03-02 12:30 A | 2406 | 100% |  |  | start no earlier than 2026-02-27 08:00 | Тимофеев В | 0.5h | 0.5h |
| 2408 | 6.10.1.4 | Тест форсунки на жирах, скооперироваться с технологами | 2h | 2026-03-04 09:00 A | 2026-03-04 11:00 A |  | 100% |  |  | start no earlier than 2026-03-04 09:00 | Тимофеев В | 2h | 2h |
| 2409 | 6.10.2 | **монтаж форсунки в линию** | 266.5d? | 2026-03-11 09:00 A | 2027-03-03 13:00 A |  | 100% |  |  |  | Тимофеев В | 2096.5h | 2096.5h |
| 2410 | 6.10.2.1 | **тест однофазная форсунка** | 30.25d? | 2026-03-11 09:00 A | 2026-04-22 11:00 A |  | 100% |  |  |  |  | 52.5h | 52.5h |
| 2411 | 6.10.2.1.1 | заявка пневморедуктор, фитинги насос - кран - 3х ходовой | 30min | 2026-03-11 09:00 A | 2026-03-11 09:30 A |  | 100% |  |  | start no earlier than 2026-03-11 09:00 | Зорькин В | 0.5h | 0.5h |
| 2412 | 6.10.2.1.2 | проект рама для монтаж фильтров, редуктор, кронштейн форсунки | 1d? | 2026-03-11 09:30 A | 2026-03-12 09:30 A | 2411 | 100% |  |  | start no earlier than 2026-02-27 08:00 | Домоводов К | 8h | 8h |
| 2413 | 6.10.2.1.3 | доставка | 5d | 2026-03-30 09:00 A | 2026-04-03 18:00 A |  | 100% |  |  | start no earlier than 2026-03-30 09:00 | Карабанов | 40h | 40h |
| 2414 | 6.10.2.1.4 | сборка рама, покраска | 2h | 2026-04-22 09:00 A | 2026-04-22 11:00 A | 2412 | 100% |  |  | start no earlier than 2026-04-22 09:00 | Тимофеев В | 2h | 2h |
| 2415 | 6.10.2.1.5 | монтаж 0,3 форсунки | 2h | 2026-04-22 09:00 A | 2026-04-22 11:00 A | 2413 | 100% |  |  | start no earlier than 2026-04-22 09:00 | Тимофеев В | 2h | 2h |
| 2416 | 6.11 | **тест однофазная форсунка** | 0.02d | 2026-03-16 09:00 A | 2026-03-16 09:10 A |  | 100% |  |  |  |  | 0.17h | 0.17h |
| 2417 | 6.11.1 | получить счет | 10min | 2026-03-16 09:00 A | 2026-03-16 09:10 A |  | 100% |  |  | start no earlier than 2026-03-16 09:00 | Домоводов К | 0.17h | 0.17h |
| 2418 | 6.12 | **установить фильтры жир на 1 и 2 линию** | 71.25d | 2026-03-17 09:00 A | 2026-06-24 11:00 |  | 83% | 11.88d | 198.34d |  |  | 14h | 12h |
| 2419 | 6.12.1 | сборка система фильтров 2 фильтра на 2 линии подготовиь + рама | 4h | 2026-03-17 09:00 A | 2026-03-17 13:00 A |  | 100% |  |  | start no earlier than 2026-03-17 09:00 | Тимофеев В | 4h | 4h |
| 2420 | 6.12.2 | монтаж стационарно рама под фильтры | 4h | 2026-04-22 09:00 A | 2026-04-22 13:00 A | 2419 | 100% |  |  | start no earlier than 2026-04-22 09:00 | Тимофеев В | 4h | 4h |
| 2421 | 6.12.3 | калибровка PID регулятора подачи жира | 2h | 2026-05-13 09:00 A | 2026-05-13 11:00 A |  | 100% |  |  | start no earlier than 2026-05-13 09:00 | Зорькин В; Домоводов К | 4h | 4h |
| 2422 | 6.12.4 | подготовка для установить на 1 линию | 2h | 2026-06-24 09:00 | 2026-06-24 11:00 |  |  |  | 198.34d | start no earlier than 2026-06-24 09:00 | Тимофеев В | 2h |  |
| 2423 | 6.13 | **ТЕКО 0,4 или 1,5 поставить пленку с БЕСТРОМА 620мм** | 6.09d | 2026-03-13 09:00 A | 2026-03-23 09:45 A |  | 100% |  |  |  |  | 0.75h | 0.75h |
| 2424 | 6.13.1 | запрос возможности в ТЕКО | 30min | 2026-03-13 09:00 A | 2026-03-13 09:30 A |  | 100% |  |  | start no earlier than 2026-03-13 09:00 | Зорькин В | 0.5h | 0.5h |
| 2425 | 6.13.2 | контроль ответ | 15min | 2026-03-23 09:30 A | 2026-03-23 09:45 A | 2424FS+10d | 100% |  |  | start no earlier than 2026-03-12 08:00 | Зорькин В | 0.25h | 0.25h |
| 2426 | 6.14 | **фильера с вставками для 2ц** | 0.02d | 2025-02-21 09:00 A | 2025-02-21 09:10 A |  | 100% |  |  |  |  | 0.17h | 0.17h |
| 2427 | 6.14.1 | контроль изготовления | 10min | 2025-02-21 09:00 A | 2025-02-21 09:10 A |  | 100% |  |  | start no earlier than 2025-02-21 09:00 | Шуранов Ю | 0.17h | 0.17h |

| ID | WBS | Task | Duration | Start | Finish | Predecessors | Complete | Total slack | Free slack | Constraint | Resources | Work | Actual work |
| --- | --- | --- | --- | --- | --- | --- | --- | --- | --- | --- | --- | --- | --- |
| 2428 | 6.15 | **ручка для экструдера крутиьт мотор на 1 и 2 линию** | 138d? | 2024-08-09 09:00 | 2025-02-18 18:00 |  |  | 548.59d |  |  |  | 9h |  |
| 2429 | 6.15.1 | изготовление | 1d? | 2025-02-18 09:00 | 2025-02-18 18:00 |  |  | 548.59d |  | start no earlier than 2025-02-18 09:00 | Черепанов И | 8h |  |
| 2430 | 6.15.2 | составить чертежи / разместить изготовление | 1h | 2024-08-09 09:00 | 2024-08-09 10:00 |  |  | 686.47d |  | start no earlier than 2024-08-09 09:00 | Шуранов Ю | 1h |  |
| 2431 | 6.16 | **охлаждение шкафов управления печью 1 2 3 линия** | 5d? | 2024-04-18 09:00 | 2024-04-24 18:00 |  |  | 762.59d |  |  |  | 40h |  |
| 2432 | 6.16.1 | выбор и заявка кондиционеры для щитов управления | 1d? | 2024-04-18 09:00 | 2024-04-18 18:00 |  |  | 762.59d | 0d | start no earlier than 2024-04-18 09:00 | Домоводов К | 8h |  |
| 2433 | 6.16.2 | оплата / доставка | 1d? | 2024-04-19 09:00 | 2024-04-19 18:00 | 2432 |  | 762.59d | 0d | start no earlier than 2024-04-04 09:00 | Мультан | 8h |  |
| 2434 | 6.16.3 | монтаж | 3d | 2024-04-22 09:00 | 2024-04-24 18:00 | 2433 |  | 762.59d |  | start no earlier than 2024-04-11 09:00 | Некрасов А | 24h |  |
| 2435 | 6.17 | **подача гидролизат в смеситель насосом** | 25d? | 2024-03-25 09:00 | 2024-04-26 18:00 |  |  | 760.59d |  |  |  | 200h |  |
| 2436 | 6.17.1 | выбор насоса / заявка на насос | 1d? | 2024-03-25 09:00 | 2024-03-25 18:00 |  |  | 760.59d | 0d | start no earlier than 2024-03-25 09:00 | Домоводов К | 8h |  |
| 2437 | 6.17.2 | проректирование автоматика, монтажная часть / заявка | 1d? | 2024-03-26 09:00 | 2024-03-26 18:00 | 2436 |  | 760.59d | 0d | start no earlier than 2024-03-22 09:00 | Домоводов К | 8h |  |
| 2438 | 6.17.3 | поставка оборудования | 20d | 2024-03-27 09:00 | 2024-04-23 18:00 | 2437 |  | 760.59d | 0d | start no earlier than 2024-03-22 09:00 | Мультан | 160h |  |
| 2439 | 6.17.4 | монтаж электрика | 1d? | 2024-04-24 09:00 | 2024-04-24 18:00 | 2438 |  | 760.59d | 0d | start no earlier than 2024-03-22 09:00 | Некрасов А | 8h |  |
| 2440 | 6.17.5 | монтаж трубопровод | 1d? | 2024-04-25 09:00 | 2024-04-25 18:00 | 2439 |  | 760.59d | 0d | start no earlier than 2024-03-22 09:00 | Некрасов А | 8h |  |
| 2441 | 6.17.6 | монтаж автоматика | 1d? | 2024-04-26 09:00 | 2024-04-26 18:00 | 2440 |  | 760.59d |  | start no earlier than 2024-03-22 09:00 | Некрасов А | 8h |  |
| 2442 | 6.18 | **установить форсунки на подачу жир и гидролизат** | 106.38d | 2024-03-26 09:00 A | 2024-08-21 12:00 A |  | 100% |  |  |  |  | 187h | 187h |
| 2443 | 6.18.1 | выбор тип форсунок, заявка | 1d | 2024-03-26 09:00 A | 2024-03-26 18:00 A |  | 100% |  |  | start no earlier than 2024-03-26 09:00 | Домоводов К | 8h | 8h |
| 2444 | 6.18.2 | проректирование / заявка на пневматику и электрику для управления форсунками | 1d | 2024-03-27 09:00 A | 2024-03-27 18:00 A | 2443 | 100% |  |  | start no earlier than 2024-03-22 09:00 | Домоводов К | 8h | 8h |
| 2445 | 6.18.3 | тех решение / чертеж крепления форсунок | 1d | 2024-03-28 09:00 A | 2024-03-28 18:00 A | 2444 | 100% |  |  | start no earlier than 2024-03-22 09:00 | Домоводов К | 8h | 8h |
| 2446 | 6.18.4 | доставка | 20d | 2024-03-29 09:00 A | 2024-04-25 18:00 A | 2443, 2445 | 100% |  |  | start no earlier than 2024-03-22 09:00 | Мультан | 160h | 160h |
| 2447 | 6.18.5 | монтаж механника | 2h | 2024-08-21 09:00 A | 2024-08-21 11:00 A | 2446 | 100% |  |  | start no earlier than 2024-08-21 09:00 | Тимофеев В | 2h | 2h |
| 2448 | 6.18.6 | монтаж пневматика | 1h | 2024-08-21 11:00 A | 2024-08-21 12:00 A | 2447 | 100% |  |  | start no earlier than 2024-03-22 09:00 | Тимофеев В | 1h | 1h |
| 2449 | 6.19 | **модернизация откидной воронка загрузки в барабан дрожировки** | 10.62d | 2024-05-14 09:00 A | 2024-05-28 15:00 A |  | 100% |  |  |  |  | 89h | 89h |
| 2450 | 6.19.1 | составить эскиз / заказ шарниры (при остановке экструдера) | 1h | 2024-05-14 09:00 A | 2024-05-14 10:00 A |  | 100% |  |  | start no earlier than 2024-05-14 09:00 | Шуранов Ю | 1h | 1h |
| 2451 | 6.19.2 | доставка | 10d | 2024-05-14 10:00 A | 2024-05-28 10:00 A | 2450 | 100% |  |  | start no earlier than 2024-03-14 09:00 | Мультан | 80h | 80h |
| 2452 | 6.19.3 | монгтаж | 4h | 2024-05-28 10:00 A | 2024-05-28 15:00 A | 2451 | 100% |  |  | start no earlier than 2024-05-14 09:00 | Макаревич А; Некрасов А | 8h | 8h |
| 2453 | 6.20 | модернизация ножевого узла | 1d? | 2023-12-28 09:00 | 2023-12-28 18:00 |  |  | 846.59d |  | start no earlier than 2023-12-28 09:00 |  |  |  |

| ID | WBS | Task | Duration | Start | Finish | Predecessors | Complete | Remaining | Total slack | Free slack | Constraint | Resources | Work | Actual work |
| --- | --- | --- | --- | --- | --- | --- | --- | --- | --- | --- | --- | --- | --- | --- |
| 2454 | 6.21 | **модернизация дозации воды в прекондиционер** | 0.62d | 2023-12-25 09:00 A | 2023-12-25 15:00 A |  | 100% |  |  |  |  |  | 5h | 5h |
| 2455 | 6.21.1 | установить балансировочный кран 2 линия | 1h | 2023-12-25 09:00 A | 2023-12-25 10:00 A |  | 100% |  |  |  | start no earlier than 2023-12-25 09:00 | Дедов В | 1h | 1h |
| 2456 | 6.21.2 | установить расходомер 2 линия | 2h | 2023-12-25 10:00 A | 2023-12-25 12:00 A | 2455 | 100% |  |  |  | start no earlier than 2023-12-20 09:00 | Дедов В | 2h | 2h |
| 2457 | 6.21.3 | установить расходомер 2 линия | 2h | 2023-12-25 12:00 A | 2023-12-25 15:00 A | 2456 | 100% |  |  |  | start no earlier than 2023-12-20 09:00 | Дедов В | 2h | 2h |
| 2458 | 6.22 | **заменить шланг на высоктемпературный на жир** | 1.62d? | 2024-05-14 09:00 A | 2024-05-15 15:00 A |  | 100% |  |  |  |  |  | 13h | 13h |
| 2459 | 6.22.1 | заявка / подбор | 1h | 2024-05-14 09:00 A | 2024-05-14 10:00 A |  | 100% |  |  |  | start no earlier than 2024-05-14 09:00 | Шуранов Ю | 1h | 1h |
| 2460 | 6.22.2 | доставка | 1d? | 2024-05-14 10:00 A | 2024-05-15 10:00 A | 2459 | 100% |  |  |  | start no earlier than 2023-12-13 08:00 | Малинина М | 8h | 8h |
| 2461 | 6.22.3 | замена | 4h | 2024-05-15 10:00 A | 2024-05-15 15:00 A | 2460 | 100% |  |  |  | start no earlier than 2024-01-15 09:00 | Тимофеев В | 4h | 4h |
| 2462 | 6.23 | **тепловая защита электромоторов мехнизмов** | 108.75d | 2023-12-28 09:00 A | 2024-05-28 16:00 |  | 2% | 106.58d | 738.84d |  |  |  | 100h | 2h |
| 2463 | 6.23.1 | **составить список эл моторов (нужен ток ) без теплового реле - от вибросита - до упаковки вся технология** | 75.25d | 2024-01-30 09:00 A | 2024-05-14 11:00 |  | 17% | 62.71d | 749.34d |  |  |  | 12h | 2h |
| 2464 | 6.23.1.1 | 5 цех | 2h | 2024-01-30 09:00 A | 2024-01-30 11:00 A |  | 100% |  |  |  | start no earlier than 2024-01-30 09:00 | Дедов В | 2h | 2h |
| 2465 | 6.23.1.2 | 1 цех | 4h | 2024-01-30 09:00 | 2024-01-30 13:00 |  |  |  | 824.09d |  | start no earlier than 2024-01-30 09:00 | Дедов В | 4h |  |
| 2466 | 6.23.1.3 | 2 цех | 4h | 2024-01-30 09:00 | 2024-01-30 13:00 |  |  |  | 824.09d |  | start no earlier than 2024-01-30 09:00 | Дедов В | 4h |  |
| 2467 | 6.23.1.4 | заполнитьт таблицу для заявки место-двиг-ток | 2h | 2024-05-14 09:00 | 2024-05-14 11:00 |  |  |  | 749.34d |  | start no earlier than 2024-05-14 09:00 | Шуранов Ю | 2h |  |
| 2468 | 6.23.2 | переписать список мотор-редукторов | 2h | 2023-12-28 09:00 | 2023-12-28 11:00 |  |  |  | 835.59d | 96.75d | start no earlier than 2023-12-28 09:00 | Дедов В | 2h |  |
| 2469 | 6.23.3 | заявка тепл реле | 2h | 2024-05-14 09:00 | 2024-05-14 11:00 | 2468FS+1d |  |  | 738.84d | 0d | start no earlier than 2024-05-14 09:00 | Шуранов Ю | 2h |  |
| 2470 | 6.23.4 | дост авка | 10d | 2024-05-14 11:00 | 2024-05-28 11:00 | 2469 |  |  | 738.84d | 0d | start no earlier than 2023-12-13 08:00 | Малинина М | 80h |  |
| 2471 | 6.23.5 | монтаж конвейер 2ц | 2h | 2024-05-28 11:00 | 2024-05-28 13:00 | 2469, 2470 |  |  | 738.84d | 0d | start no earlier than 2024-01-19 09:00 | Дедов В | 2h |  |
| 2472 | 6.23.6 | монтаж составить список | 2h | 2024-05-28 14:00 | 2024-05-28 16:00 | 2471 |  |  | 738.84d |  | start no earlier than 2023-12-13 08:00 | Домоводов К | 2h |  |
| 2473 | 6.24 | **устройство контроля уровня сырья в большом бункере** | 14.03d | 2023-08-16 09:00 A | 2023-09-05 09:15 |  |  | 14d | 929.56d |  |  |  | 192.25h | 0.25h |
| 2474 | 6.24.1 | заявка на датчик | 15min | 2023-08-16 09:00 A | 2023-08-16 09:15 A |  | 100% |  |  |  | start no earlier than 2023-08-14 09:00 | Лобанов И | 0.25h | 0.25h |
| 2475 | 6.24.2 | доставка | 10d | 2023-08-16 09:15 | 2023-08-30 09:15 | 2474 |  |  | 929.56d | 0d | start no earlier than 2023-03-10 09:00 | Малинина М; Домоводов К | 160h |  |
| 2476 | 6.24.3 | выполнение монажных работ | 4d | 2023-08-30 09:15 | 2023-09-05 09:15 | 2475 |  |  | 929.56d |  | start no earlier than 2023-03-10 09:00 | Подрядчик | 32h |  |
| 2477 | 6.25 | **конвейер с охладителя регулировка ленты - модернизация** | 6.25d | 2024-05-14 09:00 A | 2024-05-22 11:00 A |  | 100% |  |  |  |  |  | 50h | 50h |
| 2478 | 6.25.1 | выбор и заявка натяжные буксы | 2h | 2024-05-14 09:00 A | 2024-05-14 11:00 A |  | 100% |  |  |  | start no earlier than 2024-05-14 09:00 | Шуранов Ю | 2h | 2h |
| 2479 | 6.25.2 | доставка | 5d | 2024-05-14 11:00 A | 2024-05-21 11:00 A | 2478 | 100% |  |  |  | start no earlier than 2023-10-30 09:00 | Малинина М | 40h | 40h |
| 2480 | 6.25.3 | монтаж | 1d | 2024-05-21 11:00 A | 2024-05-22 11:00 A | 2479 | 100% |  |  |  | start no earlier than 2023-12-01 09:00 | Тимофеев В | 8h | 8h |

| ID | WBS | Task | Duration | Start | Finish | Predecessors | Complete | Remaining | Actual start | Total slack | Free slack | Constraint | Resources | Work | Actual work |
| --- | --- | --- | --- | --- | --- | --- | --- | --- | --- | --- | --- | --- | --- | --- | --- |
| 2481 | 6.26 | **прекондиционер забивается отслоением слипшегося сырья** | 204d? | 2023-08-03 09:00 | 2024-05-14 18:00 |  |  |  |  | 0d |  |  |  | 24h |  |
| 2482 | 6.26.1 | **решение тех совет** | 1d? | 2023-08-03 09:00 | 2023-08-03 18:00 |  |  |  |  |  |  |  |  | 24h |  |
| 2483 | 6.26.1.1 | вар1 - доп лопатки на выходе | 1d? | 2024-05-14 09:00 | 2024-05-14 18:00 |  |  |  |  | 748.59d |  | start no earlier than 2024-05-14 09:00 | Шуранов Ю | 8h |  |
| 2484 | 6.26.1.2 | вар 2 - вертикальные ворошители | 1d? | 2024-05-14 09:00 | 2024-05-14 18:00 |  |  |  |  | 748.59d |  | start no earlier than 2024-05-14 09:00 | Шуранов Ю | 8h |  |
| 2485 | 6.26.1.3 | вар 3 - подача пара | 1d? | 2024-05-14 09:00 | 2024-05-14 18:00 |  |  |  |  | 748.59d |  | start no earlier than 2024-05-14 09:00 | Шуранов Ю | 8h |  |
| 2486 | 6.27 | **фильтры на баки жиров перед насосами** | 439.12d | 2023-07-20 09:00 A | 2025-03-26 10:00 A |  | 100% |  |  |  |  |  |  | 4.75h | 4.75h |
| 2487 | 6.27.1 | утвердить тех решение | 1h | 2023-07-20 09:00 A | 2023-07-20 10:00 A |  | 100% |  |  |  |  | start no earlier than 2023-07-20 09:00 | Лобанов И; Домоводов К; Сапелин С | 3h | 3h |
| 2488 | 6.27.2 | купить сетку в корпусе | 30min | 2024-05-14 09:00 A | 2024-05-14 09:30 A |  | 100% |  |  |  |  | start no earlier than 2024-05-14 09:00 | Шуранов Ю | 0.5h | 0.5h |
| 2489 | 6.27.3 | купить 1/2 муфта для установки фитингов | 15min | 2025-03-26 09:00 A | 2025-03-26 09:15 A |  | 100% |  |  |  |  | start no earlier than 2025-03-26 08:00 | Шуранов Ю | 0.25h | 0.25h |
| 2490 | 6.27.4 | проверка фитингов | 1h | 2025-03-26 09:00 A | 2025-03-26 10:00 A |  | 100% |  |  |  |  | start no earlier than 2025-03-26 08:00 | Зорькин В | 1h | 1h |
| 2491 | 6.28 | **защита редутора шнеков при отказе маслянного насоса** | 20.12d? | 2023-08-02 09:00 | 2023-08-30 10:00 |  | 33% | 13.52d? | 2023-07-28 09:00 |  |  |  |  | 126.5h | 41.5h |
| 2492 | 6.28.1 | поиск фитинг для замера реле давления | 30min | 2023-07-28 09:00 A | 2023-07-28 09:30 A |  | 100% |  |  |  |  | start no earlier than 2023-07-28 09:00 | Тимофеев В | 0.5h | 0.5h |
| 2493 | 6.28.2 | заявка на фитинг | 1h | 2023-07-31 09:00 A | 2023-07-31 10:00 A | 2492 | 100% |  |  |  |  | start no earlier than 2023-07-31 09:00 | Лобанов И | 1h | 1h |
| 2494 | 6.28.3 | доставка | 5d | 2023-07-31 10:00 A | 2023-08-07 10:00 A | 2493 | 100% |  |  |  |  | start no earlier than 2023-07-31 09:00 | Малинина М | 40h | 40h |
| 2495 | 6.28.4 | заявка реле потока 1/2 или 3/4 | 1h | 2026-03-19 09:00 | 2026-03-19 10:00 |  |  |  |  | 256.97d | 0d | start no earlier than 2026-03-19 09:00 | Шуранов Ю | 1h |  |
| 2496 | 6.28.5 | доставка | 10d | 2026-03-19 10:00 | 2026-04-02 10:00 | 2495 |  |  |  | 256.97d | 1.88d | start no earlier than 2026-03-12 08:00 | Карабанов | 80h |  |
| 2497 | 6.28.6 | монтаж гидравлика | 2h | 2026-04-06 09:00 | 2026-04-06 11:00 | 2496 |  |  |  | 255.09d | 0d | start no earlier than 2026-04-06 09:00 | Тимофеев В | 2h |  |
| 2498 | 6.28.7 | монтаж электрика схема защиты + привязка к частотному приводу | 2h | 2026-04-06 11:00 | 2026-04-06 13:00 | 2497 |  |  |  | 255.09d |  | start no earlier than 2023-07-20 09:00 | Тимофеев В | 2h |  |
| 2499 | 6.29 | **подача сырья в упаковщки 1 цех** | 199.5d? | 2023-06-07 09:00 A | 2024-03-12 13:00 |  | 12% | 175.32d? |  | 794.09d |  |  |  | 37h | 8h |
| 2500 | 6.29.1 | испытание пневмотранспорта напорная магистраль | 4h | 2024-03-12 09:00 A | 2024-03-12 13:00 A |  | 100% |  |  |  |  | start no earlier than 2024-03-12 09:00 | Бобренок В; Некрасов А | 8h | 8h |
| 2501 | 6.29.2 | технологическая схема подачи продукта в упаковщики | 1d? | 2023-06-19 09:00 | 2023-06-19 18:00 |  |  |  |  | 984.59d |  | start no earlier than 2023-06-19 09:00 | Технолог | 8h |  |
| 2502 | 6.29.3 | поиск / запрорс цен на диверторы | 2h | 2023-06-07 09:00 | 2023-06-07 11:00 |  |  |  |  | 990.97d | 0d | start no earlier than 2023-06-07 09:00 | Домоводов К | 2h |  |
| 2503 | 6.29.4 | поиск / запрос цены на эжекторный приемник | 2h | 2023-06-07 11:00 | 2023-06-07 13:00 | 2502 |  |  |  | 990.97d | 0d | start no earlier than 2023-05-10 08:00 | Домоводов К | 2h |  |
| 2504 | 6.29.5 | расчет трассы | 2d | 2023-06-07 14:00 | 2023-06-09 13:00 | 2503 |  |  |  | 990.97d | 0d | start no earlier than 2023-05-10 08:00 | Домоводов К | 16h |  |
| 2505 | 6.29.6 | подбор приобритение вентилятора | 1h | 2023-06-09 14:00 | 2023-06-09 15:00 | 2504 |  |  |  | 990.97d |  | start no earlier than 2023-04-27 09:00 | Домоводов К | 1h |  |

| ID | WBS | Task | Type | Duration | Start | Finish | Predecessors | Complete | Remaining | Total slack | Free slack | Constraint | Resources | Work | Actual work |
| --- | --- | --- | --- | --- | --- | --- | --- | --- | --- | --- | --- | --- | --- | --- | --- |
| 2506 | 6.30 | **защита тэн печи при отключении вентиляторов** |  | 160.25d? | 2023-06-09 09:00 | 2024-01-19 11:00 |  |  |  | 831.34d |  |  |  | 66h |  |
| 2507 | 6.30.1 | устиановить защиту на пускателе 380 1 линия |  | 2h | 2024-01-19 09:00 | 2024-01-19 11:00 |  |  |  | 831.34d |  | start no earlier than 2024-01-19 09:00 | Тимофеев В | 2h |  |
| 2508 | 6.30.2 | составить схему защиты |  | 1d? | 2023-06-09 09:00 | 2023-06-09 18:00 |  |  |  | 983.59d | 0d | start no earlier than 2023-06-09 09:00 | Домоводов К | 8h |  |
| 2509 | 6.30.3 | заявка |  | 1d? | 2023-06-12 09:00 | 2023-06-12 18:00 | 2508 |  |  | 983.59d | 0d | start no earlier than 2023-04-25 09:00 | Домоводов К | 8h |  |
| 2510 | 6.30.4 | оплата поставка |  | 5d | 2023-06-13 09:00 | 2023-06-19 18:00 | 2509 |  |  | 983.59d | 5d | start no earlier than 2023-05-02 09:00 | Малинина М | 40h |  |
| 2511 | 6.30.5 | сборка и монтаж |  | 1d? | 2023-06-27 09:00 | 2023-06-27 18:00 | 2510 |  |  | 978.59d |  | start no earlier than 2023-06-27 09:00 | Бобренок В | 8h |  |
| 2512 | 6.31 | Настройка даты на пробнике, нужно приподнять на 3-5 мм (ждем решение технологов, информация поменялась, читать письмо от 01.09.2026) |  | 3h | 2026-09-03 09:00 A | 2026-09-03 12:00 A |  | 100% |  |  |  | start no earlier than 2026-09-03 09:00 | Тимофеев В | 3h | 3h |
| 2513 | 7 | **техника** |  | 661.25d? | 2024-05-14 09:00 A | 2026-11-10 11:00 |  | 95% | 35.69d? | 88.34d |  |  |  | 56.58h | 51.58h |
| 2514 | 7.1 | ремонт генератора - замена реле / покупка с курьером |  | 2h | 2026-11-10 09:00 | 2026-11-10 11:00 |  |  |  | 88.34d |  | start no earlier than 2026-11-10 09:00 | Некрасов А; Труфанов А | 4h |  |
| 2515 | 7.2 | **KAMATSU #1** |  | 1d | 2026-10-19 09:00 A | 2026-10-20 09:00 |  | 99% | 0d | 105.59d |  |  |  | 0.08h | 0.08h |
| 2516 | 7.2.1 | **заявка 19_10** |  | 1d | 2026-10-19 09:00 A | 2026-10-20 09:00 |  | 99% | 0d | 105.59d |  |  |  | 0.08h | 0.08h |
| 2517 | 7.2.1.1 | вызов АВТОБЕСТ |  | 5min | 2026-10-19 09:00 A | 2026-10-19 09:05 A |  | 100% |  |  |  | start no earlier than 2026-10-19 08:00 | Зорькин В | 0.08h | 0.08h |
| 2518 | 7.2.1.2 | рвет ремень генератора | milestone | 0d | 2026-10-20 09:00 | 2026-10-20 09:00 | 2517 |  |  | 105.59d | 0d | start no earlier than 2026-10-20 09:00 | Автобест |  |  |
| 2519 | 7.2.1.3 | течь "всех" патрубков - комплексная замена | milestone | 0d | 2026-10-20 09:00 | 2026-10-20 09:00 | 2518 |  |  | 105.59d | 0d | start no earlier than 2026-10-19 08:00 | Автобест |  |  |
| 2520 | 7.2.1.4 | течь с масл наоса гидравлики - 1р/нет подливка уровень | milestone | 0d | 2026-10-20 09:00 | 2026-10-20 09:00 | 2519 |  |  | 105.59d |  | start no earlier than 2026-10-19 08:00 | Автобест |  |  |
| 2521 | 7.3 | не заводится TRF, сломана шпилька колесо. Контроль приезда приемка работ |  | 1h | 2026-08-17 09:00 A | 2026-08-17 10:00 A |  | 100% |  |  |  | start no earlier than 2026-08-17 09:00 | Шуранов Ю | 1h | 1h |
| 2522 | 7.4 | **капремонт погрузчика коматсу короткий** |  | 51.03d | 2026-08-13 09:00 A | 2026-10-13 09:15 A |  | 100% |  |  |  |  |  | 2.75h | 2.75h |
| 2523 | 7.4.1 | заявка получить цену в тракресурс |  | 15min | 2026-08-13 09:00 A | 2026-08-13 09:15 A |  | 100% |  |  |  | start no earlier than 2026-08-13 09:00 | Домоводов К | 0.25h | 0.25h |
| 2524 | 7.4.2 | заявка получить цену в форклифт |  | 15min | 2026-08-13 09:15 A | 2026-08-13 09:30 A | 2523 | 100% |  |  |  | start no earlier than 2026-08-13 09:00 | Домоводов К | 0.25h | 0.25h |
| 2525 | 7.4.3 | получить КП 2 | milestone | 0d | 2026-08-17 09:00 A | 2026-08-17 09:00 A |  | 100% |  |  |  | start no earlier than 2026-08-17 09:00 | Домоводов К |  |  |
| 2526 | 7.4.4 | решение о дате | milestone | 0d | 2026-09-07 09:00 A | 2026-09-07 09:00 A | 2524FS+1d | 100% |  |  |  | start no earlier than 2026-09-07 09:00 | Домоводов К |  |  |
| 2527 | 7.4.5 | орг отправить погрузчик в ремонт / составить акт |  | 2h | 2026-09-01 09:00 A | 2026-09-01 11:00 A | 2524, 2526FS+1d | 100% |  |  |  | start no earlier than 2026-08-26 09:00 | Шуранов Ю | 2h | 2h |
| 2528 | 7.4.6 | контроль сроков ремонта |  | 15min | 2026-10-13 09:00 A | 2026-10-13 09:15 A | 2527FS+20d | 100% |  |  |  | start no earlier than 2026-10-13 09:00 | Зорькин В | 0.25h | 0.25h |
| 2529 | 7.5 | заказать по комплекту воздушных фильтров для погрузчиков |  | 1h | 2026-08-18 09:00 A | 2026-08-18 10:00 A |  | 100% |  |  |  | start no earlier than 2026-08-18 09:00 | Шуранов Ю | 1h | 1h |
| 2530 | 7.6 | провкрить моточасы для проведения ТО |  | 1h | 2026-08-18 09:00 A | 2026-08-18 10:00 A |  | 100% |  |  |  | start no earlier than 2026-08-18 09:00 | Шуранов Ю | 1h | 1h |
| 2531 | 7.7 | не заводиться trf погрузчик, посмотреть подачу топлива |  | 1h | 2026-05-25 08:00 A | 2026-05-25 10:00 A |  | 100% |  |  |  | start no earlier than 2026-05-25 08:00 | Тимофеев В; Шуранов Ю | 2h | 2h |
| 2532 | 7.8 | ТО карбюратора ТРФ организовать |  | 1h | 2026-05-27 09:00 A | 2026-05-27 10:00 A |  | 100% |  |  |  | start no earlier than 2026-05-27 09:00 | Шуранов Ю | 1h | 1h |
| 2533 | 7.9 | ренгулировка ремня погрузчик желтый №209490 контроль |  | 1h | 2026-05-14 09:00 A | 2026-05-14 10:00 A |  | 100% |  |  |  | start no earlier than 2026-05-14 09:00 | Шуранов Ю | 1h | 1h |
| 2534 | 7.10 | ремонт генераторов -найти фирму |  | 1d? | 2026-05-07 09:00 A | 2026-05-07 18:00 A |  | 100% |  |  |  | start no earlier than 2026-05-07 09:00 | Шуранов Ю | 8h | 8h |
| 2535 | 7.11 | греется мотор сменный погрузчик (вероятно помпа). Орг визит |  | 15min | 2026-04-27 09:00 A | 2026-04-27 09:15 A |  | 100% |  |  |  | start no earlier than 2026-04-27 08:00 | Шуранов Ю | 0.25h | 0.25h |
| 2536 | 7.12 | установить вентиляторы на погрузчики |  | 2h | 2026-04-27 08:00 A | 2026-04-27 11:00 A |  | 100% |  |  |  | start no earlier than 2026-04-27 08:00 | Тимофеев В | 2h | 2h |
| 2537 | 7.13 | заменить шланги гидравлики погрузчик ТРФ |  | 1d? | 2026-04-21 09:00 A | 2026-04-21 18:00 A |  | 100% |  |  |  | start no earlier than 2026-04-21 09:00 |  |  |  |
| 2538 | 7.14 | пригласить тракресурс |  | 1h | 2026-04-21 09:00 A | 2026-04-21 10:00 A |  | 100% |  |  |  | start no earlier than 2026-04-21 09:00 | Шуранов Ю | 1h | 1h |
| 2539 | 7.15 | проварить ковш трактора в слесарке |  | 4h | 2026-03-24 08:00 A | 2026-03-24 13:00 A |  | 100% |  |  |  | start no earlier than 2026-03-24 08:00 | Бобренок В | 4h | 4h |
| 2540 | 7.16 | контроль доставки / приемка погрузчи коматсу |  | 1h | 2026-03-13 09:00 A | 2026-03-13 10:00 A |  | 100% |  |  |  | start no earlier than 2026-03-13 09:00 | Шуранов Ю | 1h | 1h |
| 2541 | 7.17 | ремонт штабелер 5 цех ролик и опрное колесо. Контроль |  | 30min | 2026-03-13 09:00 A | 2026-03-13 09:30 A |  | 100% |  |  |  | start no earlier than 2026-03-13 09:00 | Шуранов Ю | 0.5h | 0.5h |
| 2542 | 7.18 | ремонт ковш трактор |  | 6h | 2026-03-03 09:00 A | 2026-03-03 16:00 A |  | 100% |  |  |  | start no earlier than 2026-03-03 08:00 | Некрасов А; Труфанов А | 12h | 12h |

| ID | WBS | Task | Type | Duration | Start | Finish | Predecessors | Complete | Remaining | Total slack | Constraint | Resources | Work | Actual work |
| --- | --- | --- | --- | --- | --- | --- | --- | --- | --- | --- | --- | --- | --- | --- |
| 2543 | 7.19 | **ремонт цепи желтый вилочный + ручник** |  | 0.16d | 2025-07-28 09:00 A | 2025-07-28 10:15 A |  | 100% |  |  |  |  | 1.25h | 1.25h |
| 2544 | 7.19.1 | контроль даты визита |  | 15min | 2025-07-28 09:00 A | 2025-07-28 09:15 A |  | 100% |  |  | start no earlier than 2025-07-28 09:00 | Шуранов Ю | 0.25h | 0.25h |
| 2545 | 7.19.2 | ремонт контроль \принять работы |  | 1h | 2025-07-28 09:15 A | 2025-07-28 10:15 A | 2544 | 100% |  |  | start no earlier than 2025-07-23 09:00 | Шуранов Ю | 1h | 1h |
| 2546 | 7.20 | реморнт педаль газ на 3d принтере |  | 1h | 2025-07-23 09:00 A | 2025-07-23 10:00 A |  | 100% |  |  | start no earlier than 2025-07-23 09:00 | Шуранов Ю | 1h | 1h |
| 2547 | 7.21 | реморнт педаль газ на 3d принтере |  | 1h | 2026-09-01 09:00 | 2026-09-01 10:00 |  |  |  | 149.47d | start no earlier than 2026-09-01 09:00 | Домоводов К | 1h |  |
| 2548 | 7.22 | ТО штабелеры кайтымовская орг |  | 1h | 2025-07-23 09:00 A | 2025-07-23 10:00 A |  | 100% |  |  | start no earlier than 2025-07-23 09:00 | Шуранов Ю | 1h | 1h |
| 2549 | 7.23 | заявка доводчик двери желт коматсу |  | 15min | 2024-05-14 09:00 A | 2024-05-14 09:15 A |  | 100% |  |  | start no earlier than 2024-05-14 09:00 | Шуранов Ю | 0.25h | 0.25h |
| 2550 | 7.24 | **ошибка 02а22 штабелер PS16N 414** |  | 0.12d | 2024-05-14 09:00 A | 2024-05-14 10:00 A |  | 100% |  |  |  |  | 1h | 1h |
| 2551 | 7.24.1 | составить рекламацию / вызов специалистов |  | 1h | 2024-05-14 09:00 A | 2024-05-14 10:00 A |  | 100% |  |  | start no earlier than 2024-05-14 09:00 | Шуранов Ю | 1h | 1h |
| 2552 | 7.25 | **неисправна кнопка стоп штабелер 5 цех** |  | 0.19d | 2024-05-14 09:00 A | 2024-05-14 10:30 A |  | 100% |  |  |  |  | 1.5h | 1.5h |
| 2553 | 7.25.1 | орг работы по замене калеса штабелера |  | 1h | 2024-05-14 09:00 A | 2024-05-14 10:00 A |  | 100% |  |  | start no earlier than 2024-05-14 09:00 | Шуранов Ю | 1h | 1h |
| 2554 | 7.25.2 | орг забор штабелера на ремонт гидроциондра. Договор с сервисной компанией о дате, обменть штабелер с 2 цеха |  | 30min | 2024-05-14 10:00 A | 2024-05-14 10:30 A | 2553 | 100% |  |  | start no earlier than 2024-05-14 09:00 | Шуранов Ю | 0.5h | 0.5h |
| 2555 | 7.26 | **ремонт стеклоочиститель вилочного** |  | 0.5d | 2024-05-14 09:00 A | 2024-05-14 13:00 A |  | 100% |  |  |  |  | 5h | 5h |
| 2556 | 7.26.1 | осмотр механизма чтто сломалось |  | 4h | 2024-05-14 09:00 A | 2024-05-14 13:00 A |  | 100% |  |  | start no earlier than 2024-05-14 09:00 | Шуранов Ю | 4h | 4h |
| 2557 | 7.26.2 | заявка на покупку стеклоочист |  | 1h | 2024-05-14 09:00 A | 2024-05-14 10:00 A |  | 100% |  |  | start no earlier than 2024-05-14 09:00 | Шуранов Ю | 1h | 1h |
| 2558 | 7.27 | купить ремень на генератор |  | 2h | 2024-05-14 09:00 A | 2024-05-14 11:00 A |  | 100% |  |  | start no earlier than 2024-05-14 09:00 | Шуранов Ю | 2h | 2h |
| 2559 | 8 | **Лаборатория** |  | 0.06d | 2026-04-20 09:00 A | 2026-04-20 09:30 A |  | 100% |  |  |  |  | 1h | 1h |
| 2560 | 8.1 | Отнести старый бульбулятор в архив |  | 30min | 2026-04-20 09:00 A | 2026-04-20 09:30 A |  | 100% |  |  | start no earlier than 2026-04-20 09:00 | Тимофеев В | 0.5h | 0.5h |
| 2561 | 8.2 | Отнести короб от нового бульбулятора тоже в архив |  | 30min | 2026-04-20 09:00 A | 2026-04-20 09:30 A |  | 100% |  |  | start no earlier than 2026-04-20 09:00 | Тимофеев В | 0.5h | 0.5h |
| 2562 | 9 | **слесарное помещение** |  | 125.75d? | 2026-06-11 09:00 A | 2026-11-16 16:00 |  | 81% | 24.37d? | 81.84d |  |  | 80.83h | 60.33h |
| 2563 | 9.1 | Подготовка к инвентаризации |  | 6h | 2026-11-16 09:00 | 2026-11-16 16:00 |  |  |  | 81.84d | start no earlier than 2026-11-16 08:00 | Тимофеев В | 6h |  |
| 2564 | 9.2 | Собрать вакуумный насос от поломоечной машинки |  | 2h | 2026-11-10 09:00 | 2026-11-10 11:00 |  |  |  | 88.34d | start no earlier than 2026-11-10 09:00 | Макаревич А; Николаев | 4h |  |
| 2565 | 9.3 | Доделать 3 треугольника - покрасить / расставить | manual | 3h | 2026-11-10 09:00 | 2026-11-10 12:00 |  |  |  |  | start no earlier than 2026-11-10 09:00 | Макаревич А; Николаев | 6h |  |
| 2566 | 9.4 | Пересобрать редуктор привода печи, привезли 02.11.26, собран только что бы проверить венец. Обязательно смазать вручную подшипник на валу солидолом или синькой. |  | 2h | 2026-11-04 09:00 A | 2026-11-04 11:00 A |  | 100% |  |  | start no earlier than 2026-11-04 09:00 | Макаревич А | 2h | 2h |
| 2567 | 9.5 | Изучение инструкции по водоподготовке воды 1 цех/ предложения по запуску и реализации |  | 3h | 2026-11-03 09:00 | 2026-11-03 12:00 |  |  |  | 95.22d | start no earlier than 2026-11-03 09:00 | Николаев | 3h |  |

| ID | WBS | Task | Type | Duration | Start | Finish | Predecessors | Complete | Total slack | Constraint | Resources | Work | Actual work |
| --- | --- | --- | --- | --- | --- | --- | --- | --- | --- | --- | --- | --- | --- |
| 2568 | 9.6 | **Модернизация люльки** |  | 1d | 2026-10-31 09:00 A | 2026-11-02 18:00 A |  | 100% |  |  |  | 16h | 16h |
| 2569 | 9.6.1 | сделать вставку в люльку со ступенькой и перилами, для возможности подниматься выше. Высота ступеньки по нижнюю перилину, высота перила нужно определить внутреннюю часть скреплять на болты | manual | 2d | 2026-10-31 09:00 A | 2026-11-02 18:00 A |  | 100% |  | start no earlier than 2026-10-31 09:00 | Макаревич А | 16h | 16h |
| 2570 | 9.7 | Доработка кронштейна для оснастки Бестрома по ТЗ труфанова |  | 3h | 2026-10-23 09:00 A | 2026-10-23 12:00 A |  | 100% |  | start no earlier than 2026-10-23 08:00 | Макаревич А | 3h | 3h |
| 2571 | 9.8 | Ремонт насоса для гидролизата 2 цех, который снимали в четверг 22.10.26 |  | 2h | 2026-10-23 09:00 A | 2026-10-23 11:00 A |  | 100% |  | start no earlier than 2026-10-23 08:00 | Макаревич А | 2h | 2h |
| 2572 | 9.9 | Дефектовка болера со склада упаковки, выяснить почему не работает с проверкой под водой, болер снят |  | 2h | 2026-10-20 09:00 A | 2026-10-20 11:00 A |  | 100% |  | start no earlier than 2026-10-20 09:00 | Бобренок В | 2h | 2h |
| 2573 | 9.10 | Заварить обруч от сеялки, лежит в слесарке |  | 1h | 2026-10-13 09:00 A | 2026-10-13 10:00 A |  | 100% |  | start no earlier than 2026-10-13 08:00 | Бобренок В | 1h | 1h |
| 2574 | 9.11 | Собрать насосы НШГ какие можно и какие есть в слесарке. Сообщить по количеству Б/У насосов, новых и количество ремкомплекта |  | 2h | 2026-10-14 09:00 A | 2026-10-14 11:00 A |  | 100% |  | start no earlier than 2026-10-14 08:00 | Бобренок В | 2h | 2h |
| 2575 | 9.12 | **Ремонт двигателя от поломоечной машинки** |  | 13.25d | 2026-10-13 09:00 A | 2026-10-29 11:00 A |  | 100% |  |  |  | 3.33h | 3.33h |
| 2576 | 9.12.1 | Заявка на подшипник |  | 10min | 2026-10-13 09:00 A | 2026-10-13 09:10 A |  | 100% |  | start no earlier than 2026-10-13 09:00 | Зорькин В | 0.17h | 0.17h |
| 2577 | 9.12.2 | контроль |  | 10min | 2026-10-20 09:00 A | 2026-10-20 09:10 A | 2576 | 100% |  | start no earlier than 2026-10-20 09:00 | Зорькин В | 0.17h | 0.17h |
| 2578 | 9.12.3 | Сборка двигателя обратно |  | 2h | 2026-10-29 09:00 A | 2026-10-29 11:00 A | 2577 | 100% |  | start no earlier than 2026-10-29 09:00 | Бобренок В | 2h | 2h |
| 2579 | 9.12.4 | Снять прикипевшую часть подшипника с вала насоса поломоечной машинки. |  | 1h | 2026-10-13 09:00 A | 2026-10-13 10:00 A | 2578 | 100% |  | start no earlier than 2026-10-13 08:00 | Бобренок В | 1h | 1h |
| 2580 | 9.13 | Доделать электрод | manual | 2h | 2026-10-11 09:00 A | 2026-10-11 11:00 A | 2581 | 100% |  |  | Бобренок В | 2h | 2h |
| 2581 | 9.14 | Разбор полок на большом стеллаже, наведенеие порядка | manual | 3h | 2026-10-10 09:00 A | 2026-10-10 12:00 A |  | 100% |  | start no earlier than 2026-10-10 09:00 | Бундин В | 3h | 3h |
| 2582 | 9.15 | Ремонт электродов парогенератора, один из электродов травит, пересобрать |  | 3h | 2026-10-05 09:00 A | 2026-10-05 12:00 A |  | 100% |  | start no earlier than 2026-10-05 09:00 | Бобренок В | 3h | 3h |
| 2583 | 9.16 | **уборка и сортировка. Приготовить, дневные проверят и продолжат** |  | 3.25d | 2026-09-22 09:00 A | 2026-09-25 11:00 A |  | 100% |  |  |  | 9h | 9h |
| 2584 | 9.16.1 | освободить стеллаж для оперативного хранения с ФИО |  | 1h | 2026-09-22 16:00 A | 2026-09-22 17:00 A | 2587 | 100% |  | start no earlier than 2026-09-22 09:00 | Макаревич А | 1h | 1h |
| 2585 | 9.16.2 | куча №1 - не годное на выброс |  | 2h | 2026-09-22 09:00 A | 2026-09-22 11:00 A |  | 100% |  | start no earlier than 2026-09-22 09:00 | Макаревич А | 2h | 2h |
| 2586 | 9.16.3 | куча №2 - годное, но хранить нужно на дальних складах |  | 2h | 2026-09-22 11:00 A | 2026-09-22 13:00 A | 2585 | 100% |  | start no earlier than 2026-09-21 09:00 | Макаревич А | 2h | 2h |
| 2587 | 9.16.4 | куча №3 - не понятно где хранить. |  | 2h | 2026-09-22 14:00 A | 2026-09-22 16:00 A | 2586 | 100% |  | start no earlier than 2026-09-18 08:00 | Макаревич А | 2h | 2h |
| 2588 | 9.16.5 | сортировка и перемещение мусор / металлолм/ дальние стеллажи |  | 2h | 2026-09-25 09:00 A | 2026-09-25 11:00 A |  | 100% |  | start no earlier than 2026-09-25 09:00 | Бундин В | 2h | 2h |
| 2589 | 9.17 | отвезти паллет возле слесарки в синий | manual | 1h | 2026-08-30 09:00 A | 2026-08-30 10:00 A |  | 100% |  | start no earlier than 2026-08-30 09:00 | Бундин В | 1h | 1h |
| 2590 | 9.18 | заварить хомут от деко 5 ц. |  | 2h | 2026-07-02 09:00 A | 2026-07-02 11:00 A |  | 100% |  | start no earlier than 2026-07-02 09:00 | Тимофеев В | 2h | 2h |
| 2591 | 9.19 | доставить временно наш компрессор на 3 склад для обдува погрузчиков | manual | 1h | 2026-06-29 09:00 A | 2026-06-29 10:00 A |  | 100% |  | start no earlier than 2026-06-29 09:00 | Тимофеев В | 1h | 1h |
| 2592 | 9.20 | ремонт 2-х ручных запайщиков- запчасти на складе (нагревательные блоки, тены) | manual | 2h | 2026-06-27 09:00 A | 2026-06-27 11:00 A |  | 100% |  | start no earlier than 2026-06-27 09:00 | Дедов В | 2h | 2h |
| 2593 | 9.21 | оставляем порядок после своей смены в слесарке |  | 0.5h | 2026-06-12 09:00 | 2026-06-12 09:30 |  |  | 206.53d | start no earlier than 2026-06-12 09:00 | Дедов В; Бобренок В; Бундин В | 1.5h |  |
| 2594 | 9.22 | Проверка напольных весов, почему не работают, возможно отошел контакт |  | 2h | 2026-07-24 09:00 A | 2026-07-24 11:00 A |  | 100% |  | start no earlier than 2026-07-24 09:00 | Бундин В | 2h | 2h |
| 2595 | 9.23 | уборка |  | 0.25d? | 2026-06-11 09:00 A | 2026-06-11 11:00 A |  | 100% |  |  | Труфанов А | 2h | 2h |
| 2596 | 9.24 | проверить весы настольные (показывают вес больше, если получится калибровать) |  | 2h | 2026-06-11 09:00 A | 2026-06-11 11:00 A |  | 100% |  | start no earlier than 2026-06-11 09:00 | Дедов В | 2h | 2h |

| ID | WBS | Task | Type | Duration | Start | Finish | Predecessors | Complete | Remaining | Total slack | Constraint | Resources | Work | Actual work |
| --- | --- | --- | --- | --- | --- | --- | --- | --- | --- | --- | --- | --- | --- | --- |
| 2597 | 10 | **ЗИП ремонт** |  | 683.25d? | 2024-05-09 09:00 A | 2026-12-03 11:00 |  | 55% | 305.78d? | 69.34d |  |  | 856.42h | 423.58h |
| 2598 | 10.1 | Со 2 цеха привезти редуктор от прекондиционера в слесарку и поставить на рабочий стол, мычалками перецепить и вилами положить на стол, раскидать его, отдефектовать | manual | 4h | 2026-11-21 09:00 | 2026-11-21 13:00 |  |  |  |  | start no earlier than 2026-11-21 09:00 | Бундин В | 4h |  |
| 2599 | 10.2 | Ремонт электродов в слесарке (1 и 2 цех) нержа в доль стелажа, пластины на желтом складе | manual | 3h | 2026-11-21 09:00 A | 2026-11-21 12:00 A |  | 100% |  |  | start no earlier than 2026-11-21 09:00 | Тимофеев В | 3h | 3h |
| 2600 | 10.3 | Перебрать насос гидрализата винтовой |  | 1h | 2026-11-17 09:00 A | 2026-11-17 10:00 A |  | 100% |  |  | start no earlier than 2026-11-17 08:00 | Тимофеев В | 1h | 1h |
| 2601 | 10.4 | Восстановление электродов в слесарке |  | 3h | 2026-11-17 09:00 A | 2026-11-17 12:00 A |  | 100% |  |  | start no earlier than 2026-11-17 09:00 | Макаревич А; Николаев | 6h | 6h |
| 2602 | 10.5 | бойлер с 2ц на ремонт / проверка потенциометра |  | 2h | 2026-11-13 09:00 A | 2026-11-13 11:00 A |  | 100% |  |  | start no earlier than 2026-11-13 08:00 | Бундин В | 2h | 2h |
| 2603 | 10.6 | Восстановление платы от пробника, зачистка контактов, где погоревшие пины соединение через внешний клемник (отметить статус задачи) | manual | 2h | 2026-11-03 09:00 | 2026-11-03 11:00 |  |  |  |  | start no earlier than 2026-11-03 09:00 | Дедов В | 2h |  |
| 2604 | 10.7 | **ремонт блоков управления датерами** |  | 0.38d | 2026-10-02 09:00 A | 2026-10-02 12:00 A |  | 100% |  |  |  |  | 3h | 3h |
| 2605 | 10.7.1 | составить схему подключения - мотор / датчик / тен / -- первые компоненты на плате блока (основной упор на эту задачу) Продолжаем делать |  | 3h | 2026-10-02 09:00 A | 2026-10-02 12:00 A |  | 100% |  |  | start no earlier than 2026-10-02 09:00 | Дедов В | 3h | 3h |
| 2606 | 10.8 | **Собрать редуктор питателя, который разобранный на верстаке** |  | 7.09d | 2026-09-28 09:00 A | 2026-10-06 09:45 A |  | 100% |  |  |  |  | 2.75h | 2.75h |
| 2607 | 10.8.1 | отпраитвь на перемонтку |  | 15min | 2026-09-28 09:00 A | 2026-09-28 09:15 A |  | 100% |  |  | start no earlier than 2026-09-28 09:00 | Зорькин В | 0.25h | 0.25h |
| 2608 | 10.8.2 | контроль |  | 15min | 2026-10-04 09:15 A | 2026-10-04 09:30 A | 2607FS+5d | 100% |  |  | start no earlier than 2026-09-25 08:00 | Зорькин В | 0.25h | 0.25h |
| 2609 | 10.8.3 | орг забрать |  | 15min | 2026-10-06 09:30 A | 2026-10-06 09:45 A | 2608FS+2d | 100% |  |  | start no earlier than 2026-09-25 08:00 | Зорькин В | 0.25h | 0.25h |
| 2610 | 10.8.4 | сборка |  | 2h | 2026-09-29 09:00 A | 2026-09-29 11:00 A | 2609FS+1d | 100% |  |  | start no earlier than 2026-09-25 08:00 | Бундин В | 2h | 2h |
| 2611 | 10.9 | **Дефектовка двигателя от питателя прекондиционера/ прозвонить (возможно подготовить для сдачи на перемотку)** |  | 8.25d | 2026-09-04 09:00 A | 2026-09-13 11:00 A |  | 100% |  |  |  |  | 4h | 4h |
| 2612 | 10.9.1 | разбрка тест |  | 1h | 2026-09-04 09:00 A | 2026-09-04 10:00 A |  | 100% |  |  | start no earlier than 2026-09-04 09:00 | Бобренок В | 1h | 1h |
| 2613 | 10.9.2 | тест 2 с редуктором |  | 1h | 2026-09-08 09:00 A | 2026-09-08 10:00 A |  | 100% |  |  | start no earlier than 2026-09-08 08:00 | Тимофеев В | 1h | 1h |
| 2614 | 10.9.3 | разборка ревизия |  | 2h | 2026-09-13 09:00 A | 2026-09-13 11:00 A |  | 100% |  |  | start no earlier than 2026-09-13 09:00 | Макаревич А | 2h | 2h |
| 2615 | 10.10 | **ремонт редутор печи №?** |  | 26.31d | 2026-09-05 09:00 A | 2026-10-02 11:30 A |  | 100% |  |  |  |  | 5.25h | 5.25h |
| 2616 | 10.10.1 | дефектовка редуктора печи 2 цех, лежит в слесарке |  | 2h | 2026-09-05 09:00 A | 2026-09-05 11:00 A |  | 100% |  |  | start no earlier than 2026-09-05 09:00 | Макаревич А | 2h | 2h |
| 2617 | 10.10.2 | возможно ли установить тавотницу на подшипник червяка? |  | 15min | 2026-09-10 09:00 A | 2026-09-10 09:15 A |  | 100% |  |  | start no earlier than 2026-09-10 09:00 | Тимофеев В | 0.25h | 0.25h |
| 2618 | 10.10.3 | заказ шестерни червя в ЗИП - отправить курьера |  | 15min | 2026-09-09 09:00 A | 2026-09-09 09:15 A | 2616 | 100% |  |  | start no earlier than 2026-09-09 09:00 | Зорькин В | 0.25h | 0.25h |
| 2619 | 10.10.4 | контроль изг шетесиерен |  | 15min | 2026-09-19 09:15 A | 2026-09-19 09:30 A | 2618FS+10d | 100% |  |  | start no earlier than 2026-09-08 08:00 | Зорькин В | 0.25h | 0.25h |
| 2620 | 10.10.5 | заказ шестерни червя в ЗИП - отправить курьера |  | 15min | 2026-09-21 09:00 A | 2026-09-21 09:15 A | 2616 | 100% |  |  | start no earlier than 2026-09-21 09:00 | Зорькин В | 0.25h | 0.25h |
| 2621 | 10.10.6 | контроль изг шетесиерен |  | 15min | 2026-10-01 09:15 A | 2026-10-01 09:30 A | 2620FS+10d | 100% |  |  | start no earlier than 2026-09-08 08:00 | Зорькин В | 0.25h | 0.25h |
| 2622 | 10.10.7 | сборка редутор венец |  | 2h | 2026-10-02 09:30 A | 2026-10-02 11:30 A | 2619FS+1d, 2621FS+1d | 100% |  |  | start no earlier than 2026-09-20 09:00 | Макаревич А | 2h | 2h |
| 2623 | 10.11 | ремонт оборотные сетки-поддоны от печи от 2ц |  | 2h | 2026-09-13 09:00 A | 2026-09-13 11:00 A |  | 100% |  |  | start no earlier than 2026-09-13 09:00 | Макаревич А | 2h | 2h |
| 2624 | 10.12 | подготовить электродную группу для 2 цеха |  | 3h | 2026-08-25 09:00 A | 2026-08-25 12:00 A |  | 100% |  |  | start no earlier than 2026-08-25 08:00 | Бундин В | 3h | 3h |
| 2625 | 10.13 | пепенос трубы нерж с 3ц на синий склад |  | 1h | 2026-08-24 09:00 A | 2026-08-24 10:00 A |  | 100% |  |  | start no earlier than 2026-08-24 09:00 | Некрасов А; Тимофеев В | 2h | 2h |
| 2626 | 10.14 | ремонт электрод парогенертора для 2ц |  | 4h | 2026-08-18 09:00 A | 2026-08-18 13:00 A |  | 100% |  |  | start no earlier than 2026-08-18 09:00 | Бобренок В | 4h | 4h |
| 2627 | 10.15 | перевоз батареи свинец от погрузчика на синий склад |  | 30min | 2026-08-12 09:00 A | 2026-08-12 09:30 A |  | 100% |  |  | start no earlier than 2026-08-12 09:00 | Макаревич А | 0.5h | 0.5h |

| ID | WBS | Task | Type | Duration | Start | Finish | Predecessors | Complete | Actual start | Actual finish | Constraint | Resources | Work | Actual work |
| --- | --- | --- | --- | --- | --- | --- | --- | --- | --- | --- | --- | --- | --- | --- |
| 2628 | 10.16 | **заточка ножей** |  | 6.03d | 2026-08-13 09:00 A | 2026-08-21 09:15 A |  | 100% |  |  |  |  | 0.5h | 0.5h |
| 2629 | 10.16.1 | разместить ЛТ70 курьеру, отметиь журнал |  | 15min | 2026-08-13 09:00 A | 2026-08-13 09:15 A |  | 100% |  |  | start no earlier than 2026-08-13 09:00 | Зорькин В | 0.25h | 0.25h |
| 2630 | 10.16.2 | контроль, орг забрать |  | 15min | 2026-08-21 09:00 A | 2026-08-21 09:15 A |  | 100% |  |  | start no earlier than 2026-08-21 09:00 | Шуранов Ю | 0.25h | 0.25h |
| 2631 | 10.17 | **ножевой узел для 1ц** |  | 0.03d | 2026-08-13 09:00 A | 2026-08-13 09:15 A |  | 100% |  |  |  |  | 0.25h | 0.25h |
| 2632 | 10.17.1 | контроль поставки |  | 15min | 2026-08-13 09:00 A | 2026-08-13 09:15 A |  | 100% |  |  | start no earlier than 2026-08-13 09:00 | Домоводов К | 0.25h | 0.25h |
| 2633 | 10.18 | подготовить электроды для парогенератора цех 1 |  | 4h | 2026-08-05 08:00 A | 2026-08-05 13:00 A |  | 100% |  |  | start no earlier than 2026-08-05 08:00 | Макаревич А | 4h | 4h |
| 2634 | 10.19 | восстановить голову насоса гидрализата (в слесарке) подписать | manual | 2h | 2026-08-01 09:00 A | 2026-08-01 11:00 A |  | 100% |  |  | start no earlier than 2026-08-01 09:00 | Бундин В | 2h | 2h |
| 2635 | 10.20 | **восстановить сетку спечи (она в слесарке)** |  | 1d? | 2026-08-14 09:00 | 2026-08-14 18:00 |  | 100% | 2026-08-03 09:00 | 2026-08-03 18:00 |  |  | 8h | 8h |
| 2636 | 10.20.1 | заказать сверла по нерж. М5 и М6 |  | 1d? | 2026-08-03 09:00 A | 2026-08-03 18:00 A |  | 100% |  |  | start no earlier than 2026-08-03 08:00 | Шуранов Ю | 8h | 8h |
| 2637 | 10.21 | подготовить антиэлектроды по аналогии с нашими (все на складе) | manual | 5h | 2026-08-01 09:00 A | 2026-08-01 15:00 A |  | 100% |  |  | start no earlier than 2026-08-01 09:00 | Бундин В | 5h | 5h |
| 2638 | 10.22 | подготовить электродную группу для парогенератора |  | 3h | 2026-06-12 09:00 A | 2026-06-12 12:00 A |  | 100% |  |  | start no earlier than 2026-06-12 09:00 | Бундин В | 3h | 3h |
| 2639 | 10.23 | собрать 2 стула для ИТР |  | 2h | 2026-06-07 09:00 A | 2026-06-08 11:00 A |  | 100% |  |  | start no earlier than 2026-06-07 09:00 | Бобренок В | 2h | 2h |
| 2640 | 10.24 | **покрасить швейлеры возле слесарки(грунтовка, затем серый цвет)** |  | 0.25d | 2026-06-12 09:00 A | 2026-06-12 11:00 A |  | 100% |  |  |  | Бобренок В | 4h | 4h |
| 2641 | 10.24.1 | болгаркой убрать сварочные сопли и покрасить |  | 2h | 2026-06-12 09:00 A | 2026-06-12 11:00 A |  | 100% |  |  | start no earlier than 2026-06-12 09:00 | Бундин В | 2h | 2h |
| 2642 | 10.25 | подготовить фильтры для кондиционеров, замена фильтр ткани. Находятся в слесарке | manual | 2h | 2026-06-14 09:00 A | 2026-06-14 11:00 A |  | 100% |  |  | start no earlier than 2026-06-14 09:00 | Бундин В | 2h | 2h |
| 2643 | 10.26 | **заявка на фильеры от 02.06 1ц и 2ц** |  | 7.19d | 2026-06-02 09:00 A | 2026-06-11 10:30 A |  | 100% |  |  |  |  | 4.5h | 4.5h |
| 2644 | 10.26.1 | подготовить чертежи по ТЗ |  | 2h | 2026-06-02 09:00 A | 2026-06-02 11:00 A |  | 100% |  |  | start no earlier than 2026-06-02 09:00 | Домоводов К | 2h | 2h |
| 2645 | 10.26.2 | **партия 1** |  | 6.19d | 2026-06-03 09:00 A | 2026-06-11 10:30 A |  | 100% |  |  |  |  | 1.5h | 1.5h |
| 2646 | 10.26.2.1 | разместить токарю заварка фильер + шлифвка |  | 30min | 2026-06-03 09:00 A | 2026-06-03 09:30 A |  | 100% |  |  | start no earlier than 2026-06-03 08:00 | Шуранов Ю | 0.5h | 0.5h |
| 2647 | 10.26.2.2 | забрать заваренные / разместить на изготовление дюз |  | 30min | 2026-06-07 09:30 A | 2026-06-08 09:30 A | 2646FS+4d | 100% |  |  | start no earlier than 2026-06-03 08:00 | Шуранов Ю | 0.5h | 0.5h |
| 2648 | 10.26.2.3 | забрать готовые |  | 30min | 2026-06-11 10:00 A | 2026-06-11 10:30 A | 2647FS+4d | 100% |  |  | start no earlier than 2026-06-03 08:00 | Шуранов Ю | 0.5h | 0.5h |
| 2649 | 10.26.3 | **партия 2** |  | 3.12d | 2026-06-04 09:00 A | 2026-06-09 10:00 A |  | 100% |  |  |  |  | 1h | 1h |
| 2650 | 10.26.3.1 | разместить готовые балванки на прожиг отверстий |  | 30min | 2026-06-04 09:00 A | 2026-06-04 09:30 A |  | 100% |  |  | start no earlier than 2026-06-04 09:00 | Шуранов Ю | 0.5h | 0.5h |
| 2651 | 10.26.3.2 | забрать готовые |  | 30min | 2026-06-09 09:30 A | 2026-06-09 10:00 A | 2650FS+5d | 100% |  |  | start no earlier than 2026-06-03 08:00 | Шуранов Ю | 0.5h | 0.5h |

| ID | WBS | Task | Duration | Start | Finish | Predecessors | Complete | Total slack | Free slack | Constraint | Resources | Work | Actual work |
| --- | --- | --- | --- | --- | --- | --- | --- | --- | --- | --- | --- | --- | --- |
| 2652 | 10.27 | **зип тенов на печь 70 и 85 + шестерни питатель 70** | 30.06d | 2026-05-28 09:00 A | 2026-07-09 09:30 A |  | 100% |  |  |  |  | 0.75h | 0.75h |
| 2653 | 10.27.1 | запрос Настя, получить счет | 15min | 2026-05-28 09:00 A | 2026-05-28 09:15 A |  | 100% |  |  | start no earlier than 2026-05-28 09:00 | Домоводов К | 0.25h | 0.25h |
| 2654 | 10.27.2 | оплата | 15min | 2026-06-04 09:00 A | 2026-06-04 09:15 A | 2653FS+2d | 100% |  |  | start no earlier than 2026-06-04 09:00 | Домоводов К | 0.25h | 0.25h |
| 2655 | 10.27.3 | контроль поставки | 15min | 2026-07-09 09:15 A | 2026-07-09 09:30 A | 2654FS+30d | 100% |  |  | start no earlier than 2026-05-27 08:00 | Зорькин В | 0.25h | 0.25h |
| 2656 | 10.28 | подготовка к инвентаризации | 3h | 2026-05-26 09:00 A | 2026-05-26 12:00 A |  | 100% |  |  | start no earlier than 2026-05-26 09:00 | Бундин В | 3h | 3h |
| 2657 | 10.29 | посчитать и записать какие и какое количество автоматов и контакторов есть в слесарке | 1h | 2026-05-23 09:00 A | 2026-05-25 10:00 A |  | 100% |  |  | start no earlier than 2026-05-23 09:00 | Макаревич А | 1h | 1h |
| 2658 | 10.30 | передать весы (малые в 1 цех, большие в 5 цех) со слесарки | 1h | 2026-05-22 09:00 A | 2026-05-22 10:00 A |  | 100% |  |  | start no earlier than 2026-05-22 09:00 | Макаревич А | 1h | 1h |
| 2659 | 10.31 | проверить работает или нет двигатель с накопительного стола цех 1- Валентин покажет. | 1h | 2026-05-19 08:00 A | 2026-05-19 10:00 A |  | 100% |  |  | start no earlier than 2026-05-19 08:00 | Дедов В | 1h | 1h |
| 2660 | 10.32 | наточить ножи для ц.2 | 1h | 2026-05-19 09:00 A | 2026-05-19 10:00 A |  | 100% |  |  | start no earlier than 2026-05-19 09:00 | Тимофеев В | 1h | 1h |
| 2661 | 10.33 | подготовка к инвентаризации (посчитать какие и метраж кабеля в слесарке и желтом нашей половине) | 2h | 2026-05-24 09:00 A | 2026-05-25 11:00 A |  | 100% |  |  | start no earlier than 2026-05-24 09:00 | Дедов В | 2h | 2h |
| 2662 | 10.34 | подготовить рабочее место в слесарке для работы на кровле Олега | 1h | 2026-05-15 09:00 A | 2026-05-15 10:00 A |  | 100% |  |  | start no earlier than 2026-05-15 09:00 | Некрасов А; Труфанов А; Тимофеев В; Макаревич А | 4h | 4h |
| 2663 | 10.35 | **ремонт инсекютер с 1ц в слесарке. Повесить в цехе, зафиксировать в журнал мастера** | 0.12d | 2026-05-19 09:00 A | 2026-05-19 10:00 A |  | 100% |  |  |  |  | 1h | 1h |
| 2664 | 10.35.1 | взять светильник "антимуха" у Луговских и повесить на входе в корридор между раздевалками | 1h | 2026-05-19 09:00 A | 2026-05-19 10:00 A |  | 100% |  |  | start no earlier than 2026-05-19 09:00 | Дедов В | 1h | 1h |
| 2665 | 10.36 | **орг ремонт мотор с вращаюбщего барабана 1ц** | 0.16d | 2026-09-01 09:00 | 2026-09-01 10:15 |  |  | 149.44d |  |  |  | 1.25h |  |
| 2666 | 10.36.1 | подписать шильдик. На веревочке картонка / пластик | 15min | 2026-09-01 09:00 | 2026-09-01 09:15 |  |  | 149.44d | 0d | start no earlier than 2026-09-01 09:00 | Шуранов Ю | 0.25h |  |
| 2667 | 10.36.2 | орг ремонт | 1h | 2026-09-01 09:15 | 2026-09-01 10:15 | 2666 |  | 149.44d |  | start no earlier than 2026-09-01 09:00 | Шуранов Ю | 1h |  |
| 2668 | 10.37 | получить на складе резинки на двери прекондиционеров и выдать цех 1 и 2 | 1h | 2026-05-11 09:00 A | 2026-05-11 10:00 A |  | 100% |  |  | start no earlier than 2026-05-11 09:00 |  |  |  |
| 2669 | 10.38 | подготовить электродную группу для 1 цеха | 3h | 2026-05-11 09:00 A | 2026-05-11 12:00 A |  | 100% |  |  | start no earlier than 2026-05-11 09:00 | Бундин В | 3h | 3h |
| 2670 | 10.39 | на емкость нерж сделать сгон и поплавок | 4h | 2026-05-09 09:00 A | 2026-05-11 13:00 A |  | 100% |  |  | start no earlier than 2026-05-09 09:00 | Макаревич А | 4h | 4h |
| 2671 | 10.40 | отвезти термоодеяло с слесарки в синий склад | 1h | 2026-05-11 09:00 A | 2026-05-11 10:00 A |  | 100% |  |  | start no earlier than 2026-05-11 09:00 | Бундин В | 1h | 1h |
| 2672 | 10.41 | приехали дроселя для светильников, восстановить не рабочие | 4h | 2026-05-12 09:00 A | 2026-05-12 13:00 A |  | 100% |  |  | start no earlier than 2026-05-12 09:00 | Бундин В | 4h | 4h |
| 2673 | 10.42 | **орг ремонт мотор с конв №2 1 линия 1ц** | 0.25d | 2026-09-01 09:00 | 2026-09-01 11:00 |  |  | 149.34d |  |  |  | 2h |  |
| 2674 | 10.42.1 | подписать шильдик | 60min | 2026-09-01 09:00 | 2026-09-01 10:00 |  |  | 149.34d | 0d | start no earlier than 2026-09-01 09:00 | Шуранов Ю | 1h |  |
| 2675 | 10.42.2 | орг ремонт | 1h | 2026-09-01 10:00 | 2026-09-01 11:00 | 2674 |  | 149.34d |  | start no earlier than 2026-05-14 09:00 | Шуранов Ю | 1h |  |
| 2676 | 10.43 | сборка редуктор с шлюз питателя (фото в чате 14.05) | 3h | 2026-08-31 09:00 A | 2026-08-31 12:00 A |  | 100% |  |  | start no earlier than 2026-09-02 09:00 | Тимофеев В | 3h | 3h |

| ID | WBS | Task | Type | Duration | Start | Finish | Predecessors | Complete | Constraint | Resources | Work | Actual work |
| --- | --- | --- | --- | --- | --- | --- | --- | --- | --- | --- | --- | --- |
| 2677 | 10.44 | **собрать мотор-редуктор прекондиционера в слесарке (сальники на складе в лотках снизу подписаны)** |  | 0.12d | 2026-06-15 09:00 A | 2026-06-15 10:00 A |  | 100% |  | Бундин В | 3h | 3h |
| 2678 | 10.44.1 | транспортировка в синий склад |  | 1h | 2026-06-15 09:00 A | 2026-06-15 10:00 A |  | 100% | start no earlier than 2026-06-15 09:00 | Тимофеев В; Некрасов А | 2h | 2h |
| 2679 | 10.45 | **вскрыть листогиб** |  | 4.5d | 2026-05-09 09:00 A | 2026-05-15 13:00 A |  | 100% |  |  | 11.17h | 11.17h |
| 2680 | 10.45.1 | проверить работу листогиба (попробовать загнуть нерж) |  | 1h | 2026-05-09 09:00 A | 2026-05-11 10:00 A |  | 100% | start no earlier than 2026-05-09 09:00 | Макаревич А | 1h | 1h |
| 2681 | 10.45.2 | как удлинить ручки, предложение |  | 5min | 2026-05-13 09:00 A | 2026-05-13 09:05 A |  | 100% | start no earlier than 2026-05-13 09:00 | Труфанов А | 0.08h | 0.08h |
| 2682 | 10.45.3 | куда крепить стационарно. Синий склад /контейнер. Предложения. |  | 5min | 2026-05-13 09:00 A | 2026-05-13 09:05 A |  | 100% | start no earlier than 2026-05-13 09:00 | Труфанов А | 0.08h | 0.08h |
| 2683 | 10.45.4 | изготовить раму для крепления к полу |  | 4h | 2026-05-15 09:00 A | 2026-05-15 13:00 A |  | 100% | start no earlier than 2026-05-15 09:00 | Тимофеев В; Макаревич А | 8h | 8h |
| 2684 | 10.45.5 | усилить ручки |  | 1h | 2026-05-15 09:00 A | 2026-05-15 10:00 A |  | 100% | start no earlier than 2026-05-15 09:00 | Тимофеев В; Макаревич А | 2h | 2h |
| 2685 | 10.46 | вывезти питатель на синий склад |  | 1h | 2026-05-05 09:00 A | 2026-05-05 10:00 A |  | 100% | start no earlier than 2026-05-05 09:00 | Тимофеев В | 1h | 1h |
| 2686 | 10.47 | транспортировка гильз и шнеков на синий склад (уложить по приходам из китая) |  | 3h | 2026-05-05 09:00 A | 2026-05-05 12:00 A |  | 100% | start no earlier than 2026-05-05 09:00 | Тимофеев В; Бобренок В; Шуранов Ю | 9h | 9h |
| 2687 | 10.48 | найти на синем складе комплектующие для инвентаризации с Алексеем |  | 3h | 2026-05-05 09:00 A | 2026-05-05 12:00 A |  | 100% | start no earlier than 2026-05-05 08:00 | Шуранов Ю | 3h | 3h |
| 2688 | 10.49 | посчитать все валы от транспортеров, занести в таблицу учета |  | 4h | 2026-05-11 09:00 A | 2026-05-11 13:00 A |  | 100% | start no earlier than 2026-05-09 09:00 | Шуранов Ю | 4h | 4h |
| 2689 | 10.50 | посчитать сколько валов для транспортеров Теко в слесарке |  | 1h | 2026-04-30 09:00 A | 2026-04-30 10:00 A |  | 100% | start no earlier than 2026-04-30 09:00 | Шуранов Ю | 1h | 1h |
| 2690 | 10.51 | уборка остатки металл в контейнер |  | 1h | 2026-04-29 09:00 A | 2026-04-29 10:00 A |  | 100% | start no earlier than 2026-04-29 09:00 | Некрасов А; Тимофеев В; Труфанов А; Бундин В | 4h | 4h |
| 2691 | 10.52 | **ЗИП на ПГ антиэлектрод** |  | 33d? | 2026-05-13 09:00 A | 2026-06-26 18:00 A |  | 100% |  |  | 9.5h | 9.5h |
| 2692 | 10.52.1 | поиск в продаже труба нерж ф205 (проверить у Тимофеева диамтр) |  | 1h | 2026-05-13 09:00 A | 2026-05-13 10:00 A |  | 100% | start no earlier than 2026-05-13 09:00 | Зорькин В | 1h | 1h |
| 2693 | 10.52.2 | заявка |  | 15min | 2026-05-13 10:00 A | 2026-05-13 10:15 A | 2692 | 100% | start no earlier than 2026-04-24 08:00 | Зорькин В | 0.25h | 0.25h |
| 2694 | 10.52.3 | контроль доставки. Карабанов размещает у свои |  | 15min | 2026-05-19 09:00 A | 2026-05-19 09:15 A | 2693FS+5d | 100% | start no earlier than 2026-05-19 09:00 | Зорькин В | 0.25h | 0.25h |
| 2695 | 10.52.4 | монтаж |  | 1d? | 2026-06-26 09:00 A | 2026-06-26 18:00 A | 2694FS+2d | 100% | start no earlier than 2026-06-26 09:00 | Тимофеев В | 8h | 8h |
| 2696 | 10.53 | **ремонт шуруповерт макита** |  | 40d | 2026-04-19 09:00 A | 2026-06-14 11:00 A |  | 100% |  |  | 5h | 5h |
| 2697 | 10.53.1 | разобрать шуруповерт макита, выяснить с редуктором проблема или нет | manual | 2h | 2026-04-19 09:00 A | 2026-04-19 11:00 A |  | 100% | start no earlier than 2026-04-19 09:00 | Дедов В | 2h | 2h |
| 2698 | 10.53.2 | отправить фидео запрос о ремонте в сервисн центр |  | 1h | 2026-04-20 09:00 A | 2026-04-20 10:00 A |  | 100% | start no earlier than 2026-04-20 08:00 | Зорькин В | 1h | 1h |
| 2699 | 10.53.3 | конртроль / решение о списании | milestone | 0d | 2026-04-27 09:00 A | 2026-04-27 09:00 A |  | 100% | start no earlier than 2026-04-27 09:00 | Зорькин В |  |  |
| 2700 | 10.53.4 | попробовать собрать шуроповерт, находится в слесарке | manual | 2h | 2026-06-14 09:00 A | 2026-06-14 11:00 A |  | 100% | start no earlier than 2026-06-14 09:00 | Бундин В | 2h | 2h |
| 2701 | 10.54 | взять винты пота м6х25 и перекрутить на сетке для печи | manual | 1h | 2026-04-20 09:00 A | 2026-04-20 10:00 A |  | 100% | start no earlier than 2026-04-20 09:00 | Тимофеев В | 1h | 1h |

| ID | WBS | Task | Type | Duration | Start | Finish | Predecessors | Complete | Remaining | Total slack | Constraint | Resources | Work | Actual work |
| --- | --- | --- | --- | --- | --- | --- | --- | --- | --- | --- | --- | --- | --- | --- |
| 2702 | 10.55 | **шестерня питателя LT85** |  | 7.01d | 2026-04-08 09:00 A | 2026-04-17 09:05 |  | 94% | 0.44d | 246.58d |  |  | 1.33h | 1.25h |
| 2703 | 10.55.1 | **1. заказ с китая** |  | 7.01d | 2026-04-08 09:00 A | 2026-04-17 09:05 |  | 75% | 1.75d | 246.58d |  |  | 0.33h | 0.25h |
| 2704 | 10.55.1.1 | запрос / контроль |  | 15min | 2026-04-08 09:00 A | 2026-04-08 09:15 A |  | 100% |  |  | start no earlier than 2026-04-08 09:00 | Шуранов Ю | 0.25h | 0.25h |
| 2705 | 10.55.1.2 | контроль |  | 5min | 2026-04-17 09:00 | 2026-04-17 09:05 |  |  |  | 246.58d | start no earlier than 2026-04-17 09:00 | Шуранов Ю | 0.08h |  |
| 2706 | 10.55.2 | **2. изготовление по образцу** |  | 5.03d | 2026-04-08 09:00 A | 2026-04-15 09:15 A |  | 100% |  |  |  |  | 1h | 1h |
| 2707 | 10.55.2.1 | выяснить возможносить изготвления |  | 30min | 2026-04-08 09:00 A | 2026-04-08 09:30 A |  | 100% |  |  | start no earlier than 2026-04-08 09:00 | Зорькин В | 0.5h | 0.5h |
| 2708 | 10.55.2.2 | отправить курьера |  | 15min | 2026-04-08 09:30 A | 2026-04-08 09:45 A | 2707 | 100% |  |  | start no earlier than 2026-04-06 09:00 | Зорькин В | 0.25h | 0.25h |
| 2709 | 10.55.2.3 | контроль |  | 15min | 2026-04-15 09:00 A | 2026-04-15 09:15 A | 2708 | 100% |  |  | start no earlier than 2026-04-15 09:00 | Зорькин В | 0.25h | 0.25h |
| 2710 | 10.56 | проверить наличие лент в ЗИП перед утилизаций б/у |  | 2h | 2026-03-31 09:00 A | 2026-03-31 11:00 A |  | 100% |  |  | start no earlier than 2026-03-31 08:00 | Зорькин В | 2h | 2h |
| 2711 | 10.57 | соединители лент траснспортеры линий - проверить остаток |  | 30min | 2026-08-31 09:00 | 2026-08-31 09:30 |  |  |  | 150.53d | start no earlier than 2026-08-31 09:00 | Зорькин В | 0.5h |  |
| 2712 | 10.58 | **освободить место на син склад / перенос в новый контейнер** |  | 1.5d | 2026-03-30 08:00 A | 2026-03-31 13:00 A |  | 100% |  |  |  |  | 38h | 38h |
| 2713 | 10.58.1 | перенести метал, норию в контейнер с синего склада |  | 4h | 2026-03-30 09:00 A | 2026-03-30 13:00 A |  | 100% |  |  | start no earlier than 2026-03-30 09:00 | Бобренок В; Некрасов А; Тимофеев В | 12h | 12h |
| 2714 | 10.58.2 | сборка стеллаж хранения металла |  | 4h | 2026-03-30 08:00 A | 2026-03-30 13:00 A |  | 100% |  |  | start no earlier than 2026-03-30 08:00 | Некрасов А; Труфанов А; Тимофеев В | 10h | 10h |
| 2715 | 10.58.3 | монтаж стеллаж хранения металла |  | 4h | 2026-03-31 09:00 A | 2026-03-31 13:00 A |  | 100% |  |  | start no earlier than 2026-03-31 09:00 | Некрасов А; Труфанов А | 8h | 8h |
| 2716 | 10.58.4 | загрузка мусор в трактор дерево, отход |  | 4h | 2026-03-31 09:00 A | 2026-03-31 13:00 A |  | 100% |  |  | start no earlier than 2026-03-31 08:00 | Некрасов А; Труфанов А | 8h | 8h |
| 2717 | 10.59 | заточка ножей 2ц орг |  | 30min | 2026-03-25 09:00 A | 2026-03-25 09:30 A |  | 100% |  |  | start no earlier than 2026-03-25 08:00 | Зорькин В | 0.5h | 0.5h |
| 2718 | 10.60 | ремонт водонагреватель орг |  | 1h | 2026-03-23 09:00 A | 2026-03-23 10:00 A |  | 100% |  |  | start no earlier than 2026-03-23 09:00 | Шуранов Ю | 1h | 1h |
| 2719 | 10.61 | ремонт парогенератор орг |  | 1h | 2026-03-23 09:00 A | 2026-03-23 10:00 A |  | 100% |  |  | start no earlier than 2026-03-23 09:00 | Шуранов Ю | 1h | 1h |
| 2720 | 10.62 | **стеллаж для организации хранения металла** |  | 11.5d | 2026-03-23 09:00 A | 2026-04-07 13:00 A |  | 100% |  |  |  |  | 84h | 84h |
| 2721 | 10.62.1 | составить эскиз / расчет заявка металл |  | 4h | 2026-03-23 09:00 A | 2026-03-23 13:00 A |  | 100% |  |  | start no earlier than 2026-03-23 09:00 | Зорькин В | 4h | 4h |
| 2722 | 10.62.2 | доставка |  | 10d | 2026-03-23 14:00 A | 2026-04-06 13:00 A | 2721 | 100% |  |  | start no earlier than 2026-03-20 08:00 | Карабанов | 80h | 80h |
| 2723 | 10.62.3 | сборка |  | 2d | 2026-04-03 14:00 A | 2026-04-07 13:00 A | 2722 | 100% |  |  | start no earlier than 2026-03-20 08:00 |  |  |  |
| 2724 | 10.63 | установить крыльчатку мотор-редуктор смесителя / перенос в контейнер |  | 30min | 2026-08-31 09:00 A | 2026-08-31 09:30 A |  | 100% |  |  | start no earlier than 2026-09-02 09:00 | Тимофеев В | 0.5h | 0.5h |
| 2725 | 10.64 | **изготовить ножевой узел для 2ц** |  | 10.02d | 2026-03-17 09:00 A | 2026-03-31 09:10 A |  | 100% |  |  |  |  | 80.33h | 80.33h |
| 2726 | 10.64.1 | получить счет |  | 10min | 2026-03-17 09:00 A | 2026-03-17 09:10 A |  | 100% |  |  | start no earlier than 2026-03-17 08:00 | Домоводов К | 0.17h | 0.17h |
| 2727 | 10.64.2 | изготовление |  | 10d | 2026-03-17 09:10 A | 2026-03-31 09:10 A | 2726 | 100% |  |  | start no earlier than 2026-03-17 08:00 | Фрезер ЧПУ | 80h | 80h |
| 2728 | 10.64.3 | контроль |  | 5min | 2026-03-28 09:10 A | 2026-03-30 09:05 A | 2727FS+1d | 100% |  |  | start no earlier than 2026-03-17 08:00 | Зорькин В | 0.08h | 0.08h |
| 2729 | 10.64.4 | орг доставка |  | 5min | 2026-03-28 09:15 A | 2026-03-30 09:05 A | 2728 | 100% |  |  | start no earlier than 2026-03-17 08:00 | Зорькин В | 0.08h | 0.08h |
| 2730 | 10.65 | сгоревшие двигатели унести в контенер в коробку |  | 1h | 2026-03-15 09:00 A | 2026-03-16 10:00 A |  | 100% |  |  | start no earlier than 2026-03-15 09:00 | Бобренок В | 1h | 1h |
| 2731 | 10.66 | ремонт головы насоса нгш57 гидродлизат 2шт |  | 2h | 2026-03-16 09:00 A | 2026-03-16 11:00 A |  | 100% |  |  | start no earlier than 2026-03-16 09:00 | Труфанов А | 2h | 2h |
| 2732 | 10.67 | изготовить ножевой узел для 2ц | milestone | 0d | 2026-03-16 09:00 A | 2026-03-16 09:00 A |  | 100% |  |  | start no earlier than 2026-03-16 09:00 | Домоводов К |  |  |
| 2733 | 10.68 | по всем цехам обход, проверка обратный клпан бойлеры / настройка температуры . Составить список под замену |  | 2h | 2026-09-01 09:00 | 2026-09-01 11:00 |  |  |  | 149.34d | start no earlier than 2026-09-01 09:00 | Дедов В | 2h |  |

| ID | WBS | Task | Type | Duration | Start | Finish | Predecessors | Complete | Remaining | Total slack | Free slack | Constraint | Resources | Work | Actual work |
| --- | --- | --- | --- | --- | --- | --- | --- | --- | --- | --- | --- | --- | --- | --- | --- |
| 2734 | 10.69 | **ремонт датчик расхода пара с линия 3** |  | 33.04d | 2026-09-01 09:00 A | 2026-10-06 09:20 |  |  | 33.04d | 116.55d |  |  |  | 0.92h |  |
| 2735 | 10.69.1 | заявка взип |  | 15min | 2026-09-01 09:00 | 2026-09-01 09:15 |  |  |  | 124.48d | 0d | start no earlier than 2026-09-01 09:00 | Шуранов Ю | 0.25h |  |
| 2736 | 10.69.2 | орг отправить в ремонт |  | 20min | 2026-09-01 09:15 | 2026-09-01 09:35 | 2735 |  |  | 124.48d | 7.93d | start no earlier than 2026-03-12 08:00 | Шуранов Ю | 0.33h |  |
| 2737 | 10.69.3 | контроль | milestone | 0d | 2026-09-22 09:35 A | 2026-09-22 09:35 A | 2736FS+20d | 100% |  |  |  | start no earlier than 2026-04-17 09:00 | Зорькин В |  |  |
| 2738 | 10.69.4 | контроль | milestone | 0d | 2026-09-30 09:00 | 2026-09-30 09:00 | 2736FS+20d |  |  | 116.55d | 0d | start no earlier than 2026-09-30 09:00 | Зорькин В |  |  |
| 2739 | 10.69.5 | орг забрать сремонта |  | 20min | 2026-10-06 09:00 | 2026-10-06 09:20 | 2737FS+5d, 2738FS+5d |  |  | 116.55d |  | start no earlier than 2026-03-12 08:00 | Шуранов Ю | 0.33h |  |
| 2740 | 10.70 | реставрация вал с охладителя. Полполнить расход ЗИП |  | 1h | 2026-09-01 09:00 | 2026-09-01 10:00 |  |  |  | 149.47d |  | start no earlier than 2026-09-01 09:00 | Шуранов Ю | 1h |  |
| 2741 | 10.71 | ремонт датчик наличия сырья / собрать из 2х один |  | 3h | 2026-09-01 09:00 | 2026-09-01 12:00 |  |  |  | 149.22d |  | start no earlier than 2026-09-01 09:00 | Дедов В | 3h |  |
| 2742 | 10.72 | **ремонт бойлер с 5ц гардероб** |  | 7.04d | 2026-03-13 09:00 A | 2026-03-24 09:20 |  | 57% | 3.02d | 264.55d |  |  |  | 0.58h | 0.33h |
| 2743 | 10.72.1 | орг отправить в ремонт |  | 15min | 2026-03-13 09:00 A | 2026-03-13 09:15 A |  | 100% |  |  |  | start no earlier than 2026-03-13 09:00 | Шуранов Ю | 0.25h | 0.25h |
| 2744 | 10.72.2 | контроль доставка / оплата |  | 5min | 2026-03-23 09:00 A | 2026-03-23 09:05 A | 2743FS+5d | 100% |  |  |  | start no earlier than 2026-03-23 09:00 | Шуранов Ю | 0.08h | 0.08h |
| 2745 | 10.72.3 | орг доставка |  | 15min | 2026-03-24 09:05 | 2026-03-24 09:20 | 2744FS+1d |  |  | 264.55d |  | start no earlier than 2026-03-12 08:00 | Шуранов Ю | 0.25h |  |
| 2746 | 10.73 | диагностика двигателей и редукторов в слесарке. Подробности Шуранов по тлф |  | 2h | 2026-09-01 09:00 A | 2026-09-01 11:00 A |  | 100% |  |  |  | start no earlier than 2026-09-02 09:00 | Бундин В | 2h | 2h |
| 2747 | 10.74 | которые в коробке с них снять крыльчатки |  | 2h | 2026-09-01 09:00 A | 2026-09-01 11:00 A | 2746 | 100% |  |  |  | start no earlier than 2026-03-06 08:00 | Бундин В | 2h | 2h |
| 2748 | 10.75 | ножевой узел 2ц заменаить подшипники. У мастера |  | 1h | 2026-03-04 08:00 A | 2026-03-04 10:00 A |  | 100% |  |  |  | start no earlier than 2026-03-04 08:00 | Дедов В | 1h | 1h |
| 2749 | 10.76 | **ремонт электродов ПГ в ЗИП** |  | 2.75d | 2026-03-08 09:00 A | 2026-03-11 16:00 A |  | 100% |  |  |  |  |  | 12h | 12h |
| 2750 | 10.76.1 | 2шт - шт |  | 6h | 2026-03-08 09:00 A | 2026-03-09 16:00 A |  | 100% |  |  |  | start no earlier than 2026-03-08 09:00 | Макаревич А | 6h | 6h |
| 2751 | 10.76.2 | 1шт = 2ц |  | 6h | 2026-03-11 09:00 A | 2026-03-11 16:00 A |  | 100% |  |  |  | start no earlier than 2026-03-11 09:00 | Макаревич А | 6h | 6h |
| 2752 | 10.77 | промер изношенных шнеков, подготовить таблицу и инструкцию для делегировать |  | 1h | 2026-03-03 09:00 A | 2026-03-03 10:00 A |  | 100% |  |  |  | start no earlier than 2026-03-03 09:00 | Зорькин В | 1h | 1h |
| 2753 | 10.78 | заказ нутромер утерянные детали |  | 30min | 2026-03-06 09:00 A | 2026-03-06 09:30 A |  | 100% |  |  |  | start no earlier than 2026-03-06 09:00 | Зорькин В | 0.5h | 0.5h |
| 2754 | 10.79 | **стопорнное кольцо для валов шнеков** |  | 0.09d | 2026-03-02 09:00 A | 2026-03-02 09:45 A |  | 100% |  |  |  |  |  | 0.75h | 0.75h |
| 2755 | 10.79.1 | заявка снабжение |  | 15min | 2026-03-02 09:00 A | 2026-03-02 09:15 A |  | 100% |  |  |  | start no earlier than 2026-03-02 09:00 | Зорькин В | 0.25h | 0.25h |
| 2756 | 10.79.2 | заявка токарь |  | 15min | 2026-03-02 09:15 A | 2026-03-02 09:30 A | 2755 | 100% |  |  |  | start no earlier than 2026-02-27 08:00 | Зорькин В | 0.25h | 0.25h |
| 2757 | 10.79.3 | заявка кита |  | 15min | 2026-03-02 09:30 A | 2026-03-02 09:45 A | 2756 | 100% |  |  |  | start no earlier than 2026-02-27 08:00 | Зорькин В | 0.25h | 0.25h |

| ID | WBS | Task | Duration | Start | Finish | Predecessors | Complete | Remaining | Total slack | Free slack | Constraint | Resources | Work | Actual work |
| --- | --- | --- | --- | --- | --- | --- | --- | --- | --- | --- | --- | --- | --- | --- |
| 2758 | 10.80 | **быстрая замена шнеков - кондуктор для хранения и перемещения подготвленного ствола** | 3.25d | 2026-11-30 09:00 | 2026-12-03 11:00 |  |  |  | 69.34d |  |  |  | 20h |  |
| 2759 | 10.80.1 | проект кондуктора и траверсы перемещения ствола штабелером | 2h | 2026-11-30 09:00 | 2026-11-30 11:00 |  |  |  | 69.34d | 0d | start no earlier than 2026-11-30 09:00 | Тимофеев В; Бундин В | 4h |  |
| 2760 | 10.80.2 | сборка | 2d | 2026-12-01 11:00 | 2026-12-03 11:00 | 2759FS+1d |  |  | 69.34d |  | start no earlier than 2026-04-16 09:00 | Бобренок В | 16h |  |
| 2761 | 10.81 | **заявка шкив на вал прекондиционер + разрезная вставка + спец шпильки** | 0.12d | 2025-08-04 09:00 | 2025-08-04 10:00 |  |  |  | 430.47d |  |  |  | 1h |  |
| 2762 | 10.81.1 | подбор шкив / заявка | 1h | 2025-08-04 09:00 | 2025-08-04 10:00 |  |  |  | 430.47d |  | start no earlier than 2025-08-04 09:00 | Зорькин В | 1h |  |
| 2763 | 10.82 | **ремонт вал прекондиционер** | 12.02d | 2025-07-31 09:00 A | 2025-08-18 09:10 |  | 86% | 1.72d | 420.57d |  |  |  | 1.17h | 1h |
| 2764 | 10.82.1 | подготовить к отправке очистить | 1h | 2025-07-31 09:00 A | 2025-07-31 10:00 A |  | 100% |  |  |  | start no earlier than 2025-07-31 09:00 | Пинчук А | 1h | 1h |
| 2765 | 10.82.2 | орг курьера / отправить | 5min | 2025-08-04 09:00 | 2025-08-04 09:05 | 2764 |  |  | 420.57d | 0d | start no earlier than 2025-08-04 09:00 | Зорькин В | 0.08h |  |
| 2766 | 10.82.3 | контроль / забрать | 5min | 2025-08-18 09:05 | 2025-08-18 09:10 | 2765FS+10d |  |  | 420.57d |  | start no earlier than 2025-07-31 09:00 | Зорькин В | 0.08h |  |
| 2767 | 10.83 | **ремонт вал в барабана жир 2л** | 152.01d | 2025-08-04 09:00 A | 2026-03-04 09:05 |  | 50% | 76.01d | 278.58d |  |  |  | 0.17h | 0.08h |
| 2768 | 10.83.1 | отправить на ремонт | 5min | 2025-08-04 09:00 | 2025-08-04 09:05 |  |  |  | 430.58d |  | start no earlier than 2025-08-04 09:00 | Зорькин В | 0.08h |  |
| 2769 | 10.83.2 | контроль забрать | 5min | 2026-03-04 09:00 A | 2026-03-04 09:05 A | 2768FS+10d | 100% |  |  |  | start no earlier than 2026-03-04 09:00 | Зорькин В | 0.08h | 0.08h |
| 2770 | 10.84 | **заявка эл мотор шибера в ЗИП** | 0.01d | 2025-02-19 09:00 | 2025-02-19 09:05 |  |  |  | 548.58d |  |  |  | 0.08h |  |
| 2771 | 10.84.1 | контроль | 5min | 2025-02-19 09:00 | 2025-02-19 09:05 |  |  |  | 548.58d |  | start no earlier than 2025-02-19 09:00 | Шуранов Ю | 0.08h |  |
| 2772 | 10.85 | составить таблицу ЗИП наличия редукторов / где используется | 4h | 2025-02-21 09:00 | 2025-02-21 13:00 |  |  |  | 546.09d |  | start no earlier than 2025-02-21 09:00 | Тимофеев В; Шуранов Ю | 8h |  |
| 2773 | 10.86 | составить таблицу соответсвия номеров подшипников - где используется | 4h | 2025-02-21 09:00 | 2025-02-21 13:00 |  |  |  | 546.09d |  | start no earlier than 2025-02-21 09:00 | Тимофеев В; Шуранов Ю | 8h |  |
| 2774 | 10.87 | ремонт болгарки замена кнопки | 1h | 2024-10-21 09:00 A | 2024-10-21 10:00 A |  | 100% |  |  |  | start no earlier than 2024-10-21 09:00 | Зорькин В | 1h | 1h |
| 2775 | 10.88 | сборка редуктор LT70 замена пружинные шайбы | 1d? | 2024-09-29 09:00 A | 2024-09-30 18:00 A |  | 100% |  |  |  | start no earlier than 2024-09-29 09:00 | Макаревич А | 8h | 8h |
| 2776 | 10.89 | **прорверить наличие остатков** | 0.01d | 2024-09-25 08:00 A | 2024-09-25 09:05 A |  | 100% |  |  |  |  |  | 2h | 2h |
| 2777 | 10.89.1 | Манжет (армированная 2,2-75*100*10 ГОСТ 8752-79) | 5min | 2024-09-25 08:00 A | 2024-09-25 09:05 A |  | 100% |  |  |  | start no earlier than 2024-09-25 08:00 | Дедов В | 0.08h | 0.08h |
| 2778 | 10.89.2 | Манжет (армированная 1,2-80*105*10) | 5min | 2024-09-25 08:00 A | 2024-09-25 09:05 A |  | 100% |  |  |  | start no earlier than 2024-09-25 08:00 | Дедов В | 0.08h | 0.08h |
| 2779 | 10.89.3 | Манжет (армированная 2,2-80*105*10 ГОСТ 8752-79) | 5min | 2024-09-25 08:00 A | 2024-09-25 09:05 A |  | 100% |  |  |  | start no earlier than 2024-09-25 08:00 | Дедов В | 0.08h | 0.08h |
| 2780 | 10.89.4 | Манжет (армированная 2,2-55*80*10 ГОСТ 8752-79) | 5min | 2024-09-25 08:00 A | 2024-09-25 09:05 A |  | 100% |  |  |  | start no earlier than 2024-09-25 08:00 | Дедов В | 0.08h | 0.08h |
| 2781 | 10.89.5 | Масло (Для швейных машин) | 0.01d | 2024-09-25 08:00 A | 2024-09-25 09:05 A |  | 100% |  |  |  | start no earlier than 2024-09-25 08:00 | Дедов В | 0.08h | 0.08h |
| 2782 | 10.89.6 | Наконечник (ТМЛ 16-10-6 медный луженый) | 0.01d | 2024-09-25 08:00 A | 2024-09-25 09:05 A |  | 100% |  |  |  | start no earlier than 2024-09-25 08:00 | Дедов В | 0.08h | 0.08h |
| 2783 | 10.89.7 | Наконечник (ТМЛ 10-8-5 медный луженый) | 0.01d | 2024-09-25 08:00 A | 2024-09-25 09:05 A |  | 100% |  |  |  | start no earlier than 2024-09-25 08:00 | Дедов В | 0.08h | 0.08h |
| 2784 | 10.89.8 | Подшипник (56006-2RS (180106)SKF (30*5*10)) | 0.01d | 2024-09-25 08:00 A | 2024-09-25 09:05 A |  | 100% |  |  |  | start no earlier than 2024-09-25 08:00 | Дедов В | 0.08h | 0.08h |
| 2785 | 10.89.9 | Подшипник (51410/ART) | 0.01d | 2024-09-25 08:00 A | 2024-09-25 09:05 A |  | 100% |  |  |  | start no earlier than 2024-09-25 08:00 | Дедов В | 0.08h | 0.08h |
| 2786 | 10.89.10 | Подшипник (UCF 208 (40)) | 0.01d | 2024-09-25 08:00 A | 2024-09-25 09:05 A |  | 100% |  |  |  | start no earlier than 2024-09-25 08:00 | Дедов В | 0.08h | 0.08h |
| 2787 | 10.89.11 | Подшипник (6203.LLU/2ASU1/NTN) | 0.01d | 2024-09-25 08:00 A | 2024-09-25 09:05 A |  | 100% |  |  |  | start no earlier than 2024-09-25 08:00 | Дедов В | 0.08h | 0.08h |
| 2788 | 10.89.12 | Подшипник (22212(53512) SKF (60*110*28)) | 0.01d | 2024-09-25 08:00 A | 2024-09-25 09:05 A |  | 100% |  |  |  | start no earlier than 2024-09-25 08:00 | Дедов В | 0.08h | 0.08h |
| 2789 | 10.89.13 | Подшипник (UC 204 (480204) (20х47х17/31)) | 0.01d | 2024-09-25 08:00 A | 2024-09-25 09:05 A |  | 100% |  |  |  | start no earlier than 2024-09-25 08:00 | Дедов В | 0.08h | 0.08h |
| 2790 | 10.89.14 | Подшипник (6906-2RS (30*47*9)) | 0.01d | 2024-09-25 08:00 A | 2024-09-25 09:05 A |  | 100% |  |  |  | start no earlier than 2024-09-25 08:00 | Дедов В | 0.08h | 0.08h |
| 2791 | 10.89.15 | Подшипник (6003-2RS (180103) (17*35*10)) | 0.01d | 2024-09-25 08:00 A | 2024-09-25 09:05 A |  | 100% |  |  |  | start no earlier than 2024-09-25 08:00 | Дедов В | 0.08h | 0.08h |
| 2792 | 10.89.16 | Подшипник (6203-2RS (180203) (17*40*12)) | 0.01d | 2024-09-25 08:00 A | 2024-09-25 09:05 A |  | 100% |  |  |  | start no earlier than 2024-09-25 08:00 | Дедов В | 0.08h | 0.08h |
| 2793 | 10.89.17 | Подшипник (6002 2RS, SKF (180102, 15*32*9)) | 0.01d | 2024-09-25 08:00 A | 2024-09-25 09:05 A |  | 100% |  |  |  | start no earlier than 2024-09-25 08:00 | Дедов В | 0.08h | 0.08h |
| 2794 | 10.89.18 | Провод ПЩ-4 | 0.01d | 2024-09-25 08:00 A | 2024-09-25 09:05 A |  | 100% |  |  |  | start no earlier than 2024-09-25 08:00 | Дедов В | 0.08h | 0.08h |
| 2795 | 10.89.19 | Ремень клиновый А-1400 | 0.01d | 2024-09-25 08:00 A | 2024-09-25 09:05 A |  | 100% |  |  |  | start no earlier than 2024-09-25 08:00 | Дедов В | 0.08h | 0.08h |
| 2796 | 10.89.20 | Ремень клиновый В (Б)-1320 | 0.01d | 2024-09-25 08:00 A | 2024-09-25 09:05 A |  | 100% |  |  |  | start no earlier than 2024-09-25 08:00 | Дедов В | 0.08h | 0.08h |
| 2797 | 10.89.21 | Реле (тепловое РТИ-3353 23-32А) | 0.01d | 2024-09-25 08:00 A | 2024-09-25 09:05 A |  | 100% |  |  |  | start no earlier than 2024-09-25 08:00 | Дедов В | 0.08h | 0.08h |
| 2798 | 10.89.22 | Шланг (для дозирующих насосов черного цвета 6,4х9,6 мм) | 0.01d | 2024-09-25 08:00 A | 2024-09-25 09:05 A |  | 100% |  |  |  | start no earlier than 2024-09-25 08:00 | Дедов В | 0.08h | 0.08h |
| 2799 | 10.89.23 | Труба гофрированная (ПВХ 25мм с протяжкой легкая серая) | 0.01d | 2024-09-25 08:00 A | 2024-09-25 09:05 A |  | 100% |  |  |  | start no earlier than 2024-09-25 08:00 | Дедов В | 0.08h | 0.08h |
| 2800 | 10.89.24 | Шпонка призматическая (DIN 6885 A 18х11х 90мм) | 0.01d | 2024-09-25 08:00 A | 2024-09-25 09:05 A |  | 100% |  |  |  | start no earlier than 2024-09-25 08:00 | Дедов В | 0.08h | 0.08h |

| ID | WBS | Task | Duration | Start | Finish | Predecessors | Complete | Remaining | Total slack | Free slack | Constraint | Resources | Work | Actual work |
| --- | --- | --- | --- | --- | --- | --- | --- | --- | --- | --- | --- | --- | --- | --- |
| 2801 | 10.90 | **прорверить остатки подшипников** | 0.01d | 2024-09-10 08:00 A | 2024-09-10 09:05 A |  | 100% |  |  |  |  |  | 1.17h | 1.17h |
| 2802 | 10.90.1 | 180101АС17/6 ГПЗ | 5min | 2024-09-10 08:00 A | 2024-09-10 09:05 A |  | 100% |  |  |  | start no earlier than 2024-09-10 08:00 | Дедов В | 0.08h | 0.08h |
| 2803 | 10.90.2 | 180202 (6202 2RS) (15*35*11) SKF | 0.01d | 2024-09-10 08:00 A | 2024-09-10 09:05 A |  | 100% |  |  |  | start no earlier than 2024-09-10 08:00 | Дедов В | 0.08h | 0.08h |
| 2804 | 10.90.3 | 180206 (6206 2RS) (30*62*16) HIKI | 0.01d | 2024-09-10 08:00 A | 2024-09-10 09:05 A |  | 100% |  |  |  | start no earlier than 2024-09-10 08:00 | Дедов В | 0.08h | 0.08h |
| 2805 | 10.90.4 | 22212.EAW33C3 / SNR | 0.01d | 2024-09-10 08:00 A | 2024-09-10 09:05 A |  | 100% |  |  |  | start no earlier than 2024-09-10 08:00 | Дедов В | 0.08h | 0.08h |
| 2806 | 10.90.5 | 51407/NEUTR | 0.01d | 2024-09-10 08:00 A | 2024-09-10 09:05 A |  | 100% |  |  |  | start no earlier than 2024-09-10 08:00 | Дедов В | 0.08h | 0.08h |
| 2807 | 10.90.6 | 6001 ZZ.CM | 0.01d | 2024-09-10 08:00 A | 2024-09-10 09:05 A |  | 100% |  |  |  | start no earlier than 2024-09-10 08:00 | Дедов В | 0.08h | 0.08h |
| 2808 | 10.90.7 | 6201.VVC3/ITJ | 0.01d | 2024-09-10 08:00 A | 2024-09-10 09:05 A |  | 100% |  |  |  | start no earlier than 2024-09-10 08:00 | Дедов В | 0.08h | 0.08h |
| 2809 | 10.90.8 | 6205LLU (NTN) | 0.01d | 2024-09-10 08:00 A | 2024-09-10 09:05 A |  | 100% |  |  |  | start no earlier than 2024-09-10 08:00 | Дедов В | 0.08h | 0.08h |
| 2810 | 10.90.9 | 6206. VVC3/ITJ | 0.01d | 2024-09-10 08:00 A | 2024-09-10 09:05 A |  | 100% |  |  |  | start no earlier than 2024-09-10 08:00 | Дедов В | 0.08h | 0.08h |
| 2811 | 10.90.10 | 686-2RS/ART | 0.01d | 2024-09-10 08:00 A | 2024-09-10 09:05 A |  | 100% |  |  |  | start no earlier than 2024-09-10 08:00 | Дедов В | 0.08h | 0.08h |
| 2812 | 10.90.11 | 7512 (32212)(60*110*24) | 0.01d | 2024-09-10 08:00 A | 2024-09-10 09:05 A |  | 100% |  |  |  | start no earlier than 2024-09-10 08:00 | Дедов В | 0.08h | 0.08h |
| 2813 | 10.90.12 | HK1210/NEUTR | 0.01d | 2024-09-10 08:00 A | 2024-09-10 09:05 A |  | 100% |  |  |  | start no earlier than 2024-09-10 08:00 | Дедов В | 0.08h | 0.08h |
| 2814 | 10.90.13 | UC 205 Neutr | 0.01d | 2024-09-10 08:00 A | 2024-09-10 09:05 A |  | 100% |  |  |  | start no earlier than 2024-09-10 08:00 | Дедов В | 0.08h | 0.08h |
| 2815 | 10.90.14 | UCFC 210 ASAHI | 0.01d | 2024-09-10 08:00 A | 2024-09-10 09:05 A |  | 100% |  |  |  | start no earlier than 2024-09-10 08:00 | Дедов В | 0.08h | 0.08h |
| 2816 | 10.91 | **создать реестр документации на оборудование** | 2d? | 2024-09-10 09:00 | 2024-09-11 18:00 |  |  |  | 662.59d |  |  |  | 8h |  |
| 2817 | 10.91.1 | опись документации в наличии, сортировка | 1d? | 2024-09-10 09:00 | 2024-09-10 18:00 |  |  |  | 662.59d | 0d | start no earlier than 2024-09-10 09:00 | Зорькин В | 8h |  |
| 2818 | 10.91.2 | оформление реестра наличия документации | 1d? | 2024-09-11 09:00 | 2024-09-11 18:00 | 2817 |  |  | 662.59d |  | start no earlier than 2024-09-06 08:00 |  |  |  |
| 2819 | 10.92 | **ремонт двигатель с шлюз питатель** | 0.02d | 2024-08-09 09:00 | 2024-08-09 09:10 |  |  |  | 686.57d |  |  |  | 0.17h |  |
| 2820 | 10.92.1 | контроль / орг курьер - | 10min | 2024-08-09 09:00 | 2024-08-09 09:10 |  |  |  | 686.57d |  | start no earlier than 2024-08-09 09:00 | Шуранов Ю | 0.17h |  |
| 2821 | 10.93 | **организовать хранение зап. частей для производства в одном месте, создать склад и нести полную материальную ответственность** | 18d? | 2024-05-09 09:00 A | 2024-06-03 18:00 |  | 15% | 15.3d? | 734.59d |  |  |  | 272h | 24h |
| 2822 | 10.93.1 | монтаж забор / ворота | 3d | 2024-05-09 09:00 A | 2024-05-13 18:00 A |  | 100% |  |  |  | start no earlier than 2024-05-09 09:00 | Макаревич А | 24h | 24h |
| 2823 | 10.93.2 | монтаж ворота, забор | 1d? | 2024-05-14 09:00 | 2024-05-14 18:00 | 2822 |  |  | 734.59d | 0d | start no earlier than 2024-05-13 09:00 | Некрасов А; Черепанов И | 16h |  |
| 2824 | 10.93.3 | подготови доски для стеллажей на 3 складе | 1d? | 2024-05-20 09:00 | 2024-05-20 18:00 |  |  |  | 744.59d |  | start no earlier than 2024-05-18 09:00 | КИнжекул | 8h |  |
| 2825 | 10.93.4 | переместить стеллажи на 2 этаж ГП + сборка | 1d? | 2024-05-15 09:00 | 2024-05-15 18:00 | 2823 |  |  | 741.59d | 7d | start no earlier than 2024-05-08 08:00 | Некрасов А; Черепанов И | 16h |  |
| 2826 | 10.93.5 | составить список всех позиций за забором для учета | 2d | 2024-05-15 09:00 | 2024-05-16 18:00 | 2823 |  |  | 734.59d | 0d | start no earlier than 2024-05-14 09:00 | Шуранов Ю | 16h |  |
| 2827 | 10.93.6 | состаить список ЗИП склад 3 цех | 2d | 2024-05-17 09:00 | 2024-05-20 18:00 | 2826 |  |  | 734.59d | 0d | start no earlier than 2024-05-08 09:00 | Шуранов Ю | 16h |  |
| 2828 | 10.93.7 | состаить список ЗИП склад слесарное помещение | 2d | 2024-05-21 09:00 | 2024-05-22 18:00 | 2827 |  |  | 734.59d | 0d | start no earlier than 2024-05-14 09:00 | Шуранов Ю | 16h |  |
| 2829 | 10.93.8 | составить список ЗИП Контейнер | 2d | 2024-05-23 09:00 | 2024-05-24 18:00 | 2828 |  |  | 734.59d | 0d | start no earlier than 2024-05-14 09:00 | Шуранов Ю | 16h |  |
| 2830 | 10.93.9 | перемещение ЗИП с 3 цеха на 2 этаж ГП | 2d | 2024-05-27 09:00 | 2024-05-28 18:00 | 2825, 2829 |  |  | 734.59d | 0d | start no earlier than 2024-05-14 09:00 | Шуранов Ю; Некрасов А; Черепанов И | 48h |  |
| 2831 | 10.93.10 | перемещение ЗИП с контейнера на 2 этаж ГП | 2d | 2024-05-29 09:00 | 2024-05-30 18:00 | 2830 |  |  | 734.59d | 0d | start no earlier than 2024-05-14 09:00 | Шуранов Ю; Некрасов А; Черепанов И | 48h |  |
| 2832 | 10.93.11 | перемещение ЗИП с слесарного помещения на 2 этаж ГП | 2d | 2024-05-31 09:00 | 2024-06-03 18:00 | 2831 |  |  | 734.59d |  | start no earlier than 2024-05-14 09:00 | Шуранов Ю; Некрасов А; Черепанов И | 48h |  |

| ID | WBS | Task | Type | Duration | Start | Finish | Predecessors | Complete | Remaining | Actual start | Total slack | Free slack | Constraint | Resources | Work | Actual work |
| --- | --- | --- | --- | --- | --- | --- | --- | --- | --- | --- | --- | --- | --- | --- | --- | --- |
| 2833 | 10.94 | **клапан эл магнитный для парогенератора на подачу воды** |  | 0.06d | 2025-01-16 09:00 | 2025-01-16 09:30 |  |  |  |  | 572.53d |  |  |  | 0.5h |  |
| 2834 | 10.94.1 | контролль остатков, заявка на катушку |  | 30min | 2025-01-16 09:00 | 2025-01-16 09:30 |  |  |  |  | 572.53d |  | start no earlier than 2025-01-16 09:00 | Шуранов Ю | 0.5h |  |
| 2835 | 10.95 | **вал с конвейера №1 разместить на ремонт** |  | 15.06d | 2024-05-14 09:00 | 2024-06-04 09:30 |  |  |  |  | 734.53d |  |  |  | 120.5h |  |
| 2836 | 10.95.1 | орг курьера |  | 15min | 2024-05-14 09:00 | 2024-05-14 09:15 |  |  |  |  | 734.53d | 0d | start no earlier than 2024-05-14 09:00 | Шуранов Ю | 0.25h |  |
| 2837 | 10.95.2 | ремонт |  | 15d | 2024-05-14 09:15 | 2024-06-04 09:15 | 2836 |  |  |  | 734.53d | 0d | start no earlier than 2024-05-08 08:00 | Подрядчик | 120h |  |
| 2838 | 10.95.3 | контроль, орг курьера забрать |  | 15min | 2024-06-04 09:15 | 2024-06-04 09:30 | 2837 |  |  |  | 734.53d |  | start no earlier than 2024-05-14 09:00 | Шуранов Ю | 0.25h |  |
| 2839 | 10.96 | подшипник LMK20.UU/FBJ или NEUTR - 4шт ТЕКО после замены |  | 10min | 2024-05-14 09:00 | 2024-05-14 09:10 |  |  |  |  | 749.57d |  | start no earlier than 2024-05-14 09:00 | Шуранов Ю | 0.17h |  |
| 2840 | 10.97 | UC204 подшипники |  | 10min | 2024-05-14 09:00 | 2024-05-14 09:10 |  |  |  |  | 749.57d |  | start no earlier than 2024-05-14 09:00 | Шуранов Ю | 0.17h |  |
| 2841 | 10.98 | сетка на дробилку 37квт 5 цех 0,5мм и 0,7 мм - заявка ЕВРОМЕД |  | 1h | 2024-05-14 09:00 | 2024-05-14 10:00 |  |  |  |  | 749.47d |  | start no earlier than 2024-05-14 09:00 | Шуранов Ю | 1h |  |
| 2842 | 11 | **ЗИП заказ (заявки)** |  | 49.06d | 2026-09-04 09:00 A | 2026-10-30 09:30 |  | 25% | 36.8d |  | 97.53d |  |  |  | 1.67h | 0.42h |
| 2843 | 11.1 | шкив для привода печи LT85 |  | 30min | 2026-10-30 09:00 | 2026-10-30 09:30 |  |  |  |  | 97.53d |  | start no earlier than 2026-10-30 08:00 | Зорькин В | 0.5h |  |
| 2844 | 11.2 | ножевой узел LT85 |  | 20min | 2026-10-22 09:00 | 2026-10-22 09:20 |  |  |  |  | 103.55d |  | start no earlier than 2026-10-22 09:00 | Зорькин В | 0.33h |  |
| 2845 | 11.3 | втулка на шланг РВД для датчика давления |  | 15min | 2026-10-20 09:00 | 2026-10-20 09:15 |  |  |  |  | 105.56d |  | start no earlier than 2026-10-20 09:00 | Зорькин В | 0.25h |  |
| 2846 | 11.4 | контактор для тельфера 5ц 24 переменка |  | 15min | 2026-09-04 09:00 A | 2026-09-04 09:15 A |  | 100% |  |  |  |  | start no earlier than 2026-09-04 09:00 | Зорькин В | 0.25h | 0.25h |
| 2847 | 11.5 | Наконечники штырьевые для сборки схем (получить инфу у Тимофеева) |  | 10min | 2026-09-09 09:00 | 2026-09-09 09:10 |  |  |  |  | 142.57d |  | start no earlier than 2026-09-09 09:00 | Зорькин В | 0.17h |  |
| 2848 | 11.6 | Газ в слесарку, закончился |  | 10min | 2026-09-07 09:00 A | 2026-09-07 09:10 A |  | 100% |  |  |  |  | start no earlier than 2026-09-07 09:00 | Зорькин В | 0.17h | 0.17h |
| 2849 | 12 | **ТО** |  | 780.38d? | 2023-12-28 09:00 A | 2026-12-07 12:00 |  | 51% | 380.19d? |  | 67.22d |  |  |  | 27206.1h | 16592h |
| 2850 | 12.1 | Замена валов линия 1 гильзы вход и выход |  | 3h | 2026-10-14 09:00 A | 2026-10-14 12:00 A |  | 100% |  |  |  |  | start no earlier than 2026-10-14 09:00 | Макаревич А; Труфанов А | 6h | 6h |
| 2851 | 12.2 | Замена валов линия 2 гильзы вход и выход |  | 3h | 2026-10-14 09:00 A | 2026-10-14 12:00 A |  | 100% |  |  |  |  | start no earlier than 2026-10-14 09:00 | Макаревич А; Труфанов А | 6h | 6h |
| 2852 | 12.3 | **1 цех** |  | 134.25d? | 2024-04-04 09:00 | 2024-10-09 11:00 |  | 89% | 14.79d? | 2024-05-07 09:00 |  |  |  |  | 123.75h | 112.08h |
| 2853 | 12.3.1 | **Разобрать улитки с охладителя 2 линия, 4 улитки на печах и улитки циклонов - замена подшипников, каких нет сообщить** |  | 16.25d | 2026-09-07 09:00 A | 2026-09-23 11:00 |  | 95% | 0.79d |  | 128.34d |  |  |  | 22.5h | 21.5h |
| 2854 | 12.3.1.1 | очистка моторов шлюз питателей циклонов от пыли |  | 30min | 2026-09-11 09:00 A | 2026-09-11 09:30 A |  | 100% |  |  |  |  | start no earlier than 2026-09-11 08:00 | Бобренок В | 0.5h | 0.5h |
| 2855 | 12.3.1.2 | очистка центрального вала от налипей грязи через смотровое окно |  | 1h | 2026-09-11 09:00 A | 2026-09-11 10:00 A |  | 100% |  |  |  |  | start no earlier than 2026-09-11 08:00 | Бобренок В | 1h | 1h |
| 2856 | 12.3.1.3 | монтаж шильдиков на которые починил |  | 1h | 2026-09-15 09:00 | 2026-09-15 10:00 |  |  |  |  | 136.47d |  | start no earlier than 2026-09-15 09:00 | Бундин В | 1h |  |
| 2857 | 12.3.1.4 | вентилятор охладителя | manual | 4h | 2026-09-07 09:00 A | 2026-09-07 13:00 A |  | 100% |  |  |  |  |  | Бундин В | 4h | 4h |
| 2858 | 12.3.1.5 | линия 1 вентилятор печи 1 |  | 4h | 2026-09-08 09:00 A | 2026-09-08 13:00 A |  | 100% |  |  |  |  | start no earlier than 2026-09-08 09:00 | Бундин В | 4h | 4h |
| 2859 | 12.3.1.6 | линия 1 вентилятор печи 2 | manual | 4h | 2026-09-09 09:00 A | 2026-09-09 13:00 A |  | 100% |  |  |  |  |  | Бундин В | 4h | 4h |
| 2860 | 12.3.1.7 | линия 2 вентилятор циклона 1 | manual | 4h | 2026-09-09 14:00 A | 2026-09-09 18:00 A | 2859 | 100% |  |  |  |  |  | Бундин В | 4h | 4h |
| 2861 | 12.3.1.8 | линия 2 вентилятор циклона 2 | manual | 2h | 2026-09-23 09:00 A | 2026-09-23 11:00 A | 2860 | 100% |  |  |  |  |  | Бундин В; Некрасов А | 4h | 4h |
| 2862 | 12.3.2 | ТО ШУ печи №1 (замена кабеля, наконечников…) |  | 1h | 2026-08-27 09:00 A | 2026-08-27 10:00 A |  | 100% |  |  |  |  | start no earlier than 2026-08-27 09:00 | Тимофеев В | 1h | 1h |
| 2863 | 12.3.3 | очистка моторов шлюз питателей циклонов от пыли |  | 30min | 2026-10-29 09:00 A | 2026-10-29 09:30 A |  | 100% |  |  |  |  | start no earlier than 2026-10-29 08:00 | Макаревич А; Николаев | 1h | 1h |

| ID | WBS | Task | Duration | Start | Finish | Complete | Remaining | Total slack | Constraint | Resources | Work | Actual work |
| --- | --- | --- | --- | --- | --- | --- | --- | --- | --- | --- | --- | --- |
| 2864 | 12.3.4 | **приточная вентиляция** | 168.12d | 2026-03-04 09:00 A | 2026-10-14 10:00 | 75% | 42.03d | 110.47d |  |  | 4h | 3h |
| 2865 | 12.3.4.1 | замена оба фильтра | 1h | 2026-03-04 09:00 A | 2026-03-04 10:00 A | 100% |  |  | start no earlier than 2026-03-04 08:00 | Труфанов А | 1h | 1h |
| 2866 | 12.3.4.2 | замена фильтра | 1h | 2026-04-15 09:00 A | 2026-04-15 10:00 A | 100% |  |  | start no earlier than 2026-04-15 09:00 | Труфанов А | 1h | 1h |
| 2867 | 12.3.4.3 | Замена фильтра | 1h | 2026-07-29 09:00 A | 2026-07-29 10:00 A | 100% |  |  | start no earlier than 2026-07-29 08:00 | Бундин В | 1h | 1h |
| 2868 | 12.3.4.4 | Проверка фильтра, по необходимости замена | 1h | 2026-10-14 09:00 | 2026-10-14 10:00 |  |  | 110.47d | start no earlier than 2026-10-14 09:00 | Дедов В | 1h |  |
| 2869 | 12.3.5 | **техническая вода** | 169.02d | 2026-03-11 09:00 A | 2026-10-21 09:10 | 80% | 33.8d | 104.57d |  |  | 1.83h | 1.33h |
| 2870 | 12.3.5.1 | проверка гидроаккумулятора | 10min | 2026-03-11 09:00 A | 2026-03-11 09:10 A | 100% |  |  | start no earlier than 2026-03-11 09:00 | Некрасов А | 0.17h | 0.17h |
| 2871 | 12.3.5.2 | замена фильтров | 10min | 2026-03-11 09:00 A | 2026-03-11 09:10 A | 100% |  |  | start no earlier than 2026-03-11 09:00 | Некрасов А | 0.17h | 0.17h |
| 2872 | 12.3.5.3 | замена фильтров | 30min | 2026-05-27 09:00 A | 2026-05-27 09:30 A | 100% |  |  | start no earlier than 2026-03-11 09:00 | Бундин В | 0.5h | 0.5h |
| 2873 | 12.3.5.4 | замена фильтров | 30min | 2026-03-12 09:00 A | 2026-03-12 09:30 A | 100% |  |  | start no earlier than 2026-03-12 09:00 | Бобренок В | 0.5h | 0.5h |
| 2874 | 12.3.5.5 | проверка гидроаккумулятора | 10min | 2026-10-07 09:00 | 2026-10-07 09:10 |  |  | 115.57d | start no earlier than 2026-10-07 09:00 | Тимофеев В | 0.17h |  |
| 2875 | 12.3.5.6 | проверка гидроаккумулятора | 10min | 2026-10-21 09:00 | 2026-10-21 09:10 |  |  | 104.57d | start no earlier than 2026-10-21 09:00 | Тимофеев В; Николаев | 0.33h |  |
| 2876 | 12.3.6 | **линия 1** | 188.12d? | 2026-03-18 09:00 A | 2026-11-18 10:00 | 95% | 9.41d? | 80.47d |  |  | 42.5h | 40.75h |
| 2877 | 12.3.6.1 | **шнек подачи в питатель экструдера** | 7.12d | 2026-11-11 09:00 A | 2026-11-18 10:00 | 50% | 3.56d | 80.47d |  |  | 2h | 1h |
| 2878 | 12.3.6.1.1 | Замена подшипников (все целые) | 1h | 2026-11-11 09:00 A | 2026-11-11 10:00 A | 100% |  |  | start no earlier than 2026-11-11 09:00 | Тимофеев В | 1h | 1h |
| 2879 | 12.3.6.1.2 | Замена подшипников | 1h | 2026-11-18 09:00 | 2026-11-18 10:00 |  |  | 80.47d | start no earlier than 2026-11-18 09:00 | Бундин В | 1h |  |
| 2880 | 12.3.6.2 | **питатель экструдера** | 188.06d? | 2026-03-18 09:00 A | 2026-11-18 09:30 | 96% | 7.23d? | 80.53d |  |  | 14h | 13.5h |
| 2881 | 12.3.6.2.1 | замена подшипники | 1d? | 2026-04-08 09:00 A | 2026-04-08 18:00 A | 100% |  |  | start no earlier than 2026-04-08 09:00 | Тимофеев В | 8h | 8h |
| 2882 | 12.3.6.2.2 | контроль палстик втулки | 1h | 2026-05-13 09:00 A | 2026-05-13 10:00 A | 100% |  |  | start no earlier than 2026-05-13 09:00 | Бобренок В | 1h | 1h |
| 2883 | 12.3.6.2.3 | контроль шестерен привода, редуктора | 10min | 2026-03-18 09:00 A | 2026-03-18 09:10 A | 100% |  |  | start no earlier than 2026-03-18 09:00 | Труфанов А | 0.17h | 0.17h |
| 2884 | 12.3.6.2.4 | контроль состояние пластик втулки | 30min | 2026-06-02 09:00 A | 2026-06-02 09:30 A | 100% |  |  | start no earlier than 2026-06-02 09:00 | Некрасов А | 0.5h | 0.5h |
| 2885 | 12.3.6.2.5 | Ревизия питателя | 20min | 2026-07-29 09:00 A | 2026-07-29 09:20 A | 100% |  |  | start no earlier than 2026-07-29 08:00 | Бундин В | 0.33h | 0.33h |
| 2886 | 12.3.6.2.6 | Ревизия питателя, контроль состояния подшипников/втулки/шестерен | 30min | 2026-09-23 09:00 A | 2026-09-23 09:30 A | 100% |  |  | start no earlier than 2026-09-23 09:00 | Некрасов А | 0.5h | 0.5h |
| 2887 | 12.3.6.2.7 | Ревизия питателя, контроль состояния подшипников/втулки/шестерен/втулки | 30min | 2026-09-30 09:00 A | 2026-09-30 09:30 A | 100% |  |  | start no earlier than 2026-09-30 09:00 | Тимофеев В | 0.5h | 0.5h |
| 2888 | 12.3.6.2.8 | Ревизия питателя, контроль состояния подшипников/втулки/шестерен/втулки | 30min | 2026-10-21 09:00 A | 2026-10-21 09:30 A | 100% |  |  | start no earlier than 2026-10-21 09:00 | Тимофеев В; Николаев | 1h | 1h |
| 2889 | 12.3.6.2.9 | Ревизия питателя, контроль состояния подшипников/втулки/шестерен/втулки | 30min | 2026-10-29 09:00 A | 2026-10-29 09:30 A | 100% |  |  | start no earlier than 2026-10-29 08:00 | Макаревич А; Николаев | 1h | 1h |
| 2890 | 12.3.6.2.10 | Ревизия питателя, контроль состояния подшипников/втулки/шестерен/втулки | 30min | 2026-11-11 09:00 A | 2026-11-11 09:30 A | 100% |  |  | start no earlier than 2026-11-11 09:00 | Тимофеев В | 0.5h | 0.5h |
| 2891 | 12.3.6.2.11 | Ревизия питателя, контроль состояния подшипников/втулки/шестерен/втулки | 30min | 2026-11-18 09:00 | 2026-11-18 09:30 |  |  | 80.53d | start no earlier than 2026-11-18 09:00 | Бундин В | 0.5h |  |

| ID | WBS | Task | Duration | Start | Finish | Complete | Remaining | Total slack | Constraint | Resources | Work | Actual work |
| --- | --- | --- | --- | --- | --- | --- | --- | --- | --- | --- | --- | --- |
| 2892 | 12.3.6.3 | **прекондицинер экструдера** | 148.03d | 2026-05-13 09:00 A | 2026-11-18 09:15 | 88% | 18.5d | 80.56d |  |  | 2.5h | 2.25h |
| 2893 | 12.3.6.3.1 | контроль привода, подшипников | 15min | 2026-05-13 09:00 A | 2026-05-13 09:15 A | 100% |  |  | start no earlier than 2026-05-13 09:00 | Бобренок В | 0.25h | 0.25h |
| 2894 | 12.3.6.3.2 | контроль привода, подшипников | 15min | 2026-07-29 09:00 A | 2026-07-29 09:15 A | 100% |  |  | start no earlier than 2026-07-29 08:00 | Труфанов А | 0.25h | 0.25h |
| 2895 | 12.3.6.3.3 | контроль привода, подшипников | 15min | 2026-09-23 09:00 A | 2026-09-23 09:15 A | 100% |  |  | start no earlier than 2026-09-23 09:00 | Некрасов А | 0.25h | 0.25h |
| 2896 | 12.3.6.3.4 | контроль привода, подшипников/при необходимости замена | 15min | 2026-09-30 09:00 A | 2026-09-30 09:15 A | 100% |  |  | start no earlier than 2026-09-30 09:00 | Тимофеев В | 0.25h | 0.25h |
| 2897 | 12.3.6.3.5 | контроль привода, подшипников/при необходимости замена | 15min | 2026-10-21 09:00 A | 2026-10-21 09:15 A | 100% |  |  | start no earlier than 2026-10-21 09:00 | Николаев; Тимофеев В | 0.5h | 0.5h |
| 2898 | 12.3.6.3.6 | контроль привода, подшипников/при необходимости замена | 15min | 2026-10-29 09:00 A | 2026-10-29 09:15 A | 100% |  |  | start no earlier than 2026-10-29 08:00 | Макаревич А; Николаев | 0.5h | 0.5h |
| 2899 | 12.3.6.3.7 | контроль привода, подшипников/при необходимости замена | 15min | 2026-11-11 09:00 A | 2026-11-11 09:15 A | 100% |  |  | start no earlier than 2026-11-11 09:00 | Тимофеев В | 0.25h | 0.25h |
| 2900 | 12.3.6.3.8 | контроль привода, подшипников/при необходимости замена | 15min | 2026-11-18 09:00 | 2026-11-18 09:15 |  |  | 80.56d | start no earlier than 2026-11-18 09:00 | Бундин В | 0.25h |  |
| 2901 | 12.3.6.4 | **парогенератор** | 172.12d | 2026-04-08 09:00 A | 2026-11-17 10:00 A | 100% |  |  |  |  | 24h | 24h |
| 2902 | 12.3.6.4.1 | вскрытие электородов, чистка | 1h | 2026-05-13 09:00 A | 2026-05-13 10:00 A | 100% |  |  | start no earlier than 2026-05-13 09:00 | Бобренок В | 1h | 1h |
| 2903 | 12.3.6.4.2 | замена реле вкл насоса. (не вкл) | 2h | 2026-05-13 09:00 A | 2026-05-13 11:00 A | 100% |  |  | start no earlier than 2026-05-13 09:00 | Бобренок В | 2h | 2h |
| 2904 | 12.3.6.4.3 | замена гофротрубы / закрепить жестко | 2h | 2026-04-08 09:00 A | 2026-04-08 11:00 A | 100% |  |  | start no earlier than 2026-04-08 09:00 | Бобренок В | 2h | 2h |
| 2905 | 12.3.6.4.4 | чистка парогенератора, если нужно замена электродов | 2h | 2026-06-10 09:00 A | 2026-06-10 11:00 A | 100% |  |  | start no earlier than 2026-06-10 09:00 | Дедов В | 2h | 2h |
| 2906 | 12.3.6.4.5 | читска парогенератора, если нужно замена электродов | 2h | 2026-05-20 09:00 A | 2026-05-20 11:00 A | 100% |  |  | start no earlier than 2026-05-20 09:00 | Некрасов А | 2h | 2h |
| 2907 | 12.3.6.4.6 | читска парогенератора, если нужно замена электродов | 1h | 2026-06-02 09:00 A | 2026-06-02 10:00 A | 100% |  |  | start no earlier than 2026-06-02 09:00 | Тимофеев В | 1h | 1h |
| 2908 | 12.3.6.4.7 | вскрытие электородов, чистка | 1h | 2026-08-12 09:00 A | 2026-08-12 10:00 A | 100% |  |  | start no earlier than 2026-08-12 09:00 | Некрасов А | 1h | 1h |
| 2909 | 12.3.6.4.8 | вскрытие электородов, чистка (при остановке линии на мойку, если не остановилась, передать по смене Бундину) | 1h | 2026-09-22 09:00 A | 2026-09-22 10:00 A | 100% |  |  | start no earlier than 2026-09-22 09:00 | Макаревич А; Бундин В | 2h | 2h |
| 2910 | 12.3.6.4.9 | вскрытие электородов, чистка (при остановке линии на мойку, если не остановилась, передать по смене Тимофееву) | 1h | 2026-09-29 09:00 A | 2026-09-29 10:00 A | 100% |  |  | start no earlier than 2026-09-29 09:00 | Бундин В; Тимофеев В | 2h | 2h |
| 2911 | 12.3.6.4.10 | Чистка парогенератора после остановки | 1h | 2026-10-13 09:00 A | 2026-10-13 10:00 A | 100% |  |  | start no earlier than 2026-10-13 08:00 | Бобренок В | 1h | 1h |
| 2912 | 12.3.6.4.11 | Чистка парогенератора | 1h | 2026-10-21 09:00 A | 2026-10-21 10:00 A | 100% |  |  | start no earlier than 2026-10-21 09:00 | Тимофеев В; Николаев | 2h | 2h |
| 2913 | 12.3.6.4.12 | Чистка парогенератора | 1h | 2026-10-29 09:00 A | 2026-10-29 10:00 A | 100% |  |  | start no earlier than 2026-10-29 08:00 | Макаревич А; Николаев | 2h | 2h |
| 2914 | 12.3.6.4.13 | Чистка парогенератора (чистим, как остановятся) | 1h | 2026-11-17 09:00 A | 2026-11-17 10:00 A | 100% |  |  | start no earlier than 2026-11-17 08:00 | Николаев; Макаревич А | 2h | 2h |
| 2915 | 12.3.6.4.14 | Чистка парогенератора (начать как встанут) | 1h | 2026-11-10 09:00 A | 2026-11-10 10:00 A | 100% |  |  | start no earlier than 2026-11-10 08:00 | Дедов В; Тимофеев В | 2h | 2h |

| ID | WBS | Task | Duration | Start | Finish | Complete | Remaining | Total slack | Constraint | Resources | Work | Actual work |
| --- | --- | --- | --- | --- | --- | --- | --- | --- | --- | --- | --- | --- |
| 2916 | 12.3.7 | **редуктор экструдера и маслянная станция** | 470.04d | 2025-02-17 09:00 A | 2026-11-18 09:20 | 65% | 163.87d | 80.55d |  |  | 20.83h | 14.5h |
| 2917 | 12.3.7.1 | чистка фильтра | 30min | 2026-06-02 09:00 A | 2026-06-02 09:30 A | 100% |  |  | start no earlier than 2026-06-02 09:00 | Тимофеев В | 0.5h | 0.5h |
| 2918 | 12.3.7.2 | муфта редутор-мотор | 15min | 2026-03-11 09:00 A | 2026-03-11 09:15 A | 100% |  |  | start no earlier than 2026-03-11 09:00 | Тимофеев В | 0.25h | 0.25h |
| 2919 | 12.3.7.3 | чистка фильтра | 30min | 2026-07-16 09:00 A | 2026-07-16 09:30 A | 100% |  |  | start no earlier than 2026-07-16 09:00 | Бобренок В | 0.5h | 0.5h |
| 2920 | 12.3.7.4 | тэны и термпары шнеков- прортяжка | 30min | 2025-02-25 09:00 A | 2025-02-25 09:30 A | 100% |  |  | start no earlier than 2025-02-25 09:00 | Дедов В | 0.5h | 0.5h |
| 2921 | 12.3.7.5 | Чистка фильтра | 30min | 2026-07-29 08:00 A | 2026-07-29 09:30 A | 100% |  |  | start no earlier than 2026-07-29 08:00 | Тимофеев В | 0.5h | 0.5h |
| 2922 | 12.3.7.6 | тэны и термпоры шнеков- прортяжка | 30min | 2026-09-23 09:00 A | 2026-09-23 09:30 A | 100% |  |  | start no earlier than 2026-09-23 09:00 | Некрасов А | 0.5h | 0.5h |
| 2923 | 12.3.7.7 | Чистка фильтра | 30min | 2026-09-23 09:00 A | 2026-09-23 09:30 A | 100% |  |  | start no earlier than 2026-09-23 09:00 | Бундин В | 0.5h | 0.5h |
| 2924 | 12.3.7.8 | Чистка фильтра/тэны и термопары шнеков - протяжка | 30min | 2026-09-30 09:00 A | 2026-09-30 09:30 A | 100% |  |  | start no earlier than 2026-09-30 09:00 | Тимофеев В | 0.5h | 0.5h |
| 2925 | 12.3.7.9 | Чистка фильтра | 30min | 2026-10-14 09:00 A | 2026-10-14 09:30 A | 100% |  |  | start no earlier than 2026-10-14 09:00 | Макаревич А | 0.5h | 0.5h |
| 2926 | 12.3.7.10 | Чистка фильтра/тэны и термопары шнеков - протяжка | 30min | 2026-10-21 09:00 A | 2026-10-21 09:30 A | 100% |  |  | start no earlier than 2026-10-21 09:00 | Тимофеев В; Николаев | 1h | 1h |
| 2927 | 12.3.7.11 | Чистка фильтра | 30min | 2026-10-29 09:00 A | 2026-10-29 09:30 A | 100% |  |  | start no earlier than 2026-10-29 08:00 | Макаревич А; Николаев | 1h | 1h |
| 2928 | 12.3.7.12 | Чистка фильтра | 15min | 2026-11-11 09:00 A | 2026-11-11 09:15 A | 100% |  |  | start no earlier than 2026-11-11 09:00 | Тимофеев В | 0.25h | 0.25h |
| 2929 | 12.3.7.13 | Чистка фильтра | 15min | 2026-11-18 09:00 | 2026-11-18 09:15 |  |  | 80.56d | start no earlier than 2026-11-18 09:00 | Бундин В | 0.25h |  |
| 2930 | 12.3.7.14 | **шкаф управления экструдером** | 179.03d | 2026-03-31 09:00 A | 2026-11-18 09:15 | 82% | 32.55d | 80.56d |  |  | 3.25h | 2.75h |
| 2931 | 12.3.7.14.1 | протяжка контактов | 30min | 2026-03-31 09:00 A | 2026-03-31 09:30 A | 100% |  |  | start no earlier than 2026-03-11 09:00 | Некрасов А | 0.5h | 0.5h |
| 2932 | 12.3.7.14.2 | частотные привода экструдера, ножей, питателя - продувка | 30min | 2026-05-27 09:00 A | 2026-05-27 09:30 A | 100% |  |  | start no earlier than 2026-05-27 09:00 | Бундин В | 0.5h | 0.5h |
| 2933 | 12.3.7.14.3 | частотные привода экструдера, ножей, питателя - продувка | 15min | 2026-07-29 09:00 A | 2026-07-29 09:15 A | 100% |  |  | start no earlier than 2026-07-29 08:00 | Труфанов А | 0.25h | 0.25h |
| 2934 | 12.3.7.14.4 | частотные привода экструдера, ножей, питателя - продувка | 15min | 2026-09-23 09:00 A | 2026-09-23 09:15 A | 100% |  |  | start no earlier than 2026-09-23 09:00 | Некрасов А | 0.25h | 0.25h |
| 2935 | 12.3.7.14.5 | частотные привода экструдера, ножей, питателя - продувка | 15min | 2026-10-07 09:00 A | 2026-10-07 09:15 A | 100% |  |  | start no earlier than 2026-10-07 09:00 | Тимофеев В | 0.25h | 0.25h |
| 2936 | 12.3.7.14.6 | частотные привода экструдера, ножей, питателя - продувка | 15min | 2026-10-21 09:00 A | 2026-10-21 09:15 A | 100% |  |  | start no earlier than 2026-10-21 09:00 | Тимофеев В; Николаев | 0.5h | 0.5h |
| 2937 | 12.3.7.14.7 | частотные привода экструдера, ножей, питателя - продувка | 15min | 2026-10-29 09:00 A | 2026-10-29 09:15 A | 100% |  |  | start no earlier than 2026-10-29 08:00 | Макаревич А; Николаев | 0.5h | 0.5h |
| 2938 | 12.3.7.14.8 | частотные привода экструдера, ножей, питателя - продувка | 15min | 2026-11-11 09:00 | 2026-11-11 09:15 |  |  | 87.56d | start no earlier than 2026-11-11 09:00 | Тимофеев В | 0.25h |  |
| 2939 | 12.3.7.14.9 | частотные привода экструдера, ножей, питателя - продувка | 15min | 2026-11-18 09:00 | 2026-11-18 09:15 |  |  | 80.56d | start no earlier than 2026-11-18 09:00 | Бундин В | 0.25h |  |

| ID | WBS | Task | Duration | Start | Finish | Complete | Remaining | Total slack | Constraint | Resources | Work | Actual work |
| --- | --- | --- | --- | --- | --- | --- | --- | --- | --- | --- | --- | --- |
| 2940 | 12.3.7.15 | **блок тэнов сушки** | 143.03d | 2026-05-20 09:00 A | 2026-11-18 09:15 | 82% | 26.01d | 80.56d |  |  | 3.25h | 2.75h |
| 2941 | 12.3.7.15.1 | ревизия, замена отгоревших жил, проверка токов | 1h | 2026-05-20 09:00 A | 2026-05-20 10:00 A | 100% |  |  | start no earlier than 2026-05-20 09:00 | Некрасов А | 1h | 1h |
| 2942 | 12.3.7.15.2 | ревизия/ проверка токов | 15min | 2026-08-26 09:00 A | 2026-08-26 09:15 A | 100% |  |  | start no earlier than 2026-08-26 09:00 | Некрасов А | 0.25h | 0.25h |
| 2943 | 12.3.7.15.3 | ревизия/ проверка токов | 15min | 2026-09-23 09:00 A | 2026-09-23 09:15 A | 100% |  |  | start no earlier than 2026-09-23 09:00 | Труфанов А | 0.25h | 0.25h |
| 2944 | 12.3.7.15.4 | ревизия/ проверка токов | 15min | 2026-10-07 09:00 A | 2026-10-07 09:15 A | 100% |  |  | start no earlier than 2026-10-07 09:00 | Тимофеев В | 0.25h | 0.25h |
| 2945 | 12.3.7.15.5 | ревизия/ проверка токов | 15min | 2026-10-21 09:00 A | 2026-10-21 09:15 A | 100% |  |  | start no earlier than 2026-10-21 09:00 | Тимофеев В; Николаев | 0.5h | 0.5h |
| 2946 | 12.3.7.15.6 | ревизия/ проверка токов | 15min | 2026-10-29 09:00 A | 2026-10-29 09:15 A | 100% |  |  | start no earlier than 2026-10-29 08:00 | Макаревич А; Николаев | 0.5h | 0.5h |
| 2947 | 12.3.7.15.7 | ревизия/ проверка токов | 15min | 2026-11-11 09:00 | 2026-11-11 09:15 |  |  | 87.56d | start no earlier than 2026-11-11 09:00 | Тимофеев В | 0.25h |  |
| 2948 | 12.3.7.15.8 | ревизия/ проверка токов | 15min | 2026-11-18 09:00 | 2026-11-18 09:15 |  |  | 80.56d | start no earlier than 2026-11-18 09:00 | Бундин В | 0.25h |  |
| 2949 | 12.3.7.16 | **шкаф управления тэнами сушки** | 68.5d | 2026-06-10 09:00 A | 2026-09-11 13:00 | 11% | 61.29d | 140.09d |  |  | 4.75h | 0.5h |
| 2950 | 12.3.7.16.1 | протяжка контактов | 15min | 2026-06-10 09:00 | 2026-06-10 09:15 |  |  | 208.56d | start no earlier than 2026-06-10 09:00 | Дедов В | 0.25h |  |
| 2951 | 12.3.7.16.2 | замена неисправных жил | 4h | 2026-09-11 09:00 | 2026-09-11 13:00 |  |  | 140.09d | start no earlier than 2026-09-11 09:00 | Тимофеев В | 4h |  |
| 2952 | 12.3.7.16.3 | частотные привода экструдера, ножей, питателя - продувка | 30min | 2026-07-16 09:00 A | 2026-07-16 09:30 A | 100% |  |  | start no earlier than 2026-07-16 09:00 | Бобренок В | 0.5h | 0.5h |
| 2953 | 12.3.7.17 | конвейер №1 с печи в дрожировщик прорверка подшипники, реуктор | 30min | 2025-02-17 09:00 | 2025-02-17 09:30 |  |  | 550.53d | start no earlier than 2025-02-15 09:00 | Дедов В | 0.5h |  |
| 2954 | 12.3.7.18 | Осмотр, продувка, протяжка контактов | 20min | 2026-09-23 09:00 A | 2026-09-23 09:20 A | 100% |  |  | start no earlier than 2026-09-23 09:00 | Труфанов А | 0.33h | 0.33h |
| 2955 | 12.3.7.19 | Осмотр, продувка, протяжка контактов | 20min | 2026-10-21 09:00 A | 2026-10-21 09:20 A | 100% |  |  | start no earlier than 2026-10-21 09:00 | Тимофеев В; Николаев | 0.67h | 0.67h |
| 2956 | 12.3.7.20 | Осмотр, продувка, протяжка контактов | 20min | 2026-10-29 09:00 A | 2026-10-29 09:20 A | 100% |  |  | start no earlier than 2026-10-29 08:00 | Макаревич А; Николаев | 0.67h | 0.67h |
| 2957 | 12.3.7.21 | Осмотр, продувка, протяжка контактов | 20min | 2026-11-11 09:00 A | 2026-11-11 09:20 A | 100% |  |  | start no earlier than 2026-11-11 09:00 | Тимофеев В | 0.33h | 0.33h |
| 2958 | 12.3.7.22 | Осмотр, продувка, протяжка контактов | 20min | 2026-11-18 09:00 | 2026-11-18 09:20 |  |  | 80.55d | start no earlier than 2026-11-18 09:00 | Бундин В | 0.33h |  |
| 2959 | 12.3.8 | **барабан смесительный дрожировка - прорверка подшипнки , реуктор** | 198.01d | 2026-03-04 08:00 A | 2026-11-18 09:05 | 98% | 4.6d | 80.58d |  |  | 4.08h | 4h |
| 2960 | 12.3.8.1 | замена вал № 4 час | 2h | 2026-03-04 08:00 A | 2026-03-04 11:00 A | 100% |  |  | start no earlier than 2026-03-04 08:00 | Тимофеев В | 2h | 2h |
| 2961 | 12.3.8.2 | Дефектовка - проверить подачу, вибрации, посторонние шумы. | 15min | 2026-07-29 08:00 A | 2026-07-29 09:15 A | 100% |  |  | start no earlier than 2026-07-29 08:00 | Тимофеев В | 0.25h | 0.25h |
| 2962 | 12.3.8.3 | Дефектовка - проверить подачу, вибрации, посторонние шумы. | 15min | 2026-09-23 09:00 A | 2026-09-23 09:15 A | 100% |  |  | start no earlier than 2026-09-23 09:00 | Некрасов А | 0.25h | 0.25h |
| 2963 | 12.3.8.4 | Дефектовка - проверить подачу, вибрации, посторонние шумы/проверка фильтров/насосов/фитингов | 15min | 2026-09-30 09:00 A | 2026-09-30 09:15 A | 100% |  |  | start no earlier than 2026-09-30 09:00 | Тимофеев В | 0.25h | 0.25h |
| 2964 | 12.3.8.5 | Дефектовка - проверить подачу, вибрации, посторонние шумы/проверка фильтров/насосов/фитингов | 15min | 2026-10-21 09:00 A | 2026-10-21 09:15 A | 100% |  |  | start no earlier than 2026-10-21 09:00 | Тимофеев В; Николаев | 0.5h | 0.5h |
| 2965 | 12.3.8.6 | Дефектовка - проверить подачу, вибрации, посторонние шумы/проверка фильтров/насосов/фитингов | 15min | 2026-10-29 09:00 A | 2026-10-29 09:15 A | 100% |  |  | start no earlier than 2026-10-29 08:00 | Макаревич А; Николаев | 0.5h | 0.5h |
| 2966 | 12.3.8.7 | Дефектовка - проверить подачу, вибрации, посторонние шумы/проверка фильтров/насосов/фитингов | 15min | 2026-11-11 09:00 A | 2026-11-11 09:15 A | 100% |  |  | start no earlier than 2026-11-11 09:00 | Тимофеев В | 0.25h | 0.25h |
| 2967 | 12.3.8.8 | Дефектовка - проверить подачу, вибрации, посторонние шумы/проверка фильтров/насосов/фитингов | 5min | 2026-11-18 09:00 | 2026-11-18 09:05 |  |  | 80.58d | start no earlier than 2026-11-18 09:00 | Бундин В | 0.08h |  |

| ID | WBS | Task | Duration | Start | Finish | Complete | Remaining | Total slack | Constraint | Resources | Work | Actual work |
| --- | --- | --- | --- | --- | --- | --- | --- | --- | --- | --- | --- | --- |
| 2968 | 12.3.9 | **печь** | 674.12d | 2024-05-07 09:00 A | 2026-11-18 10:00 | 95% | 33.71d | 80.47d |  |  | 26h | 25h |
| 2969 | 12.3.9.1 | проверка состояния сетки, ремонт шплинтов | 2h | 2026-07-16 09:00 A | 2026-07-16 11:00 A | 100% |  |  | start no earlier than 2026-07-16 09:00 | Бобренок В; Некрасов А; Труфанов А | 6h | 6h |
| 2970 | 12.3.9.2 | укоротить звено привода | 1h | 2026-07-16 09:00 A | 2026-07-16 10:00 A | 100% |  |  | start no earlier than 2026-07-16 09:00 | Некрасов А | 1h | 1h |
| 2971 | 12.3.9.3 | вентиляторы обдува сушки | 2h | 2024-06-14 09:00 A | 2024-06-14 11:00 A | 100% |  |  | start no earlier than 2024-06-14 09:00 | ТО_2 | 2h | 2h |
| 2972 | 12.3.9.4 | пневотранспорт вентилятор | 2h | 2024-05-07 09:00 A | 2024-05-07 11:00 A | 100% |  |  | start no earlier than 2024-05-07 09:00 | ТО_1 | 2h | 2h |
| 2973 | 12.3.9.5 | пневотранспорт роторный питатель - проверка масла | 30min | 2025-02-17 09:00 A | 2025-02-17 09:30 A | 100% |  |  | start no earlier than 2025-02-16 09:00 | Черепанов И | 0.5h | 0.5h |
| 2974 | 12.3.9.6 | пневотранспорт роторный питатель - проверка масла | 30min | 2026-07-29 09:00 A | 2026-07-29 09:30 A | 100% |  |  | start no earlier than 2026-07-29 08:00 | Труфанов А | 0.5h | 0.5h |
| 2975 | 12.3.9.7 | привод сетки ПЕЧИ сушки - прорверка масла | 30min | 2025-02-17 09:00 A | 2025-02-17 09:30 A | 100% |  |  | start no earlier than 2025-02-16 09:00 | Черепанов И | 0.5h | 0.5h |
| 2976 | 12.3.9.8 | привод сетки ПЕЧИ сушки - прорверка масла | 30min | 2026-07-29 09:00 A | 2026-07-29 09:30 A | 100% |  |  | start no earlier than 2026-07-29 08:00 | Труфанов А | 0.5h | 0.5h |
| 2977 | 12.3.9.9 | дозатор сухой гидролизат - разборка, чистка, замена подшипников | 2h | 2026-08-18 09:00 A | 2026-08-18 11:00 A | 100% |  |  | start no earlier than 2026-08-18 09:00 | Бундин В | 2h | 2h |
| 2978 | 12.3.9.10 | Осмотр цепи и сетки | 1h | 2026-07-29 09:00 A | 2026-07-29 10:00 A | 100% |  |  | start no earlier than 2026-07-29 08:00 | Труфанов А | 1h | 1h |
| 2979 | 12.3.9.11 | Контроль состояния сетки/цепи | 30min | 2026-09-23 09:00 A | 2026-09-23 09:30 A | 100% |  |  | start no earlier than 2026-09-23 09:00 | Некрасов А | 0.5h | 0.5h |
| 2980 | 12.3.9.12 | Смазка цепи (при наличии на складе) | 1h | 2026-09-23 09:00 A | 2026-09-23 10:00 A | 100% |  |  | start no earlier than 2026-09-23 09:00 | Некрасов А | 1h | 1h |
| 2981 | 12.3.9.13 | Контроль состояния сетки/цепи | 1h | 2026-10-07 09:00 A | 2026-10-07 10:00 A | 100% |  |  | start no earlier than 2026-10-07 09:00 | Тимофеев В | 1h | 1h |
| 2982 | 12.3.9.14 | Проверка масла на приводе/осмотр | 30min | 2026-10-07 09:00 A | 2026-10-07 09:30 A | 100% |  |  | start no earlier than 2026-10-07 09:00 | Тимофеев В | 0.5h | 0.5h |
| 2983 | 12.3.9.15 | Контроль состояния сетки/цепи | 1h | 2026-10-14 09:00 A | 2026-10-14 10:00 A | 100% |  |  | start no earlier than 2026-10-14 09:00 | Макаревич А | 1h | 1h |
| 2984 | 12.3.9.16 | Контроль состояния сетки/цепи | 1h | 2026-10-21 09:00 A | 2026-10-21 10:00 A | 100% |  |  | start no earlier than 2026-10-21 09:00 | Тимофеев В; Николаев | 2h | 2h |
| 2985 | 12.3.9.17 | Контроль состояния сетки/цепи | 1h | 2026-10-29 09:00 A | 2026-10-29 10:00 A | 100% |  |  | start no earlier than 2026-10-29 08:00 | Макаревич А; Николаев | 2h | 2h |
| 2986 | 12.3.9.18 | Контроль состояния сетки/цепи | 1h | 2026-11-11 09:00 A | 2026-11-11 10:00 A | 100% |  |  | start no earlier than 2026-11-11 09:00 | Тимофеев В | 1h | 1h |
| 2987 | 12.3.9.19 | Контроль состояния сетки/цепи | 1h | 2026-11-18 09:00 | 2026-11-18 10:00 |  |  | 80.47d | start no earlier than 2026-11-18 09:00 | Бундин В | 1h |  |
| 2988 | 12.4 | **линия 2** | 0.25d? | 2023-12-29 09:00 A | 2023-12-29 11:00 | 58% | 0.11d? |  |  |  | 919.83h | 218.15h |
| 2989 | 12.4.1 | **шнек подачи в питатель экструдера** | 0.12d | 2026-11-18 09:00 A | 2026-11-18 10:00 A | 100% |  |  |  |  | 2h | 2h |
| 2990 | 12.4.1.1 | Замена подшипников | 1h | 2026-11-18 09:00 A | 2026-11-18 10:00 A | 100% |  |  | start no earlier than 2026-11-18 09:00 | Труфанов А; Некрасов А | 2h | 2h |
| 2991 | 12.4.2 | **питатель экструдера** | 188.06d | 2026-03-18 09:00 A | 2026-11-18 09:30 A | 100% |  |  |  |  | 7.5h | 7.5h |
| 2992 | 12.4.2.1 | контроль состояние пластик втулки | 30min | 2026-06-02 09:00 A | 2026-06-02 09:30 A | 100% |  |  | start no earlier than 2026-06-02 09:00 | Некрасов А | 0.5h | 0.5h |
| 2993 | 12.4.2.2 | замена подшипники | 1h | 2026-04-08 09:00 A | 2026-04-08 10:00 A | 100% |  |  | start no earlier than 2026-04-08 09:00 |  |  |  |
| 2994 | 12.4.2.3 | замена шестеренок -взять у Веры на складе | 2h | 2026-05-20 09:00 A | 2026-05-20 11:00 A | 100% |  |  | start no earlier than 2026-05-20 09:00 | Бобренок В | 2h | 2h |
| 2995 | 12.4.2.4 | контроль пластик втулки | 30min | 2026-05-13 09:00 A | 2026-05-13 09:30 A | 100% |  |  | start no earlier than 2026-05-13 09:00 | Бобренок В | 0.5h | 0.5h |
| 2996 | 12.4.2.5 | контроль шестерен привода, редуктора | 10min | 2026-03-18 09:00 A | 2026-03-18 09:10 A | 100% |  |  | start no earlier than 2026-03-18 09:00 | Труфанов А | 0.17h | 0.17h |
| 2997 | 12.4.2.6 | Ревизия питателя | 20min | 2026-07-29 09:00 A | 2026-07-29 09:20 A | 100% |  |  | start no earlier than 2026-07-29 08:00 | Бундин В | 0.33h | 0.33h |
| 2998 | 12.4.2.7 | Ревизия питателя, контроль состояния подшипников/втулки/шестерен | 30min | 2026-09-23 09:00 A | 2026-09-23 09:30 A | 100% |  |  | start no earlier than 2026-09-23 09:00 | Бундин В | 0.5h | 0.5h |
| 2999 | 12.4.2.8 | Ревизия питателя, контроль состояния подшипников/втулки/шестерен | 30min | 2026-10-14 09:00 A | 2026-10-14 09:30 A | 100% |  |  | start no earlier than 2026-10-14 09:00 | Дедов В | 0.5h | 0.5h |
| 3000 | 12.4.2.9 | Ревизия питателя, контроль состояния подшипников/втулки/шестерен | 30min | 2026-10-21 09:00 A | 2026-10-21 09:30 A | 100% |  |  | start no earlier than 2026-10-21 09:00 | Макаревич А | 0.5h | 0.5h |
| 3001 | 12.4.2.10 | Ревизия питателя, контроль состояния подшипников/втулки/шестерен | 30min | 2026-10-29 09:00 A | 2026-10-29 09:30 A | 100% |  |  | start no earlier than 2026-10-29 08:00 | Труфанов А; Некрасов А | 1h | 1h |
| 3002 | 12.4.2.11 | Ревизия питателя, контроль состояния подшипников/втулки/шестерен | 30min | 2026-11-11 09:00 A | 2026-11-11 09:30 A | 100% |  |  | start no earlier than 2026-11-11 09:00 | Бундин В | 0.5h | 0.5h |
| 3003 | 12.4.2.12 | Ревизия питателя, контроль состояния подшипников/втулки/шестерен | 30min | 2026-11-18 09:00 A | 2026-11-18 09:30 A | 100% |  |  | start no earlier than 2026-11-18 09:00 | Труфанов А; Некрасов А | 1h | 1h |

| ID | WBS | Task | Duration | Start | Finish | Complete | Remaining | Total slack | Constraint | Resources | Work | Actual work |
| --- | --- | --- | --- | --- | --- | --- | --- | --- | --- | --- | --- | --- |
| 3004 | 12.4.3 | **прекондицинер экструдера** | 148.03d | 2026-05-13 09:00 A | 2026-11-18 09:15 A | 100% |  |  |  |  | 2.5h | 2.5h |
| 3005 | 12.4.3.1 | контроль привода, подшипников | 15min | 2026-05-13 09:00 A | 2026-05-13 09:15 A | 100% |  |  | start no earlier than 2026-05-13 09:00 | Бобренок В | 0.25h | 0.25h |
| 3006 | 12.4.3.2 | контроль привода, подшипников | 15min | 2026-07-29 09:00 A | 2026-07-29 09:15 A | 100% |  |  | start no earlier than 2026-07-29 08:00 | Труфанов А | 0.25h | 0.25h |
| 3007 | 12.4.3.3 | контроль привода, подшипников | 15min | 2026-09-23 09:00 A | 2026-09-23 09:15 A | 100% |  |  | start no earlier than 2026-09-23 09:00 | Бундин В | 0.25h | 0.25h |
| 3008 | 12.4.3.4 | контроль привода, подшипников | 15min | 2026-10-14 09:00 A | 2026-10-14 09:15 A | 100% |  |  | start no earlier than 2026-10-14 09:00 | Дедов В | 0.25h | 0.25h |
| 3009 | 12.4.3.5 | контроль привода, подшипников | 15min | 2026-10-21 09:00 A | 2026-10-21 09:15 A | 100% |  |  | start no earlier than 2026-10-21 09:00 | Макаревич А | 0.25h | 0.25h |
| 3010 | 12.4.3.6 | контроль привода, подшипников | 15min | 2026-10-29 09:00 A | 2026-10-29 09:15 A | 100% |  |  | start no earlier than 2026-10-29 08:00 | Труфанов А; Некрасов А | 0.5h | 0.5h |
| 3011 | 12.4.3.7 | контроль привода, подшипников | 15min | 2026-11-11 09:00 A | 2026-11-11 09:15 A | 100% |  |  | start no earlier than 2026-11-11 09:00 | Бундин В | 0.25h | 0.25h |
| 3012 | 12.4.3.8 | контроль привода, подшипников | 15min | 2026-11-18 09:00 A | 2026-11-18 09:15 A | 100% |  |  | start no earlier than 2026-11-18 09:00 | Труфанов А; Некрасов А | 0.5h | 0.5h |
| 3013 | 12.4.4 | **парогенератор** | 692.12d | 2024-04-10 09:00 A | 2026-11-17 10:00 | 95% | 32.96d | 81.47d |  |  | 13.5h | 13h |
| 3014 | 12.4.4.1 | вскрытие электородов, чистка | 1h | 2026-05-13 09:00 A | 2026-05-13 10:00 A | 100% |  |  | start no earlier than 2026-05-13 09:00 | Бобренок В | 1h | 1h |
| 3015 | 12.4.4.2 | вскрытие электородов, чистка | 1h | 2026-08-12 09:00 A | 2026-08-12 10:00 A | 100% |  |  | start no earlier than 2026-08-12 09:00 | Некрасов А | 1h | 1h |
| 3016 | 12.4.4.3 | тэны и термпоры шнеков- прортяжка | 30min | 2024-04-10 09:00 | 2024-04-10 09:30 |  |  | 773.53d | start no earlier than 2024-04-10 09:00 | Черепанов И | 0.5h |  |
| 3017 | 12.4.4.4 | Чистка парогенератора | 1h | 2026-07-29 09:00 A | 2026-07-29 10:00 A | 100% |  |  | start no earlier than 2026-07-29 08:00 | Бундин В | 1h | 1h |
| 3018 | 12.4.4.5 | вскрытие электородов, чистка (при остановке линии на мойку, если не остановилась, передать по смене Бундину) | 1h | 2026-09-23 09:00 A | 2026-09-23 10:00 A | 100% |  |  | start no earlier than 2026-09-23 09:00 | Некрасов А | 1h | 1h |
| 3019 | 12.4.4.6 | вскрытие электородов, чистка (при остановке линии на мойку, если не остановилась, передать по смене Дедову) | 1h | 2026-09-29 09:00 A | 2026-09-29 10:00 A | 100% |  |  | start no earlier than 2026-09-29 08:00 | Бундин В; Дедов В | 2h | 2h |
| 3020 | 12.4.4.7 | Чистка парогенератора после остановки | 1h | 2026-10-13 09:00 A | 2026-10-13 10:00 A | 100% |  |  | start no earlier than 2026-10-13 08:00 | Бобренок В | 1h | 1h |
| 3021 | 12.4.4.8 | Чистка парогенератора после остановки | 1h | 2026-10-21 09:00 A | 2026-10-21 10:00 A | 100% |  |  | start no earlier than 2026-10-21 09:00 | Макаревич А | 1h | 1h |
| 3022 | 12.4.4.9 | Чистка парогенератора | 1h | 2026-10-29 09:00 A | 2026-10-29 10:00 A | 100% |  |  | start no earlier than 2026-10-29 08:00 | Макаревич А; Николаев | 2h | 2h |
| 3023 | 12.4.4.10 | Чистка парогенератора | 1h | 2026-11-11 09:00 A | 2026-11-11 10:00 A | 100% |  |  | start no earlier than 2026-11-11 09:00 | Бундин В | 1h | 1h |
| 3024 | 12.4.4.11 | Чистка парогенератора (когда остановятся) | 1h | 2026-11-17 09:00 A | 2026-11-17 10:00 A | 100% |  |  | start no earlier than 2026-11-17 09:00 | Макаревич А; Николаев | 2h | 2h |
| 3025 | 12.4.5 | **шкаф управления экструдером** | 193.03d | 2026-03-11 09:00 A | 2026-11-18 09:15 A | 100% |  |  |  |  | 3.5h | 3.5h |
| 3026 | 12.4.5.1 | протяжка контактов | 30min | 2026-03-11 09:00 A | 2026-03-11 09:30 A | 100% |  |  | start no earlier than 2026-03-11 09:00 | Некрасов А | 0.5h | 0.5h |
| 3027 | 12.4.5.2 | частотные привода экструдера, ножей, питателя - продувка | 30min | 2026-05-27 09:00 A | 2026-05-27 09:30 A | 100% |  |  | start no earlier than 2026-05-27 09:00 | Бундин В | 0.5h | 0.5h |
| 3028 | 12.4.5.3 | частотные привода экструдера, ножей, питателя - продувка | 15min | 2026-07-16 09:00 A | 2026-07-16 09:15 A | 100% |  |  | start no earlier than 2026-07-16 09:00 | Бобренок В | 0.25h | 0.25h |
| 3029 | 12.4.5.4 | частотные привода экструдера, ножей, питателя - продувка | 15min | 2026-07-29 09:00 A | 2026-07-29 09:15 A | 100% |  |  | start no earlier than 2026-07-29 08:00 | Труфанов А | 0.25h | 0.25h |
| 3030 | 12.4.5.5 | частотные привода экструдера, ножей, питателя - продувка | 15min | 2026-09-23 09:00 A | 2026-09-23 09:15 A | 100% |  |  | start no earlier than 2026-09-23 09:00 | Труфанов А | 0.25h | 0.25h |
| 3031 | 12.4.5.6 | частотные привода экструдера, ножей, питателя - продувка | 15min | 2026-10-14 09:00 A | 2026-10-14 09:15 A | 100% |  |  | start no earlier than 2026-10-14 09:00 | Дедов В | 0.25h | 0.25h |
| 3032 | 12.4.5.7 | частотные привода экструдера, ножей, питателя - продувка | 15min | 2026-10-21 09:00 A | 2026-10-21 09:15 A | 100% |  |  | start no earlier than 2026-10-21 09:00 | Макаревич А | 0.25h | 0.25h |
| 3033 | 12.4.5.8 | частотные привода экструдера, ножей, питателя - продувка | 15min | 2026-10-29 09:00 A | 2026-10-29 09:15 A | 100% |  |  | start no earlier than 2026-10-29 08:00 | Труфанов А; Некрасов А | 0.5h | 0.5h |
| 3034 | 12.4.5.9 | частотные привода экструдера, ножей, питателя - продувка | 15min | 2026-11-11 09:00 A | 2026-11-11 09:15 A | 100% |  |  | start no earlier than 2026-11-11 09:00 | Бундин В | 0.25h | 0.25h |
| 3035 | 12.4.5.10 | частотные привода экструдера, ножей, питателя - продувка | 15min | 2026-11-18 09:00 A | 2026-11-18 09:15 A | 100% |  |  | start no earlier than 2026-11-18 09:00 | Труфанов А; Некрасов А | 0.5h | 0.5h |

| ID | WBS | Task | Duration | Start | Finish | Complete | Remaining | Total slack | Constraint | Resources | Work | Actual work |
| --- | --- | --- | --- | --- | --- | --- | --- | --- | --- | --- | --- | --- |
| 3036 | 12.4.6 | **редуктор экструдера и маслянная станция** | 143.06d | 2026-05-20 09:00 A | 2026-11-18 09:30 A | 100% |  |  |  |  | 8.5h | 8.5h |
| 3037 | 12.4.6.1 | чистка фильтра | 30min | 2026-06-02 09:00 A | 2026-06-02 09:30 A | 100% |  |  | start no earlier than 2026-06-02 09:00 | Тимофеев В | 0.5h | 0.5h |
| 3038 | 12.4.6.2 | чистка фильтра | 30min | 2026-05-20 09:00 A | 2026-05-20 09:30 A | 100% |  |  | start no earlier than 2026-05-20 09:00 | Тимофеев В | 0.5h | 0.5h |
| 3039 | 12.4.6.3 | муфта редутор-мотор проверка состояния | 30min | 2026-05-27 09:00 A | 2026-05-27 09:30 A | 100% |  |  | start no earlier than 2026-05-27 09:00 | Тимофеев В | 0.5h | 0.5h |
| 3040 | 12.4.6.4 | чистка фильтра | 30min | 2026-07-16 09:00 A | 2026-07-16 09:30 A | 100% |  |  | start no earlier than 2026-07-16 09:00 | Бобренок В | 0.5h | 0.5h |
| 3041 | 12.4.6.5 | Чистка фильтра | 30min | 2026-07-29 08:00 A | 2026-07-29 09:30 A | 100% |  |  | start no earlier than 2026-07-29 08:00 | Тимофеев В | 0.5h | 0.5h |
| 3042 | 12.4.6.6 | Осмотр редуктор-двигатель, нехороший шум, проверить втулки МУВП/заменить | 1h | 2026-09-23 09:00 A | 2026-09-23 10:00 A | 100% |  |  | start no earlier than 2026-09-23 09:00 | Бундин В; Некрасов А | 2h | 2h |
| 3043 | 12.4.6.7 | Чистка фильтра/тэны и термопары шнеков - протяжка | 30min | 2026-10-14 09:00 A | 2026-10-14 09:30 A | 100% |  |  | start no earlier than 2026-10-14 09:00 | Дедов В | 0.5h | 0.5h |
| 3044 | 12.4.6.8 | Чистка фильтра/тэны и термопары шнеков - протяжка | 30min | 2026-10-14 09:00 A | 2026-10-14 09:30 A | 100% |  |  | start no earlier than 2026-10-14 09:00 | Труфанов А | 0.5h | 0.5h |
| 3045 | 12.4.6.9 | Чистка фильтра/тэны и термопары шнеков - протяжка/ проверка масла | 30min | 2026-10-21 09:00 A | 2026-10-21 09:30 A | 100% |  |  | start no earlier than 2026-10-21 09:00 | Макаревич А | 0.5h | 0.5h |
| 3046 | 12.4.6.10 | Чистка фильтра/тэны и термопары шнеков - протяжка/ проверка масла | 30min | 2026-10-29 09:00 A | 2026-10-29 09:30 A | 100% |  |  | start no earlier than 2026-10-29 08:00 | Труфанов А; Некрасов А | 1h | 1h |
| 3047 | 12.4.6.11 | Чистка фильтра/тэны и термопары шнеков - протяжка/ проверка масла | 30min | 2026-11-11 09:00 A | 2026-11-11 09:30 A | 100% |  |  | start no earlier than 2026-11-11 09:00 | Бундин В | 0.5h | 0.5h |
| 3048 | 12.4.6.12 | Чистка фильтра/тэны и термопары шнеков - протяжка/ проверка масла | 30min | 2026-11-18 09:00 A | 2026-11-18 09:30 A | 100% |  |  | start no earlier than 2026-11-18 09:00 | Труфанов А; Некрасов А | 1h | 1h |
| 3049 | 12.4.7 | **блок тэнов сушки - протяжка** | 143.04d? | 2026-05-20 09:00 A | 2026-11-18 09:20 | 71% | 41.87d? | 80.55d |  |  | 14.33h | 10.33h |
| 3050 | 12.4.7.1 | ревизия, замена отгоревших жил, проверка токов | 3h | 2026-05-20 09:00 A | 2026-05-20 12:00 A | 100% |  |  | start no earlier than 2026-05-20 09:00 | Бобренок В | 3h | 3h |
| 3051 | 12.4.7.2 | ревизия, замена отгоревших жил, проверка токов | 4h? | 2026-09-11 09:00 | 2026-09-11 13:00 |  |  | 140.09d | start no earlier than 2026-09-11 09:00 | Тимофеев В | 4h |  |
| 3052 | 12.4.7.3 | Полное ТО шкафа управления, замена всех отгоревших жил/клемм, протяжка контактов | 5h | 2026-09-23 09:00 A | 2026-09-23 15:00 A | 100% |  |  | start no earlier than 2026-09-23 09:00 | Труфанов А | 5h | 5h |
| 3053 | 12.4.7.4 | Ревизия, проверка жил, проверка токов | 20min | 2026-10-14 09:00 A | 2026-10-14 09:20 A | 100% |  |  | start no earlier than 2026-10-14 09:00 | Дедов В | 0.33h | 0.33h |
| 3054 | 12.4.7.5 | Ревизия, проверка жил, проверка токов | 20min | 2026-10-21 09:00 A | 2026-10-21 09:20 A | 100% |  |  | start no earlier than 2026-10-21 09:00 | Макаревич А | 0.33h | 0.33h |
| 3055 | 12.4.7.6 | Ревизия, проверка жил, проверка токов | 20min | 2026-10-29 09:00 A | 2026-10-29 09:20 A | 100% |  |  | start no earlier than 2026-10-29 08:00 | Труфанов А; Некрасов А | 0.67h | 0.67h |
| 3056 | 12.4.7.7 | Ревизия, проверка жил, проверка токов | 20min | 2026-11-11 09:00 A | 2026-11-11 09:20 A | 100% |  |  | start no earlier than 2026-11-11 09:00 | Бундин В | 0.33h | 0.33h |
| 3057 | 12.4.7.8 | Ревизия, проверка жил, проверка токов | 20min | 2026-11-18 09:00 A | 2026-11-18 09:20 A | 100% |  |  | start no earlier than 2026-11-18 09:00 | Труфанов А; Некрасов А | 0.67h | 0.67h |
| 3058 | 12.4.8 | **шкаф управления тэнами сушки** | 646.03d | 2024-06-14 09:00 A | 2026-11-18 09:15 | 97% | 17.46d | 80.56d |  |  | 10.75h | 10.5h |
| 3059 | 12.4.8.1 | протяжка контактов | 15min | 2026-05-20 09:00 A | 2026-05-20 09:15 A | 100% |  |  | start no earlier than 2026-05-20 09:00 | Бобренок В | 0.25h | 0.25h |
| 3060 | 12.4.8.2 | замена неисправных жил | 1h | 2026-05-20 09:00 A | 2026-05-20 10:00 A | 100% |  |  | start no earlier than 2026-05-20 09:00 | Бобренок В | 1h | 1h |
| 3061 | 12.4.8.3 | ревизия/ проверка токов | 15min | 2026-08-19 09:00 | 2026-08-19 09:15 |  |  | 158.56d | start no earlier than 2026-08-19 09:00 | Некрасов А | 0.25h |  |
| 3062 | 12.4.8.4 | конвейер №1 с печи в дрожировщик прорверка подшипники, реуктор | 30min | 2024-10-04 09:00 A | 2024-10-04 09:30 A | 100% |  |  | start no earlier than 2024-10-04 09:00 | Тимофеев В | 0.5h | 0.5h |
| 3063 | 12.4.8.5 | барабан смесительный дрожировка - прорверка подшипнки , реуктор | 30min | 2024-10-04 09:00 A | 2024-10-04 09:30 A | 100% |  |  | start no earlier than 2024-10-04 09:00 | Тимофеев В | 0.5h | 0.5h |
| 3064 | 12.4.8.6 | конвейер №2 с дрожировки в охладитель - проверка подшипники , редуктор | 30min | 2024-10-04 09:00 A | 2024-10-04 09:30 A | 100% |  |  | start no earlier than 2024-10-04 09:00 | Тимофеев В | 0.5h | 0.5h |
| 3065 | 12.4.8.7 | охладитель сеточный - смазка, натяжка цепи. Проверка редуктор | 1h | 2026-09-23 09:00 A | 2026-09-23 10:00 A | 100% |  |  | start no earlier than 2026-09-23 09:00 | Бундин В; Некрасов А | 2h | 2h |
| 3066 | 12.4.8.8 | вентиляторы обдува сушки | 2h | 2024-06-14 09:00 A | 2024-06-14 11:00 A | 100% |  |  | start no earlier than 2024-06-14 09:00 | ТО_2 | 2h | 2h |
| 3067 | 12.4.8.9 | дозатор сухой гидролизат - разборка, чистка, замена подшипников | 2h | 2026-08-20 09:00 A | 2026-08-20 11:00 A | 100% |  |  | start no earlier than 2026-08-20 09:00 | Макаревич А | 2h | 2h |
| 3068 | 12.4.8.10 | ревизия/ проверка токов/протяжка контактов | 15min | 2026-10-14 09:00 A | 2026-10-14 09:15 A | 100% |  |  | start no earlier than 2026-10-14 09:00 | Дедов В | 0.25h | 0.25h |
| 3069 | 12.4.8.11 | ревизия/ проверка токов/протяжка контактов | 15min | 2026-10-21 09:00 A | 2026-10-21 09:15 A | 100% |  |  | start no earlier than 2026-10-21 09:00 | Макаревич А | 0.25h | 0.25h |
| 3070 | 12.4.8.12 | ревизия/ проверка токов/протяжка контактов | 15min | 2026-10-29 09:00 A | 2026-10-29 09:15 A | 100% |  |  | start no earlier than 2026-10-29 08:00 | Труфанов А; Некрасов А | 0.5h | 0.5h |
| 3071 | 12.4.8.13 | ревизия/ проверка токов/протяжка контактов | 15min | 2026-11-11 09:00 A | 2026-11-11 09:15 A | 100% |  |  | start no earlier than 2026-11-11 09:00 | Бундин В | 0.25h | 0.25h |
| 3072 | 12.4.8.14 | ревизия/ проверка токов/протяжка контактов | 15min | 2026-11-18 09:00 A | 2026-11-18 09:15 A | 100% |  |  | start no earlier than 2026-11-18 09:00 | Труфанов А; Некрасов А | 0.5h | 0.5h |

| ID | WBS | Task | Duration | Start | Finish | Complete | Remaining | Total slack | Constraint | Resources | Work | Actual work |
| --- | --- | --- | --- | --- | --- | --- | --- | --- | --- | --- | --- | --- |
| 3073 | 12.4.9 | **Насос гидролизата** | 178.06d | 2026-04-01 09:00 A | 2026-11-18 09:30 A | 100% |  |  |  |  | 2.5h | 2.5h |
| 3074 | 12.4.9.1 | Дефектовка - проверить подачу, вибрации, посторонние шумы. | 30min | 2026-04-01 09:00 A | 2026-04-01 09:30 A | 100% |  |  | start no earlier than 2026-04-01 09:00 | Тимофеев В | 0.5h | 0.5h |
| 3075 | 12.4.9.2 | Дефектовка - проверить подачу, вибрации, посторонние шумы. | 30min | 2026-07-29 08:00 A | 2026-07-29 09:30 A | 100% |  |  | start no earlier than 2026-07-29 08:00 | Тимофеев В | 0.5h | 0.5h |
| 3076 | 12.4.9.3 | Дефектовка - проверить подачу, вибрации, посторонние шумы. | 30min | 2026-11-11 09:00 A | 2026-11-11 09:30 A | 100% |  |  | start no earlier than 2026-11-11 09:00 | Бундин В | 0.5h | 0.5h |
| 3077 | 12.4.9.4 | Дефектовка - проверить подачу, вибрации, посторонние шумы. | 30min | 2026-11-18 09:00 A | 2026-11-18 09:30 A | 100% |  |  | start no earlier than 2026-11-18 09:00 | Труфанов А; Некрасов А | 1h | 1h |
| 3078 | 12.4.10 | **Квадропак** | 168.12d | 2026-04-22 09:00 A | 2026-11-25 10:00 | 87% | 22.05d | 75.47d |  |  | 19.25h | 16.25h |
| 3079 | 12.4.10.1 | Установить дополнительные пружины на дозатор | 1h | 2026-09-30 09:00 A | 2026-09-30 10:00 A | 100% |  |  | start no earlier than 2026-09-30 09:00 | Труфанов А; Некрасов А | 2h | 2h |
| 3080 | 12.4.10.2 | проверить резьбу крепления встряхивателя №1, закрепить | 1h | 2026-06-02 09:00 A | 2026-06-02 10:00 A | 100% |  |  | start no earlier than 2026-06-02 09:00 | Макаревич А | 1h | 1h |
| 3081 | 12.4.10.3 | Замена резинки на воздушном редукторе находящемся под мультиголовой (весы) | 1h | 2026-04-22 09:00 A | 2026-04-22 10:00 A | 100% |  |  | start no earlier than 2026-04-22 09:00 | Бундин В | 1h | 1h |
| 3082 | 12.4.10.4 | ТО узла пайки. Чистка тен/ревизия термоизолятора пневморедуктора | 1h | 2026-05-27 09:00 A | 2026-05-27 10:00 A | 100% |  |  | start no earlier than 2026-05-27 09:00 | Тимофеев В | 1h | 1h |
| 3083 | 12.4.10.5 | ревизия привод встряхивателя | 30min | 2026-05-27 09:00 A | 2026-05-27 09:30 A | 100% |  |  | start no earlier than 2026-05-27 09:00 | Тимофеев В | 0.5h | 0.5h |
| 3084 | 12.4.10.6 | ревизия протяжки кинематики низ / верх | 30min | 2026-05-27 09:00 A | 2026-05-27 09:30 A | 100% |  |  | start no earlier than 2026-05-27 09:00 | Тимофеев В | 0.5h | 0.5h |
| 3085 | 12.4.10.7 | ревизия вакуумный насос | 15min | 2026-05-27 09:00 A | 2026-05-27 09:15 A | 100% |  |  | start no earlier than 2026-05-27 09:00 | Тимофеев В | 0.25h | 0.25h |
| 3086 | 12.4.10.8 | замена вал выход | 4h | 2026-06-15 09:00 A | 2026-06-15 13:00 A | 100% |  |  | start no earlier than 2026-06-15 09:00 | Тимофеев В | 4h | 4h |
| 3087 | 12.4.10.9 | проверить пневмоцилиндр на встряхивателе, если нужно заменить | 1h | 2026-05-20 09:00 A | 2026-05-20 10:00 A | 100% |  |  | start no earlier than 2026-05-20 09:00 | Некрасов А | 1h | 1h |
| 3088 | 12.4.10.10 | Закрепить, подровнять, слесарные работы которые требуются | 1h | 2026-09-30 09:00 A | 2026-09-30 10:00 A | 100% |  |  | start no earlier than 2026-09-30 09:00 | Труфанов А; Некрасов А | 2h | 2h |
| 3089 | 12.4.10.11 | Осмотр, дефектовка, устранение неисправностей ,смазка по необходимости, протяжка болтов | 1h | 2026-10-21 09:00 A | 2026-10-21 10:00 A | 100% |  |  | start no earlier than 2026-10-21 09:00 | Макаревич А | 1h | 1h |
| 3090 | 12.4.10.12 | Осмотр, дефектовка, устранение неисправностей ,смазка по необходимости, протяжка болтов | 1h | 2026-10-29 09:00 A | 2026-10-29 10:00 A | 100% |  |  | start no earlier than 2026-10-29 08:00 | Труфанов А; Некрасов А | 2h | 2h |
| 3091 | 12.4.10.13 | Осмотр, дефектовка, устранение неисправностей ,смазка по необходимости, протяжка болтов | 1h | 2026-11-11 09:00 | 2026-11-11 10:00 |  |  | 87.47d | start no earlier than 2026-11-11 09:00 | Бундин В | 1h |  |
| 3092 | 12.4.10.14 | Осмотр, дефектовка, устранение неисправностей ,смазка по необходимости, протяжка болтов | 1h | 2026-11-25 09:00 | 2026-11-25 10:00 |  |  | 75.47d | start no earlier than 2026-11-25 09:00 | Труфанов А; Некрасов А | 2h |  |
| 3093 | 12.4.11 | **Дражжировка** | 37.03d | 2026-08-27 09:00 A | 2026-10-07 09:15 | 85% | 5.55d |  |  |  | 9.17h | 8.17h |
| 3094 | 12.4.11.1 | Проверка подшипников на барабанах | 15min | 2026-08-27 09:00 A | 2026-08-27 09:15 A | 100% |  |  | start no earlier than 2026-08-27 09:00 | Тимофеев В | 0.25h | 0.25h |
| 3095 | 12.4.11.2 | Проверка фильтров | 10min | 2026-08-27 09:00 A | 2026-08-27 09:10 A | 100% |  |  | start no earlier than 2026-08-27 09:00 | Тимофеев В | 0.17h | 0.17h |
| 3096 | 12.4.11.3 | Ревизия насоса гидролизата | 2h | 2026-08-27 09:00 A | 2026-08-27 11:00 A | 100% |  |  | start no earlier than 2026-08-27 09:00 | Тимофеев В | 2h | 2h |
| 3097 | 12.4.11.4 | Дефектовка - проверить подачу, вибрации, посторонние шумы/проверка фильтров/насосов/фитингов | 15min | 2026-10-14 09:00 A | 2026-10-14 09:15 A | 100% |  |  | start no earlier than 2026-10-14 09:00 | Дедов В | 0.25h | 0.25h |
| 3098 | 12.4.11.5 | Дефектовка - проверить подачу, вибрации, посторонние шумы/проверка фильтров/насосов/фитингов | 15min | 2026-10-21 09:00 A | 2026-10-21 09:15 A | 100% |  |  | start no earlier than 2026-10-21 09:00 | Макаревич А | 0.25h | 0.25h |
| 3099 | 12.4.11.6 | Ремон конвейера изготовление и установка полосы, чтоб не сыпало | 2h | 2026-10-21 09:00 A | 2026-10-21 11:00 A | 100% |  |  | start no earlier than 2026-10-21 09:00 | Тимофеев В; Николаев | 4h | 4h |
| 3100 | 12.4.11.7 | Дефектовка - проверить подачу, вибрации, посторонние шумы/проверка фильтров/насосов/фитингов | 15min | 2026-10-29 09:00 A | 2026-10-29 09:15 A | 100% |  |  | start no earlier than 2026-10-29 08:00 | Труфанов А; Некрасов А | 0.5h | 0.5h |
| 3101 | 12.4.11.8 | Дефектовка - проверить подачу, вибрации, посторонние шумы/проверка фильтров/насосов/фитингов | 15min | 2026-11-11 09:00 A | 2026-11-11 09:15 A | 100% |  |  | start no earlier than 2026-11-11 09:00 | Бундин В | 0.25h | 0.25h |
| 3102 | 12.4.11.9 | Дефектовка - проверить подачу, вибрации, посторонние шумы/проверка фильтров/насосов/фитингов | 15min | 2026-11-18 09:00 A | 2026-11-18 09:15 A | 100% |  |  | start no earlier than 2026-11-18 09:00 | Труфанов А; Некрасов А | 0.5h | 0.5h |
| 3103 | 12.4.11.10 | Разбор и чистка бункера со шнеком подачи сухого гидролизата | 1h | 2026-11-25 09:00 | 2026-11-25 10:00 |  |  | 75.47d | start no earlier than 2026-11-25 09:00 | Тимофеев В | 1h |  |

| ID | WBS | Task | Duration | Start | Finish | Complete | Remaining | Total slack | Constraint | Resources | Work | Actual work |
| --- | --- | --- | --- | --- | --- | --- | --- | --- | --- | --- | --- | --- |
| 3104 | 12.4.12 | **жиротопка и насос перекачки жира** | 693.03d | 2024-04-10 09:00 A | 2026-11-18 09:15 A | 100% |  |  |  |  | 2.5h | 2.5h |
| 3105 | 12.4.12.1 | блок тэнов -протяжка | 30min | 2024-04-10 09:00 A | 2024-04-10 09:30 A | 100% |  |  | start no earlier than 2024-04-10 08:00 | Тимофеев В | 0.5h | 0.5h |
| 3106 | 12.4.12.2 | насос, фильтр - осмотр, чистка | 15min | 2024-04-25 09:00 A | 2024-04-25 09:15 A | 100% |  |  | start no earlier than 2024-04-25 09:00 | Тимофеев В | 0.25h | 0.25h |
| 3107 | 12.4.12.3 | насос, фильтр - осмотр, чистка | 15min | 2026-07-29 09:00 A | 2026-07-29 09:15 A | 100% |  |  | start no earlier than 2026-07-29 08:00 | Труфанов А | 0.25h | 0.25h |
| 3108 | 12.4.12.4 | насос, фильтр - осмотр, чистка | 15min | 2026-10-21 09:00 A | 2026-10-21 09:15 A | 100% |  |  | start no earlier than 2026-10-21 09:00 | Макаревич А | 0.25h | 0.25h |
| 3109 | 12.4.12.5 | насос, фильтр - осмотр, чистка | 15min | 2026-10-29 09:00 A | 2026-10-29 09:15 A | 100% |  |  | start no earlier than 2026-10-29 08:00 | Макаревич А; Николаев | 0.5h | 0.5h |
| 3110 | 12.4.12.6 | насос, фильтр - осмотр, чистка | 15min | 2026-11-11 09:00 A | 2026-11-11 09:15 A | 100% |  |  | start no earlier than 2026-11-11 09:00 | Бундин В | 0.25h | 0.25h |
| 3111 | 12.4.12.7 | насос, фильтр - осмотр, чистка | 15min | 2026-11-18 09:00 A | 2026-11-18 09:15 A | 100% |  |  | start no earlier than 2026-11-18 09:00 | Труфанов А; Некрасов А | 0.5h | 0.5h |
| 3112 | 12.4.13 | **упаковщкики** | 471.12d | 2025-02-14 09:00 A | 2026-11-18 10:00 | 33% | 314.08d | 80.47d |  |  | 38h | 16h |
| 3113 | 12.4.13.1 | упаковщик ТЕКО 0,4кг | 2h | 2025-02-16 09:00 A | 2025-02-17 11:00 A | 100% |  |  | start no earlier than 2025-02-16 09:00 | Дедов В | 2h | 2h |
| 3114 | 12.4.13.2 | упаковщик ТЕКО 0,4кг | 2h | 2026-08-26 09:00 | 2026-08-26 11:00 |  |  | 153.34d | start no earlier than 2026-08-26 09:00 | Тимофеев В | 2h |  |
| 3115 | 12.4.13.3 | упаковщик НОТИС | 2h | 2025-02-17 09:00 | 2025-02-17 11:00 |  |  | 550.34d | start no earlier than 2025-02-16 09:00 | Дедов В | 2h |  |
| 3116 | 12.4.13.4 | упаковщик ТЕКО 1.5кг | 2h | 2025-02-17 09:00 | 2025-02-17 11:00 |  |  | 550.34d | start no earlier than 2025-02-16 09:00 | Дедов В | 2h |  |
| 3117 | 12.4.13.5 | упаковщик КВАДРОПАК | 2h | 2025-02-17 09:00 | 2025-02-17 11:00 |  |  | 550.34d | start no earlier than 2025-02-16 09:00 | Дедов В | 2h |  |
| 3118 | 12.4.13.6 | нория и вибробункер КВАДРОПАК | 2h | 2025-02-17 09:00 | 2025-02-17 11:00 |  |  | 550.34d | start no earlier than 2025-02-16 09:00 | Дедов В | 2h |  |
| 3119 | 12.4.13.7 | запайщик 1 | 2h | 2025-02-17 09:00 | 2025-02-17 11:00 |  |  | 550.34d | start no earlier than 2025-02-17 09:00 | Дедов В | 2h |  |
| 3120 | 12.4.13.8 | запайщик 2 | 2h | 2025-02-17 09:00 | 2025-02-17 11:00 |  |  | 550.34d | start no earlier than 2025-02-17 09:00 | Дедов В | 2h |  |
| 3121 | 12.4.13.9 | конвейер гп ТЕКО 1,5 | 2h | 2025-02-14 09:00 | 2025-02-14 11:00 |  |  | 551.34d | start no earlier than 2025-02-14 09:00 | Макаревич А | 2h |  |
| 3122 | 12.4.13.10 | конвейер гп ТЕКО 0,4 | 2h | 2025-02-14 09:00 | 2025-02-14 11:00 |  |  | 551.34d | start no earlier than 2025-02-14 09:00 | Макаревич А | 2h |  |
| 3123 | 12.4.13.11 | накопительный стол 1,5 | 2h | 2025-02-17 09:00 | 2025-02-17 11:00 |  |  | 550.34d | start no earlier than 2025-02-15 09:00 | Макаревич А | 2h |  |
| 3124 | 12.4.13.12 | накопительный стол 0,4 | 2h | 2025-02-17 09:00 | 2025-02-17 11:00 |  |  | 550.34d | start no earlier than 2025-02-15 09:00 | Макаревич А | 2h |  |
| 3125 | 12.4.13.13 | Осмотр всех упаковщиков/транспортеров/накопительных столов/ всех щитков оборудования | 2h | 2026-07-29 09:00 A | 2026-07-29 11:00 A | 100% |  |  | start no earlier than 2026-07-29 08:00 | Бундин В | 2h | 2h |
| 3126 | 12.4.13.14 | Осмотр всех упаковщиков/транспортеров/накопительных столов/ всех щитков оборудования | 2h | 2026-10-14 09:00 A | 2026-10-14 11:00 A | 100% |  |  | start no earlier than 2026-10-14 09:00 | Тимофеев В; Дедов В | 4h | 4h |
| 3127 | 12.4.13.15 | Осмотр всех упаковщиков/транспортеров/накопительных столов/ всех щитков оборудования/редукторов | 2h | 2026-10-21 09:00 A | 2026-10-21 11:00 A | 100% |  |  | start no earlier than 2026-10-21 09:00 | Макаревич А | 2h | 2h |
| 3128 | 12.4.13.16 | Осмотр всех упаковщиков/транспортеров/накопительных столов/ всех щитков оборудования/редукторов | 1h | 2026-10-29 09:00 A | 2026-10-29 10:00 A | 100% |  |  | start no earlier than 2026-10-29 08:00 | Макаревич А; Николаев | 2h | 2h |
| 3129 | 12.4.13.17 | Осмотр всех упаковщиков/транспортеров/накопительных столов/ всех щитков оборудования/редукторов | 1h | 2026-11-11 09:00 A | 2026-11-11 10:00 A | 100% |  |  | start no earlier than 2026-11-11 09:00 | Бундин В; Тимофеев В | 2h | 2h |
| 3130 | 12.4.13.18 | Осмотр всех упаковщиков/транспортеров/накопительных столов/ всех щитков оборудования/редукторов | 1h | 2026-11-18 09:00 A | 2026-11-18 10:00 A | 100% |  |  | start no earlier than 2026-11-18 09:00 | Труфанов А; Некрасов А | 2h | 2h |

| ID | WBS | Task | Duration | Start | Finish | Complete | Remaining | Total slack | Constraint | Resources | Work | Actual work |
| --- | --- | --- | --- | --- | --- | --- | --- | --- | --- | --- | --- | --- |
| 3131 | 12.4.14 | **электрооборудование** | 0.12d | 2026-05-20 09:00 | 2026-05-20 10:00 |  |  | 223.47d |  | ТО | 5.5h | 1h |
| 3132 | 12.4.14.1 | ВРУ1 | 15min | 2026-05-20 09:00 | 2026-05-20 09:15 |  |  | 223.56d | start no earlier than 2026-05-20 09:00 | ТО; Тимофеев В | 0.5h |  |
| 3133 | 12.4.14.2 | ВРУ2 | 15min | 2026-05-20 09:00 | 2026-05-20 09:15 |  |  | 223.56d | start no earlier than 2026-05-20 09:00 | ТО; Тимофеев В | 0.5h |  |
| 3134 | 12.4.14.3 | ЩР1 экструдер | 15min | 2026-05-20 09:00 | 2026-05-20 09:15 |  |  | 223.56d | start no earlier than 2026-05-20 09:00 | ТО; Тимофеев В | 0.5h |  |
| 3135 | 12.4.14.4 | ЩР2 упаковка №1 | 15min | 2026-05-20 09:00 | 2026-05-20 09:15 |  |  | 223.56d | start no earlier than 2026-05-20 09:00 | ТО; Тимофеев В | 0.5h |  |
| 3136 | 12.4.14.5 | ЩР3 упаковка №2 | 15min | 2026-05-20 09:00 | 2026-05-20 09:15 |  |  | 223.56d | start no earlier than 2026-05-20 09:00 | ТО; Тимофеев В | 0.5h |  |
| 3137 | 12.4.14.6 | ЩР жиротопка и зона жиров | 1h | 2026-05-20 09:00 | 2026-05-20 10:00 |  |  | 223.47d | start no earlier than 2026-05-20 09:00 | ТО; Некрасов А | 2h |  |
| 3138 | 12.4.15 | **Компрессор 1 цех** | 748.12d? | 2023-12-29 09:00 A | 2026-10-29 10:00 | 10% | 670.73d? | 98.47d |  | ТО | 779.33h | 113.9h |
| 3139 | 12.4.15.1 | продувка радиаторов осушителя и компрессора, слив конденсата | 1h | 2026-06-07 09:00 A | 2026-06-08 10:00 A | 100% |  |  | start no earlier than 2026-06-07 09:00 | Дедов В | 1h | 1h |
| 3140 | 12.4.15.2 | продувка радиаторов осушителя и компрессора, слив конденсата | 1h | 2026-10-14 09:00 | 2026-10-14 10:00 |  |  | 110.47d | start no earlier than 2026-10-14 09:00 | Дедов В | 1h |  |
| 3141 | 12.4.15.3 | продувка радиаторов осушителя и компрессора, слив конденсата | 1h | 2026-08-29 09:00 A | 2026-08-31 10:00 A | 100% |  |  | start no earlier than 2026-08-29 09:00 | Дедов В | 1h | 1h |
| 3142 | 12.4.15.4 | <Новая задача> | 1d? | 2026-08-28 09:00 | 2026-08-28 18:00 |  |  | 150.59d | start no earlier than 2026-08-28 08:00 |  |  |  |
| 3143 | 12.4.15.5 | осушитель 1 цех | 2h | 2023-12-29 09:00 | 2023-12-29 11:00 |  |  | 846.34d | start no earlier than 2023-12-28 09:00 | ТО | 2h |  |
| 3144 | 12.4.15.6 | осушитель 1 цех/слить конденсат | 30min | 2026-07-29 09:00 | 2026-07-29 09:30 |  |  | 173.53d | start no earlier than 2026-07-29 08:00 | Бундин В | 0.5h |  |
| 3145 | 12.4.15.7 | осушитель 1 цех/слить конденсат | 20min | 2026-10-14 09:00 | 2026-10-14 09:20 |  |  | 110.55d | start no earlier than 2026-10-14 09:00 | Дедов В | 0.33h |  |
| 3146 | 12.4.15.8 | бойлер 1 1 цех раковина | 2h | 2023-12-29 09:00 | 2023-12-29 11:00 |  |  | 846.34d | start no earlier than 2023-12-28 09:00 | ТО | 2h |  |
| 3147 | 12.4.15.9 | бойлер 2 1 цех раковина | 2h | 2023-12-29 09:00 | 2023-12-29 11:00 |  |  | 846.34d | start no earlier than 2023-12-28 09:00 | ТО | 2h |  |
| 3148 | 12.4.15.10 | бойлер 3 1 цех душ | 2h | 2023-12-29 09:00 | 2023-12-29 11:00 |  |  | 846.34d | start no earlier than 2023-12-28 09:00 | ТО | 2h |  |
| 3149 | 12.4.15.11 | насосная станция 1 цех | 2h | 2023-12-29 09:00 | 2023-12-29 11:00 |  |  | 846.34d | start no earlier than 2023-12-28 09:00 | ТО | 2h |  |
| 3150 | 12.4.15.12 | фильтр приточной вентиляции | 2h | 2023-12-29 09:00 | 2023-12-29 11:00 |  |  | 846.34d |  |  |  |  |
| 3151 | 12.4.15.13 | пульт управления вентиляцией, частототные приводы | 2h | 2023-12-29 09:00 | 2023-12-29 11:00 |  |  | 846.34d | start no earlier than 2023-12-28 09:00 | ТО | 2h |  |
| 3152 | 12.4.15.14 | кондиционер 1 продувка фильтров внутр / очистка наруж блок | 30min | 2026-06-02 09:00 A | 2026-06-02 09:30 A | 100% |  |  | start no earlier than 2026-06-02 09:00 | Некрасов А | 0.5h | 0.5h |
| 3153 | 12.4.15.15 | кондиционер 2 продувка фильтров внутр / очистка наруж блок | 30min | 2026-06-02 09:00 A | 2026-06-02 09:30 A | 100% |  |  | start no earlier than 2026-06-02 09:00 | Некрасов А | 0.5h | 0.5h |
| 3154 | 12.4.15.16 | кондиционер 3 продувка фильтров внутр / очистка наруж блок | 30min | 2026-06-02 09:00 A | 2026-06-02 09:30 A | 100% |  |  | start no earlier than 2026-06-02 09:00 | Некрасов А | 0.5h | 0.5h |
| 3155 | 12.4.15.17 | кондиционер 1 продувка фильтров внутр / очистка наруж блок (керхер взять у Мейхера) | 30min | 2026-06-10 09:00 | 2026-06-10 09:30 |  |  | 208.53d | start no earlier than 2026-06-10 09:00 | Некрасов А; Дедов В | 1h |  |
| 3156 | 12.4.15.18 | кондиционер 2 продувка фильтров внутр / очистка наруж блок (керхер взять у Мейхера) | 30min | 2026-06-10 09:00 | 2026-06-10 09:30 |  |  | 208.53d | start no earlier than 2026-06-10 09:00 | Некрасов А; Дедов В | 1h |  |
| 3157 | 12.4.15.19 | кондиционер 3 продувка фильтров внутр / очистка наруж блок (керхер взять у Мейхера) | 30min | 2026-06-10 09:00 | 2026-06-10 09:30 |  |  | 208.53d | start no earlier than 2026-06-10 09:00 | Некрасов А; Дедов В | 1h |  |
| 3158 | 12.4.15.20 | электроштабелер упаковка | 2h | 2023-12-29 09:00 | 2023-12-29 11:00 |  |  | 846.34d | start no earlier than 2023-12-28 09:00 | ТО | 2h |  |
| 3159 | 12.4.15.21 | электроштабелер навески | 2h | 2023-12-29 09:00 | 2023-12-29 11:00 |  |  | 846.34d | start no earlier than 2023-12-28 09:00 | ТО | 2h |  |
| 3160 | 12.4.15.22 | продувка радиаторов осушителя и компрессора, слив конденсата | 1h | 2026-10-29 09:00 | 2026-10-29 10:00 |  |  | 98.47d | start no earlier than 2026-10-29 08:00 | Макаревич А; Николаев | 2h |  |

| ID | WBS | Task | Duration | Start | Finish | Complete | Remaining | Total slack | Constraint | Resources | Work | Actual work |
| --- | --- | --- | --- | --- | --- | --- | --- | --- | --- | --- | --- | --- |
| 3161 | 12.4.16 | **Квадропак** | 0.12d | 2026-10-07 09:00 | 2026-10-07 10:00 |  |  | 115.47d |  |  | 1h |  |
| 3162 | 12.4.16.1 | Смазка качающихся шарниров подачи пакета и сброса | 1h | 2026-10-07 09:00 | 2026-10-07 10:00 |  |  | 115.47d | start no earlier than 2026-10-07 09:00 | Тимофеев В | 1h |  |
| 3163 | 12.5 | **2 цех** | 780.38d? | 2023-12-28 09:00 A | 2026-12-07 12:00 | 69% | 239.81d? | 67.22d |  |  | 18863.8h | 15343.1h |
| 3164 | 12.5.1 | обдув пыли с вентиляции и балки кровли зона жир + экструдер + упаковка | 3h | 2026-08-20 09:00 A | 2026-08-20 12:00 A | 100% |  |  | start no earlier than 2026-08-20 09:00 | Некрасов А; Тимофеев В | 6h | 6h |
| 3165 | 12.5.2 | **прекондицинер экструдера** | 689.38d? | 2024-04-18 09:00 A | 2026-11-20 12:00 | 89% | 72.86d? | 78.22d |  |  | 38.25h | 31.75h |
| 3166 | 12.5.2.1 | замена заднего подшипника ведомый вал | 8h | 2026-05-26 09:00 A | 2026-05-26 18:00 A | 100% |  |  | start no earlier than 2026-05-26 09:00 | Тимофеев В | 8h | 8h |
| 3167 | 12.5.2.2 | замена подшипников | 1h | 2024-04-18 09:00 A | 2024-04-18 10:00 A | 100% |  |  | start no earlier than 2024-04-18 08:00 | Тимофеев В | 1h | 1h |
| 3168 | 12.5.2.3 | Ревизия масла редуктора | 30min | 2024-04-18 09:00 A | 2024-04-18 09:30 A | 100% |  |  | start no earlier than 2024-04-18 08:00 | Тимофеев В | 0.5h | 0.5h |
| 3169 | 12.5.2.4 | контроль крепления лопаток | 30min | 2026-05-21 09:00 A | 2026-05-21 09:30 A | 100% |  |  | start no earlier than 2026-03-05 09:00 | Тимофеев В | 0.5h | 0.5h |
| 3170 | 12.5.2.5 | шприцевание подшипников | 1h | 2026-05-21 08:00 A | 2026-05-21 10:00 A | 100% |  |  | start no earlier than 2026-05-21 08:00 | Тимофеев В | 1h | 1h |
| 3171 | 12.5.2.6 | Ревизия масла редуктора | 15min | 2026-07-21 09:00 A | 2026-07-21 09:15 A | 100% |  |  | start no earlier than 2026-07-21 09:00 | Труфанов А | 0.25h | 0.25h |
| 3172 | 12.5.2.7 | шприцевание подшипников | 30min | 2026-07-21 09:00 A | 2026-07-21 09:30 A | 100% |  |  | start no earlier than 2026-07-21 09:00 | Труфанов А | 0.5h | 0.5h |
| 3173 | 12.5.2.8 | Осмотр подшипников | 15min | 2026-07-30 09:00 A | 2026-07-30 09:15 A | 100% |  |  | start no earlier than 2026-07-30 09:00 | Тимофеев В | 0.25h | 0.25h |
| 3174 | 12.5.2.9 | Осмотр подшипников | 1d? | 2026-08-06 09:00 A | 2026-08-06 18:00 A | 100% |  |  | start no earlier than 2026-08-06 09:00 | Бундин В | 8h | 8h |
| 3175 | 12.5.2.10 | Осмотр подшипников / смазка / по необходимости замена | 1h | 2026-08-13 09:00 A | 2026-08-13 10:00 A | 100% |  |  | start no earlier than 2026-08-13 09:00 | Некрасов А | 1h | 1h |
| 3176 | 12.5.2.11 | Осмотр подшипников / смазка | 15min | 2026-08-20 09:00 A | 2026-08-20 09:15 A | 100% |  |  | start no earlier than 2026-08-20 09:00 | Некрасов А | 0.25h | 0.25h |
| 3177 | 12.5.2.12 | Замена водяного фильтра на прекондиционере/парогенератор | 15min | 2026-09-03 09:00 A | 2026-09-03 09:15 A | 100% |  |  | start no earlier than 2026-09-03 09:00 | Труфанов А | 0.25h | 0.25h |
| 3178 | 12.5.2.13 | Осмотр подшипников / смазка | 15min | 2026-09-17 09:00 A | 2026-09-17 09:15 A | 100% |  |  | start no earlier than 2026-09-17 09:00 | Некрасов А | 0.25h | 0.25h |
| 3179 | 12.5.2.14 | Осмотр подшипников / смазка | 15min | 2026-09-24 09:00 A | 2026-09-24 09:15 A | 100% |  |  | start no earlier than 2026-09-24 09:00 | Некрасов А | 0.25h | 0.25h |
| 3180 | 12.5.2.15 | Ревизия масла редуктора | 15min | 2026-09-24 09:00 A | 2026-09-24 09:15 A | 100% |  |  | start no earlier than 2026-09-24 09:00 | Некрасов А | 0.25h | 0.25h |
| 3181 | 12.5.2.16 | Ревизия масла редуктора/осмотр подшипников/ смазка при необходимости | 15min | 2026-09-29 09:00 A | 2026-09-29 09:15 A | 100% |  |  | start no earlier than 2026-09-29 08:00 | Бундин В | 0.25h | 0.25h |
| 3182 | 12.5.2.17 | Замена редуктора прекондиционера | 4h | 2026-10-30 09:00 A | 2026-10-30 13:00 A | 100% |  |  | start no earlier than 2026-10-30 09:00 | Труфанов А; Некрасов А | 8h | 8h |
| 3183 | 12.5.2.18 | Ревизия масла редуктора/осмотр подшипников/ смазка при необходимости | 15min | 2026-10-15 09:00 A | 2026-10-15 09:15 A | 100% |  |  | start no earlier than 2026-10-15 09:00 | Труфанов А | 0.25h | 0.25h |
| 3184 | 12.5.2.19 | Контроль крепления лопаток | 30min | 2026-10-15 09:00 A | 2026-10-15 09:30 A | 100% |  |  | start no earlier than 2026-10-15 09:00 | Труфанов А | 0.5h | 0.5h |
| 3185 | 12.5.2.20 | Осмотр подшипников | 15min | 2026-10-30 09:00 A | 2026-10-30 09:15 A | 100% |  |  | start no earlier than 2026-10-30 09:00 | Труфанов А; Некрасов А | 0.5h | 0.5h |
| 3186 | 12.5.2.21 | Замена лопаток | 3h | 2026-11-20 09:00 | 2026-11-20 12:00 |  |  | 78.22d | start no earlier than 2026-11-20 09:00 | Макаревич А; Тимофеев В | 6h |  |
| 3187 | 12.5.2.22 | Ревизия масла редуктора/осмотр подшипников/ смазка при необходимости | 15min | 2026-11-20 09:00 | 2026-11-20 09:15 |  |  | 78.56d | start no earlier than 2026-11-20 09:00 | Макаревич А; Тимофеев В | 0.5h |  |

| ID | WBS | Task | Duration | Start | Finish | Complete | Remaining | Total slack | Constraint | Resources | Work | Actual work |
| --- | --- | --- | --- | --- | --- | --- | --- | --- | --- | --- | --- | --- |
| 3188 | 12.5.3 | **парогенератор** | 688.91d | 2024-04-18 10:00 A | 2026-11-20 09:15 | 95% | 35.51d | 78.56d |  |  | 27.75h | 26.5h |
| 3189 | 12.5.3.1 | читска | 1h | 2024-04-18 10:00 A | 2024-04-18 11:00 A | 100% |  |  | start no earlier than 2024-04-18 08:00 | Тимофеев В | 1h | 1h |
| 3190 | 12.5.3.2 | замена гильзы | 1h | 2024-04-18 10:00 A | 2024-04-18 11:00 A | 100% |  |  | start no earlier than 2024-04-18 08:00 | Тимофеев В | 1h | 1h |
| 3191 | 12.5.3.3 | чистка | 2h | 2026-03-05 09:30 A | 2026-03-05 11:30 A | 100% |  |  | start no earlier than 2026-03-04 09:00 | Бундин В | 2h | 2h |
| 3192 | 12.5.3.4 | прорвеп срабатывания защитного клапана | 10min | 2026-03-05 09:30 A | 2026-03-05 09:40 A | 100% |  |  | start no earlier than 2024-10-03 09:00 | Бундин В | 0.17h | 0.17h |
| 3193 | 12.5.3.5 | читска | 1h | 2026-03-19 09:00 A | 2026-03-19 10:00 A | 100% |  |  | start no earlier than 2026-03-19 09:00 | Тимофеев В | 1h | 1h |
| 3194 | 12.5.3.6 | чистка | 1h | 2026-03-12 09:00 A | 2026-03-12 10:00 A | 100% |  |  | start no earlier than 2026-03-12 09:00 | Бундин В; Тимофеев В | 2h | 2h |
| 3195 | 12.5.3.7 | чистка | 1h | 2026-05-14 09:00 A | 2026-05-14 10:00 A | 100% |  |  | start no earlier than 2026-05-14 09:00 | Некрасов А | 1h | 1h |
| 3196 | 12.5.3.8 | чистка | 2h | 2026-07-14 09:00 A | 2026-07-14 11:00 A | 100% |  |  | start no earlier than 2026-07-14 09:00 | Некрасов А | 2h | 2h |
| 3197 | 12.5.3.9 | Чистка | 1h | 2026-07-30 09:00 A | 2026-07-30 10:00 A | 100% |  |  | start no earlier than 2026-07-30 09:00 | Бундин В | 1h | 1h |
| 3198 | 12.5.3.10 | Чистка | 1h | 2026-08-06 09:00 A | 2026-08-06 10:00 A | 100% |  |  | start no earlier than 2026-08-06 09:00 | Тимофеев В | 1h | 1h |
| 3199 | 12.5.3.11 | Чистка | 1h | 2026-08-13 09:00 A | 2026-08-13 10:00 A | 100% |  |  | start no earlier than 2026-08-13 09:00 | Некрасов А | 1h | 1h |
| 3200 | 12.5.3.12 | Чистка | 1h | 2026-08-19 09:00 A | 2026-08-19 10:00 A | 100% |  |  | start no earlier than 2026-08-19 09:00 | Некрасов А | 1h | 1h |
| 3201 | 12.5.3.13 | Чистка | 1h | 2026-09-02 08:00 A | 2026-09-02 10:00 A | 100% |  |  | start no earlier than 2026-09-02 08:00 | Бобренок В | 1h | 1h |
| 3202 | 12.5.3.14 | Убрать грязь с парогенератора, привести в порядок внешний вид, где что отлеплено, прилепить | 20min | 2026-09-03 09:00 A | 2026-09-03 09:20 A | 100% |  |  | start no earlier than 2026-09-03 09:00 | Тимофеев В | 0.33h | 0.33h |
| 3203 | 12.5.3.15 | Чистка | 1h | 2026-09-09 09:00 A | 2026-09-09 10:00 A | 100% |  |  | start no earlier than 2026-09-09 08:00 | Тимофеев В | 1h | 1h |
| 3204 | 12.5.3.16 | Чистка | 1h | 2026-09-17 09:00 A | 2026-09-17 10:00 A | 100% |  |  | start no earlier than 2026-09-17 09:00 | Тимофеев В | 1h | 1h |
| 3205 | 12.5.3.17 | Чистка | 1h | 2026-09-23 09:00 A | 2026-09-23 10:00 A | 100% |  |  | start no earlier than 2026-09-23 09:00 | Дедов В | 1h | 1h |
| 3206 | 12.5.3.18 | Чистка | 1h | 2026-09-29 09:00 A | 2026-09-29 10:00 A | 100% |  |  | start no earlier than 2026-09-29 08:00 |  |  |  |
| 3207 | 12.5.3.19 | Чистка как остановятся, если не получится, передать по смене труфанову | 1h | 2026-10-14 09:00 | 2026-10-14 10:00 |  |  | 110.47d | start no earlier than 2026-10-14 09:00 | Бобренок В | 1h |  |
| 3208 | 12.5.3.20 | Устранить травление пара между сбросником (клапан) и краном | 30min | 2026-10-08 09:00 A | 2026-10-08 09:30 A | 100% |  |  | start no earlier than 2026-10-08 09:00 | Труфанов А; Некрасов А | 1h | 1h |
| 3209 | 12.5.3.21 | Проверить гофротрубу на травление под площадкой, где стоит система из кранов/устранить/заменить | 1h | 2026-10-08 09:00 A | 2026-10-08 10:00 A | 100% |  |  | start no earlier than 2026-10-08 09:00 | Труфанов А; Некрасов А | 2h | 2h |
| 3210 | 12.5.3.22 | Чистка | 1h | 2026-11-05 09:00 A | 2026-11-05 10:00 A | 100% |  |  | start no earlier than 2026-11-05 09:00 | Николаев; Макаревич А | 2h | 2h |
| 3211 | 12.5.3.23 | Смонтировать переключатель на сирену парогенератора вкл, выкл | 1h | 2026-10-30 09:00 A | 2026-10-30 10:00 A | 100% |  |  | start no earlier than 2026-10-30 09:00 | Макаревич А; Николаев | 2h | 2h |
| 3212 | 12.5.3.24 | подписать сирена вкл/выкл | 15min | 2026-11-20 09:00 | 2026-11-20 09:15 |  |  | 78.56d | start no earlier than 2026-11-20 09:00 | Тимофеев В | 0.25h |  |
| 3213 | 12.5.3.25 | Чистка (после остановки) | 1h | 2026-11-19 09:00 A | 2026-11-19 10:00 A | 100% |  |  | start no earlier than 2026-11-19 09:00 | Дедов В | 1h | 1h |

| ID | WBS | Task | Duration | Start | Finish | Predecessors | Complete | Remaining | Total slack | Constraint | Resources | Work | Actual work |
| --- | --- | --- | --- | --- | --- | --- | --- | --- | --- | --- | --- | --- | --- |
| 3214 | 12.5.4 | **привод сетки ПЕЧИ сушки** | 692.25d | 2024-04-18 08:00 A | 2026-11-25 11:00 |  | 89% | 72.87d | 75.34d |  |  | 16h | 14.33h |
| 3215 | 12.5.4.1 | прорверка масла редуктор / натяжка цепи/ ремень | 30min | 2024-04-18 08:00 A | 2024-04-18 09:30 A |  | 100% |  |  | start no earlier than 2024-04-18 08:00 | Тимофеев В | 0.5h | 0.5h |
| 3216 | 12.5.4.2 | прорверка масла редуктор / натяжка цепи/ ремень | 30min | 2026-03-05 09:00 A | 2026-03-05 09:30 A |  | 100% |  |  | start no earlier than 2026-03-05 09:00 | Тимофеев В | 0.5h | 0.5h |
| 3217 | 12.5.4.3 | прорверка масла редуктор / натяжка цепи/ ремень | 30min | 2026-03-19 09:00 A | 2026-03-19 09:30 A |  | 100% |  |  | start no earlier than 2026-03-19 09:00 | Тимофеев В | 0.5h | 0.5h |
| 3218 | 12.5.4.4 | прорверка масла редуктор / натяжка цепи/ ремень/осмотр сетки | 30min | 2026-07-14 09:00 A | 2026-07-14 09:30 A |  | 100% |  |  | start no earlier than 2026-07-14 09:00 | Труфанов А | 0.5h | 0.5h |
| 3219 | 12.5.4.5 | прорверка масла редуктор / натяжка цепи/ ремень/осмотр сетки | 30min | 2026-07-30 09:00 A | 2026-07-30 09:30 A |  | 100% |  |  | start no earlier than 2026-07-30 09:00 | Труфанов А | 0.5h | 0.5h |
| 3220 | 12.5.4.6 | прорверка масла редуктор / натяжка цепи/ ремень/осмотр сетки | 20min | 2026-08-13 09:00 A | 2026-08-13 09:20 A |  | 100% |  |  | start no earlier than 2026-08-13 09:00 | Некрасов А | 0.33h | 0.33h |
| 3221 | 12.5.4.7 | прорверка масла редуктор / натяжка цепи/ ремень/осмотр сетки | 20min | 2026-08-20 09:00 A | 2026-08-20 09:20 A |  | 100% |  |  | start no earlier than 2026-08-20 09:00 | Некрасов А | 0.33h | 0.33h |
| 3222 | 12.5.4.8 | прорверка масла редуктор / натяжка цепи/ ремень/осмотр сетки | 20min | 2026-08-20 09:00 A | 2026-08-20 09:20 A |  | 100% |  |  | start no earlier than 2026-08-20 09:00 | Некрасов А | 0.33h | 0.33h |
| 3223 | 12.5.4.9 | прорверка масла редуктор / натяжка цепи/ ремень/осмотр сетки | 20min | 2026-09-09 09:00 A | 2026-09-09 09:20 A |  | 100% |  |  | start no earlier than 2026-09-09 08:00 | Бобренок В | 0.33h | 0.33h |
| 3224 | 12.5.4.10 | ремонт шестерни привода - наварить | 1h | 2026-09-16 09:00 A | 2026-09-16 10:00 A |  | 100% |  |  | start no earlier than 2026-09-16 09:00 | Бундин В | 1h | 1h |
| 3225 | 12.5.4.11 | смазка цепей пищ смазкой | 1h | 2026-09-16 09:00 A | 2026-09-16 10:00 A |  | 100% |  |  | start no earlier than 2026-09-16 09:00 | Бобренок В | 1h | 1h |
| 3226 | 12.5.4.12 | Снятие шестерен привода (отнести домоводову) | 2h | 2026-09-17 09:00 A | 2026-09-17 11:00 A |  | 100% |  |  | start no earlier than 2026-09-17 09:00 | Труфанов А | 2h | 2h |
| 3227 | 12.5.4.13 | смазка цепей пищ смазкой по графику 3 мес | 1h | 2026-11-25 10:00 | 2026-11-25 11:00 | 3225FS+3mo |  |  | 75.34d | start no earlier than 2026-09-16 09:00 | Бобренок В | 1h |  |
| 3228 | 12.5.4.14 | прорверка масла редуктор / натяжка цепи/ ремень/осмотр сетки | 30min | 2026-10-08 09:00 A | 2026-10-08 09:30 A |  | 100% |  |  | start no earlier than 2026-10-08 09:00 | Дедов В | 0.5h | 0.5h |
| 3229 | 12.5.4.15 | Замена шестерен привода | 2h | 2026-10-15 09:00 A | 2026-10-15 11:00 A |  | 100% |  |  | start no earlier than 2026-10-15 09:00 | Труфанов А; Некрасов А | 4h | 4h |
| 3230 | 12.5.4.16 | Замена шкива на моторе привода печи (шкив на складе) | 1h | 2026-10-30 09:00 A | 2026-10-30 10:00 A |  | 100% |  |  | start no earlier than 2026-10-30 09:00 | Макаревич А; Николаев | 2h | 2h |
| 3231 | 12.5.4.17 | прорверка масла редуктор / натяжка цепи/ ремень/осмотр сетки | 20min | 2026-11-20 09:00 | 2026-11-20 09:20 |  |  |  | 78.55d | start no earlier than 2026-11-20 09:00 | Макаревич А; Тимофеев В | 0.67h |  |
| 3232 | 12.5.5 | **блок тэнов сушки** | 689.12d | 2024-04-18 08:00 A | 2026-11-20 10:00 |  | 91% | 62.65d | 78.47d |  |  | 17h | 15h |
| 3233 | 12.5.5.1 | вскрыть все блоки | 1h | 2024-04-18 08:00 A | 2024-04-18 10:00 A |  | 100% |  |  | start no earlier than 2024-04-18 08:00 | Тимофеев В | 1h | 1h |
| 3234 | 12.5.5.2 | ревизия / замена критичных | 4h | 2024-04-18 09:00 A | 2024-04-18 13:00 A |  | 100% |  |  | start no earlier than 2024-04-18 08:00 | Некрасов А; Черепанов И | 8h | 8h |
| 3235 | 12.5.5.3 | ревизия | 1h | 2026-03-19 09:00 A | 2026-03-19 10:00 A |  | 100% |  |  | start no earlier than 2026-03-19 09:00 | Бундин В | 1h | 1h |
| 3236 | 12.5.5.4 | ревизия | 1h | 2026-05-14 09:00 A | 2026-05-14 10:00 A |  | 100% |  |  | start no earlier than 2026-05-14 09:00 | Труфанов А | 1h | 1h |
| 3237 | 12.5.5.5 | ревизия перемычек | 1h | 2026-08-13 09:00 A | 2026-08-13 10:00 A |  | 100% |  |  | start no earlier than 2026-08-13 09:00 | Некрасов А | 1h | 1h |
| 3238 | 12.5.5.6 | ревизия перемычек | 1h | 2026-10-15 09:00 A | 2026-10-15 10:00 A |  | 100% |  |  | start no earlier than 2026-10-15 09:00 | Дедов В | 1h | 1h |
| 3239 | 12.5.5.7 | ревизия / замена критичных | 1h | 2026-10-30 09:00 A | 2026-10-30 10:00 A |  | 100% |  |  | start no earlier than 2026-10-30 09:00 | Николаев; Макаревич А | 2h | 2h |
| 3240 | 12.5.5.8 | ревизия / замена критичных | 1h | 2026-11-20 09:00 | 2026-11-20 10:00 |  |  |  | 78.47d | start no earlier than 2026-11-20 09:00 | Макаревич А; Тимофеев В | 2h |  |

| ID | WBS | Task | Duration | Start | Finish | Complete | Remaining | Total slack | Constraint | Resources | Work | Actual work |
| --- | --- | --- | --- | --- | --- | --- | --- | --- | --- | --- | --- | --- |
| 3241 | 12.5.6 | **смеситель СМ-1500** | 199.38d | 2026-03-05 09:00 A | 2026-11-20 12:00 | 71% | 56.96d | 78.22d |  |  | 13.67h | 7.67h |
| 3242 | 12.5.6.1 | контроль масла | 15min | 2026-03-05 09:00 A | 2026-03-05 09:15 A | 100% |  |  | start no earlier than 2026-03-05 09:00 | Тимофеев В | 0.25h | 0.25h |
| 3243 | 12.5.6.2 | контроль масла | 15min | 2026-03-05 09:00 A | 2026-03-05 09:15 A | 100% |  |  | start no earlier than 2026-03-05 09:00 | Некрасов А | 0.25h | 0.25h |
| 3244 | 12.5.6.3 | замена сальника | 4h | 2026-04-16 09:00 A | 2026-04-16 13:00 A | 100% |  |  | start no earlier than 2026-04-16 09:00 | Тимофеев В | 4h | 4h |
| 3245 | 12.5.6.4 | контроль масла | 15min | 2026-07-30 09:00 A | 2026-07-30 09:15 A | 100% |  |  | start no earlier than 2026-07-30 09:00 | Тимофеев В | 0.25h | 0.25h |
| 3246 | 12.5.6.5 | ревизия подшипникой красного смесителя, просыпается мука со стороны редуктора | 1h | 2026-08-13 09:00 A | 2026-08-13 10:00 A | 100% |  |  | start no earlier than 2026-08-13 09:00 | Тимофеев В | 1h | 1h |
| 3247 | 12.5.6.6 | ревизия подшипникой красного смесителя, просыпается мука со стороны редуктора | 1h | 2026-08-27 09:00 A | 2026-08-27 10:00 A | 100% |  |  | start no earlier than 2026-08-27 09:00 | Тимофеев В | 1h | 1h |
| 3248 | 12.5.6.7 | контроль масла | 15min | 2026-09-03 09:00 A | 2026-09-03 09:15 A | 100% |  |  | start no earlier than 2026-09-03 09:00 | Тимофеев В | 0.25h | 0.25h |
| 3249 | 12.5.6.8 | контроль масла | 10min | 2026-09-09 09:00 A | 2026-09-09 09:10 A | 100% |  |  | start no earlier than 2026-09-09 08:00 | Бобренок В | 0.17h | 0.17h |
| 3250 | 12.5.6.9 | Осмотр подшипников/контроль масла | 10min | 2026-09-29 09:00 A | 2026-09-29 09:10 A | 100% |  |  | start no earlier than 2026-09-29 09:00 | Бундин В | 0.17h | 0.17h |
| 3251 | 12.5.6.10 | Осмотр подшипников/контроль масла | 10min | 2026-10-30 09:00 A | 2026-10-30 09:10 A | 100% |  |  | start no earlier than 2026-10-30 09:00 | Макаревич А; Николаев | 0.33h | 0.33h |
| 3252 | 12.5.6.11 | Замена сальника/замена редуктора | 3h | 2026-11-20 09:00 | 2026-11-20 12:00 |  |  | 78.22d | start no earlier than 2026-11-20 09:00 | Труфанов А; Некрасов А | 6h |  |
| 3253 | 12.5.7 | **нория 2 выгрузки смесителя** | 199.06d | 2026-03-05 09:00 A | 2026-11-20 09:30 | 96% | 7.33d | 78.53d |  | ТО | 72.58h | 69.67h |
| 3254 | 12.5.7.1 | смазка подшипников | 30min | 2026-03-05 09:00 A | 2026-03-05 09:30 A | 100% |  |  | start no earlier than 2026-03-05 09:00 | Бундин В | 0.5h | 0.5h |
| 3255 | 12.5.7.2 | Осмотр подшипников/смазка по необходимости | 30min | 2026-07-30 09:00 A | 2026-07-30 09:30 A | 100% |  |  | start no earlier than 2026-07-30 09:00 | Бундин В | 0.5h | 0.5h |
| 3256 | 12.5.7.3 | ревизия крепления редуктора | 15min | 2026-03-05 09:00 A | 2026-03-05 09:15 A | 100% |  |  | start no earlier than 2026-03-05 09:00 | Бундин В | 0.25h | 0.25h |
| 3257 | 12.5.7.4 | ревизия ленты, обрезать нитки | 4h | 2026-03-26 09:00 A | 2026-03-26 13:00 A | 100% |  |  | start no earlier than 2026-03-26 09:00 | Тимофеев В | 4h | 4h |
| 3258 | 12.5.7.5 | вскрыть для чистки | 10min | 2026-05-19 09:00 A | 2026-05-19 09:10 A | 100% |  |  | start no earlier than 2026-05-21 09:00 | Труфанов А | 0.17h | 0.17h |
| 3259 | 12.5.7.6 | Вскрыть, осмотреть ленту (держится на одном ковше, закрепили на доп болты) | 30min | 2026-09-03 09:00 A | 2026-09-03 09:30 A | 100% |  |  | start no earlier than 2026-09-03 09:00 | Тимофеев В | 0.5h | 0.5h |
| 3260 | 12.5.7.7 | вскрыть для чистки, осмотреть ленту, закрыить после чистки | 10min | 2026-08-13 09:00 A | 2026-08-13 09:10 A | 100% |  |  | start no earlier than 2026-08-13 09:00 | Труфанов А | 0.17h | 0.17h |
| 3261 | 12.5.7.8 | Ревизия ленты, контроль соединения | 30min | 2026-09-17 09:00 A | 2026-09-17 09:30 A | 100% |  |  | start no earlier than 2026-09-17 09:00 | Тимофеев В | 0.5h | 0.5h |
| 3262 | 12.5.7.9 | ремонт стыка ленты - ревитзия, ремонт продлить | 4h | 2026-09-24 09:00 A | 2026-09-24 13:00 A | 100% |  |  | start no earlier than 2026-09-24 09:00 | Тимофеев В; Бундин В | 8h | 8h |
| 3263 | 12.5.7.10 | Ревизия ленты, контроль соединения | 30min | 2026-10-08 09:00 A | 2026-10-08 09:30 A | 100% |  |  | start no earlier than 2026-10-08 09:00 | Труфанов А; Некрасов А | 1h | 1h |
| 3264 | 12.5.7.11 | Проверка мотор редуктора на верху, почему трясет/устранить | 1h | 2026-10-08 09:00 A | 2026-10-08 10:00 A | 100% |  |  | start no earlier than 2026-10-08 09:00 | Труфанов А; Некрасов А | 2h | 2h |
| 3265 | 12.5.7.12 | Ревизия ленты, контроль соединения | 30min | 2026-10-15 09:00 A | 2026-10-15 09:30 A | 100% |  |  | start no earlier than 2026-10-15 09:00 | Труфанов А; Некрасов А | 1h | 1h |
| 3266 | 12.5.7.13 | Ревизия ленты, контроль соединения | 30min | 2026-10-30 09:00 A | 2026-10-30 09:30 A | 100% |  |  | start no earlier than 2026-10-30 09:00 | Макаревич А; Николаев | 1h | 1h |
| 3267 | 12.5.7.14 | Ревизия ленты, контроль соединения | 30min | 2026-11-20 09:00 | 2026-11-20 09:30 |  |  | 78.53d | start no earlier than 2026-11-20 09:00 | Макаревич А; Тимофеев В | 1h |  |

| ID | WBS | Task | Duration | Start | Finish | Complete | Remaining | Total slack | Constraint | Resources | Work | Actual work |
| --- | --- | --- | --- | --- | --- | --- | --- | --- | --- | --- | --- | --- |
| 3268 | 12.5.8 | **бункер-накопитель с шнековой разкгрузкой синий** | 149.01d | 2026-05-14 09:00 A | 2026-11-20 09:05 | 97% | 4.73d | 78.58d |  |  | 10.67h | 10.17h |
| 3269 | 12.5.8.1 | смазка подшипников, ревизия редуктора (нужно разбирать все для смазки). Задний | 4h | 2026-05-14 09:00 A | 2026-05-14 13:00 A | 100% |  |  | start no earlier than 2026-05-14 09:00 | Тимофеев В | 4h | 4h |
| 3270 | 12.5.8.2 | смазка подшипников, ревизия редуктора (нужно разбирать все для смазки). Передний | 4h | 2026-05-28 09:00 A | 2026-05-28 13:00 A | 100% |  |  | start no earlier than 2026-05-28 09:00 | Бундин В | 4h | 4h |
| 3271 | 12.5.8.3 | Осмотр редуктора со стороны мойки, скрипит | 1h | 2026-08-13 09:00 A | 2026-08-13 10:00 A | 100% |  |  | start no earlier than 2026-08-13 09:00 | Тимофеев В | 1h | 1h |
| 3272 | 12.5.8.4 | Осмотр | 5min | 2026-09-03 09:00 A | 2026-09-03 09:05 A | 100% |  |  | start no earlier than 2026-09-03 09:00 | Тимофеев В | 0.08h | 0.08h |
| 3273 | 12.5.8.5 | перенос датчика / доработать лопатки - что бы останавливался раньше, без спресовывания шнеком | 1h | 2026-09-24 09:00 A | 2026-09-24 10:00 A | 100% |  |  | start no earlier than 2026-09-24 09:00 | Труфанов А | 1h | 1h |
| 3274 | 12.5.8.6 | Осмотр | 5min | 2026-09-24 09:00 A | 2026-09-24 09:05 A | 100% |  |  | start no earlier than 2026-09-24 09:00 | Труфанов А | 0.08h | 0.08h |
| 3275 | 12.5.8.7 | Осмотр | 5min | 2026-10-08 09:00 | 2026-10-08 09:05 |  |  | 114.58d | start no earlier than 2026-10-08 09:00 | Дедов В | 0.08h |  |
| 3276 | 12.5.8.8 | Осмотр | 5min | 2026-10-15 09:00 | 2026-10-15 09:05 |  |  | 109.58d | start no earlier than 2026-10-15 09:00 | Труфанов А | 0.08h |  |
| 3277 | 12.5.8.9 | Осмотр | 5min | 2026-10-30 09:00 | 2026-10-30 09:05 |  |  | 97.58d | start no earlier than 2026-10-30 09:00 | Макаревич А; Николаев | 0.17h |  |
| 3278 | 12.5.8.10 | Осмотр | 5min | 2026-11-20 09:00 | 2026-11-20 09:05 |  |  | 78.58d | start no earlier than 2026-11-20 09:00 | Макаревич А; Тимофеев В | 0.17h |  |
| 3279 | 12.5.9 | **питатель экструдера** | 184.12d | 2026-03-26 09:00 A | 2026-11-20 10:00 | 95% | 8.77d | 78.47d |  |  | 27h | 25h |
| 3280 | 12.5.9.1 | замена сальников питателя, сыпит муку | 4h | 2026-07-22 09:00 A | 2026-07-22 13:00 A | 100% |  |  | start no earlier than 2026-07-22 09:00 | Труфанов А | 4h | 4h |
| 3281 | 12.5.9.2 | ревизия подшипников, редутора, привода. Разборка/сборка (нужно разбирать) | 1h | 2026-03-26 09:00 A | 2026-03-26 10:00 A | 100% |  |  | start no earlier than 2026-03-26 09:00 | Тимофеев В | 1h | 1h |
| 3282 | 12.5.9.3 | ревизия подшипников, редутора, привода. Разборка/сборка (нужно разбирать) | 1h | 2026-08-19 09:00 A | 2026-08-19 10:00 A | 100% |  |  | start no earlier than 2026-08-19 09:00 | Тимофеев В | 1h | 1h |
| 3283 | 12.5.9.4 | замена шетсерен и подшипников узла. Поставили новый комплект | 4h | 2026-04-03 08:00 A | 2026-04-03 13:00 A | 100% |  |  | start no earlier than 2026-04-03 08:00 | Тимофеев В | 4h | 4h |
| 3284 | 12.5.9.5 | ревизия шестерни мал редуктора | 1h | 2026-04-16 09:00 A | 2026-04-16 10:00 A | 100% |  |  | start no earlier than 2026-04-16 09:00 | Тимофеев В | 1h | 1h |
| 3285 | 12.5.9.6 | ревизия шестерни мал редуктора | 2h | 2026-08-13 09:00 A | 2026-08-13 11:00 A | 100% |  |  | start no earlier than 2026-08-13 09:00 | Некрасов А; Зорькин В | 4h | 4h |
| 3286 | 12.5.9.7 | ревизия шестерни мал редуктора | 2h | 2026-08-27 09:00 A | 2026-08-27 11:00 A | 100% |  |  | start no earlier than 2026-08-27 09:00 | Некрасов А; Зорькин В | 4h | 4h |
| 3287 | 12.5.9.8 | ревизия шестерен питателя | 1h | 2026-09-03 09:00 A | 2026-09-03 10:00 A | 100% |  |  | start no earlier than 2026-09-03 09:00 | Некрасов А | 1h | 1h |
| 3288 | 12.5.9.9 | Ревизия шестерен и подшипников | 1h | 2026-09-17 09:00 A | 2026-09-17 10:00 A | 100% |  |  | start no earlier than 2026-09-17 09:00 | Тимофеев В | 1h | 1h |
| 3289 | 12.5.9.10 | Ревизия шестерен и подшипников | 1h | 2026-09-29 09:00 A | 2026-09-29 10:00 A | 100% |  |  | start no earlier than 2026-09-29 09:00 | Бундин В | 1h | 1h |
| 3290 | 12.5.9.11 | Ревизия шестерен и подшипников | 1h | 2026-10-15 09:00 A | 2026-10-15 10:00 A | 100% |  |  | start no earlier than 2026-10-15 09:00 | Труфанов А | 1h | 1h |
| 3291 | 12.5.9.12 | Ревизия шестерен и подшипников | 1h | 2026-10-30 09:00 A | 2026-10-30 10:00 A | 100% |  |  | start no earlier than 2026-10-30 09:00 | Труфанов А; Некрасов А | 2h | 2h |
| 3292 | 12.5.9.13 | Ревизия шестерен и подшипников | 1h | 2026-11-20 09:00 | 2026-11-20 10:00 |  |  | 78.47d | start no earlier than 2026-11-20 09:00 | Макаревич А; Тимофеев В | 2h |  |

| ID | WBS | Task | Duration | Start | Finish | Complete | Remaining | Total slack | Constraint | Resources | Work | Actual work |
| --- | --- | --- | --- | --- | --- | --- | --- | --- | --- | --- | --- | --- |
| 3293 | 12.5.10 | **привод прекондиционера** | 199.02d | 2026-03-05 09:00 A | 2026-11-20 09:10 | 98% | 4.85d | 78.57d |  |  | 11.5h | 11.17h |
| 3294 | 12.5.10.1 | проверка масла | 5min | 2026-03-05 09:00 A | 2026-03-05 09:05 A | 100% |  |  | start no earlier than 2026-03-05 09:00 | Тимофеев В | 0.08h | 0.08h |
| 3295 | 12.5.10.2 | контроль крепления шестерен | 5min | 2026-03-05 09:00 A | 2026-03-05 09:05 A | 100% |  |  | start no earlier than 2026-03-05 09:00 | Тимофеев В | 0.08h | 0.08h |
| 3296 | 12.5.10.3 | ревизия подшипников и стопорных винтов | 30min | 2026-03-05 09:00 A | 2026-03-05 09:30 A | 100% |  |  | start no earlier than 2026-03-05 09:00 | Бундин В | 0.5h | 0.5h |
| 3297 | 12.5.10.4 | Осмотр шестерён(стоит звон), подшипников, сальников | 30min | 2026-09-03 09:00 A | 2026-09-03 09:30 A | 100% |  |  | start no earlier than 2026-09-03 09:00 | Тимофеев В | 0.5h | 0.5h |
| 3298 | 12.5.10.5 | Замена подшипников кореных и передних | 4h | 2026-09-09 09:00 A | 2026-09-09 13:00 A | 100% |  |  | start no earlier than 2026-09-09 08:00 | Труфанов А; Некрасов А | 8h | 8h |
| 3299 | 12.5.10.6 | Осмотр подшипников, муфты, шестерен | 20min | 2026-09-17 09:00 A | 2026-09-17 09:20 A | 100% |  |  | start no earlier than 2026-09-17 09:00 | Некрасов А | 0.33h | 0.33h |
| 3300 | 12.5.10.7 | Осмотр подшипников, муфты, шестерен | 20min | 2026-09-29 09:00 A | 2026-09-29 09:20 A | 100% |  |  | start no earlier than 2026-09-29 08:00 | Бундин В | 0.33h | 0.33h |
| 3301 | 12.5.10.8 | Осмотр подшипников, муфты, шестерен | 10min | 2026-10-08 09:00 A | 2026-10-08 09:10 A | 100% |  |  | start no earlier than 2026-10-08 09:00 | Труфанов А; Некрасов А | 0.33h | 0.33h |
| 3302 | 12.5.10.9 | Поставить защитный кожух | 10min | 2026-10-08 09:00 A | 2026-10-08 09:10 A | 100% |  |  | start no earlier than 2026-10-08 09:00 | Труфанов А; Некрасов А | 0.33h | 0.33h |
| 3303 | 12.5.10.10 | Осмотр подшипников, муфты, шестерен | 20min | 2026-10-15 09:00 A | 2026-10-15 09:20 A | 100% |  |  | start no earlier than 2026-10-15 09:00 | Труфанов А | 0.33h | 0.33h |
| 3304 | 12.5.10.11 | Осмотр подшипников, муфты, шестерен | 10min | 2026-10-30 09:00 A | 2026-10-30 09:10 A | 100% |  |  | start no earlier than 2026-10-30 09:00 | Труфанов А; Некрасов А | 0.33h | 0.33h |
| 3305 | 12.5.10.12 | Осмотр подшипников, муфты, шестерен | 10min | 2026-11-20 09:00 | 2026-11-20 09:10 |  |  | 78.57d | start no earlier than 2026-11-20 09:00 | Макаревич А; Тимофеев В | 0.33h |  |
| 3306 | 12.5.11 | **мотор-редуктор привод шнеков** | 79.02d | 2026-08-20 09:00 A | 2026-11-20 09:10 | 43% | 44.66d | 78.57d |  |  | 4.67h | 2.33h |
| 3307 | 12.5.11.1 | замена масла | 2h | 2026-08-20 09:00 | 2026-08-20 11:00 |  |  | 157.34d | start no earlier than 2026-08-20 09:00 | Тимофеев В | 2h |  |
| 3308 | 12.5.11.2 | Проверка масла (долил уровень) | 10min | 2026-09-03 09:00 A | 2026-09-03 09:10 A | 100% |  |  | start no earlier than 2026-09-03 09:00 | Труфанов А | 0.17h | 0.17h |
| 3309 | 12.5.11.3 | Проверка масла | 10min | 2026-09-09 09:00 A | 2026-09-09 09:10 A | 100% |  |  | start no earlier than 2026-09-09 08:00 | Бобренок В | 0.17h | 0.17h |
| 3310 | 12.5.11.4 | Проверка масла | 10min | 2026-09-17 09:00 A | 2026-09-17 09:10 A | 100% |  |  | start no earlier than 2026-09-17 09:00 | Некрасов А | 0.17h | 0.17h |
| 3311 | 12.5.11.5 | Проверка масла | 10min | 2026-09-24 09:00 A | 2026-09-24 09:10 A | 100% |  |  | start no earlier than 2026-09-24 09:00 | Некрасов А | 0.17h | 0.17h |
| 3312 | 12.5.11.6 | Проверка масла | 10min | 2026-09-29 09:00 A | 2026-09-29 09:10 A | 100% |  |  | start no earlier than 2026-09-29 08:00 | Бундин В | 0.17h | 0.17h |
| 3313 | 12.5.11.7 | Проверка муфту соединенной цепью, есть сильный люфт, при выявлении откланений сообщить/устранить | 30min | 2026-10-08 09:00 A | 2026-10-08 09:30 A | 100% |  |  | start no earlier than 2026-10-08 09:00 | Труфанов А; Некрасов А | 1h | 1h |
| 3314 | 12.5.11.8 | Проверка масла | 10min | 2026-10-08 09:00 A | 2026-10-08 09:10 A | 100% |  |  | start no earlier than 2026-10-08 09:00 | Дедов В | 0.17h | 0.17h |
| 3315 | 12.5.11.9 | Проверка масла | 10min | 2026-10-30 09:00 A | 2026-10-30 09:10 A | 100% |  |  | start no earlier than 2026-10-30 09:00 | Макаревич А; Николаев | 0.33h | 0.33h |
| 3316 | 12.5.11.10 | Проверка масла | 10min | 2026-11-20 09:00 | 2026-11-20 09:10 |  |  | 78.57d | start no earlier than 2026-11-20 09:00 | Макаревич А; Тимофеев В | 0.33h |  |

| ID | WBS | Task | Duration | Start | Finish | Predecessors | Complete | Remaining | Total slack | Constraint | Resources | Work | Actual work |
| --- | --- | --- | --- | --- | --- | --- | --- | --- | --- | --- | --- | --- | --- |
| 3317 | 12.5.12 | **редуктор шнеков экструдера - проверка масла** | 472.03d | 2025-02-17 09:00 A | 2026-11-20 09:15 |  | 96% | 17.93d | 78.56d |  |  | 7.08h | 6.58h |
| 3318 | 12.5.12.1 | чистка фильтра редуктора | 15min | 2026-03-05 09:00 A | 2026-03-05 09:15 A |  | 100% |  |  | start no earlier than 2026-03-05 09:00 | Тимофеев В | 0.25h | 0.25h |
| 3319 | 12.5.12.2 | контоль цепи муфты привода | 5min | 2026-03-05 09:15 A | 2026-03-05 09:20 A | 3318, 3320, 3321, 3323, 3327, 3328 | 100% |  |  | start no earlier than 2026-03-04 08:00 | Тимофеев В | 0.08h | 0.08h |
| 3320 | 12.5.12.3 | чистка фильтра редуктора | 15min | 2026-03-19 09:00 A | 2026-03-19 09:15 A |  | 100% |  |  | start no earlier than 2026-03-19 09:00 | Тимофеев В | 0.25h | 0.25h |
| 3321 | 12.5.12.4 | чистка фильтра редуктора | 15min | 2026-06-18 09:00 A | 2026-06-18 09:15 A |  | 100% |  |  | start no earlier than 2026-06-18 09:00 | Тимофеев В | 0.25h | 0.25h |
| 3322 | 12.5.12.5 | чистка фильтра редуктора | 30min | 2026-08-06 08:00 A | 2026-08-06 09:30 A |  | 100% |  |  | start no earlier than 2026-08-06 08:00 | Тимофеев В | 0.5h | 0.5h |
| 3323 | 12.5.12.6 | чистка фильтра редуктора | 15min | 2026-07-14 09:00 A | 2026-07-14 09:15 A |  | 100% |  |  | start no earlier than 2026-07-14 09:00 | Бундин В | 0.25h | 0.25h |
| 3324 | 12.5.12.7 | тэны и термпоры шнеков | 2h | 2025-02-17 09:00 A | 2025-02-17 11:00 A |  | 100% |  |  | start no earlier than 2025-02-17 09:00 | Дедов В | 2h | 2h |
| 3325 | 12.5.12.8 | проверка масла | 5min | 2026-08-06 09:00 A | 2026-08-06 09:05 A |  | 100% |  |  | start no earlier than 2026-08-06 09:00 | Тимофеев В | 0.08h | 0.08h |
| 3326 | 12.5.12.9 | Проверка масла | 10min | 2026-07-30 09:00 A | 2026-07-30 09:10 A |  | 100% |  |  | start no earlier than 2026-07-30 09:00 | Бундин В | 0.17h | 0.17h |
| 3327 | 12.5.12.10 | чистка фильтра редуктора | 15min | 2026-08-13 09:00 A | 2026-08-13 09:15 A |  | 100% |  |  | start no earlier than 2026-08-13 09:00 | Тимофеев В | 0.25h | 0.25h |
| 3328 | 12.5.12.11 | чистка фильтра редуктора | 15min | 2026-08-20 09:00 A | 2026-08-20 09:15 A |  | 100% |  |  | start no earlier than 2026-08-20 09:00 | Тимофеев В | 0.25h | 0.25h |
| 3329 | 12.5.12.12 | Чистка фильтра | 15min | 2026-09-03 09:00 A | 2026-09-03 09:15 A |  | 100% |  |  | start no earlier than 2026-09-03 09:00 | Труфанов А | 0.25h | 0.25h |
| 3330 | 12.5.12.13 | Чистка фильтра | 15min | 2026-09-09 09:00 A | 2026-09-09 09:15 A |  | 100% |  |  | start no earlier than 2026-09-09 08:00 | Бобренок В | 0.25h | 0.25h |
| 3331 | 12.5.12.14 | Проверка масла | 5min | 2026-09-09 09:00 A | 2026-09-09 09:05 A |  | 100% |  |  | start no earlier than 2026-09-09 08:00 | Бобренок В | 0.08h | 0.08h |
| 3332 | 12.5.12.15 | Проверка масла/чистка фильтра | 15min | 2026-09-17 09:00 A | 2026-09-17 09:15 A |  | 100% |  |  | start no earlier than 2026-09-17 09:00 | Некрасов А | 0.25h | 0.25h |
| 3333 | 12.5.12.16 | Чистка фильтра | 15min | 2026-09-24 09:00 A | 2026-09-24 09:15 A |  | 100% |  |  | start no earlier than 2026-09-24 09:00 | Некрасов А | 0.25h | 0.25h |
| 3334 | 12.5.12.17 | Чистка фильтра | 15min | 2026-09-29 09:00 A | 2026-09-29 09:15 A |  | 100% |  |  | start no earlier than 2026-09-29 08:00 | Бундин В | 0.25h | 0.25h |
| 3335 | 12.5.12.18 | Проверка масла | 10min | 2026-10-08 09:00 A | 2026-10-08 09:10 A |  | 100% |  |  | start no earlier than 2026-10-08 09:00 | Дедов В | 0.17h | 0.17h |
| 3336 | 12.5.12.19 | Чистка фильтра | 15min | 2026-10-08 09:00 A | 2026-10-08 09:15 A |  | 100% |  |  | start no earlier than 2026-10-08 09:00 | Дедов В | 0.25h | 0.25h |
| 3337 | 12.5.12.20 | Проверка масла, чистка фильтра | 15min | 2026-10-30 09:00 A | 2026-10-30 09:15 A |  | 100% |  |  | start no earlier than 2026-10-30 09:00 | Макаревич А; Николаев | 0.5h | 0.5h |
| 3338 | 12.5.12.21 | Проверка масла, чистка фильтра | 15min | 2026-11-20 09:00 | 2026-11-20 09:15 |  |  |  | 78.56d | start no earlier than 2026-11-20 09:00 | Макаревич А; Тимофеев В | 0.5h |  |
| 3339 | 12.5.13 | **шкаф управления экструдером** | 199.02d | 2026-03-05 09:00 A | 2026-11-20 09:10 |  | 93% | 14.22d | 78.57d |  |  | 2.67h | 2.33h |
| 3340 | 12.5.13.1 | продувка частотного привода | 10min | 2026-03-05 09:00 A | 2026-03-05 09:10 A |  | 100% |  |  | start no earlier than 2026-03-05 09:00 | Труфанов А | 0.17h | 0.17h |
| 3341 | 12.5.13.2 | продувка частотного привода | 10min | 2026-08-06 09:00 A | 2026-08-06 09:10 A |  | 100% |  |  | start no earlier than 2026-08-06 09:00 | Бундин В | 0.17h | 0.17h |
| 3342 | 12.5.13.3 | уложить и закрепить провода | 5min | 2026-03-05 09:10 A | 2026-03-05 09:15 A | 3340, 3341, 3344, 3345, 3346, 3347 | 100% |  |  | start no earlier than 2026-03-04 08:00 | Труфанов А | 0.08h | 0.08h |
| 3343 | 12.5.13.4 | протяжка контактов | 5min | 2026-03-05 09:15 A | 2026-03-05 09:20 A | 3342 | 100% |  |  | start no earlier than 2026-03-04 08:00 | Труфанов А | 0.08h | 0.08h |
| 3344 | 12.5.13.5 | продувка частотного привода | 10min | 2026-03-19 09:00 A | 2026-03-19 09:10 A |  | 100% |  |  | start no earlier than 2026-03-19 09:00 | Дедов В | 0.17h | 0.17h |
| 3345 | 12.5.13.6 | продувка частотного привода | 10min | 2026-05-14 09:00 A | 2026-05-14 09:10 A |  | 100% |  |  | start no earlier than 2026-05-14 09:00 | Макаревич А | 0.17h | 0.17h |
| 3346 | 12.5.13.7 | продувка частотного привода | 10min | 2026-08-13 09:00 A | 2026-08-13 09:10 A |  | 100% |  |  | start no earlier than 2026-08-13 09:00 | Некрасов А | 0.17h | 0.17h |
| 3347 | 12.5.13.8 | продувка частотного привода | 10min | 2026-08-20 09:00 A | 2026-08-20 09:10 A |  | 100% |  |  | start no earlier than 2026-08-20 09:00 | Дедов В | 0.17h | 0.17h |
| 3348 | 12.5.13.9 | продувка частотного привода | 10min | 2026-09-03 09:00 A | 2026-09-03 09:10 A |  | 100% |  |  | start no earlier than 2026-09-03 09:00 | Труфанов А | 0.17h | 0.17h |
| 3349 | 12.5.13.10 | продувка частотного привода | 10min | 2026-09-17 09:00 A | 2026-09-17 09:10 A |  | 100% |  |  | start no earlier than 2026-09-17 09:00 | Некрасов А | 0.17h | 0.17h |
| 3350 | 12.5.13.11 | продувка частотного привода | 10min | 2026-09-29 09:00 A | 2026-09-29 09:10 A |  | 100% |  |  | start no earlier than 2026-09-29 09:00 | Бундин В | 0.17h | 0.17h |
| 3351 | 12.5.13.12 | продувка частотного привода | 10min | 2026-10-08 09:00 A | 2026-10-08 09:10 A |  | 100% |  |  | start no earlier than 2026-10-08 09:00 | Дедов В | 0.17h | 0.17h |
| 3352 | 12.5.13.13 | продувка частотного привода | 10min | 2026-10-15 09:00 A | 2026-10-15 09:10 A |  | 100% |  |  | start no earlier than 2026-10-15 09:00 | Дедов В | 0.17h | 0.17h |
| 3353 | 12.5.13.14 | продувка частотного привода | 10min | 2026-10-30 09:00 A | 2026-10-30 09:10 A |  | 100% |  |  | start no earlier than 2026-10-30 09:00 | Макаревич А; Николаев | 0.33h | 0.33h |
| 3354 | 12.5.13.15 | продувка частотного привода | 10min | 2026-11-20 09:00 | 2026-11-20 09:10 |  |  |  | 78.57d | start no earlier than 2026-11-20 09:00 | Макаревич А; Тимофеев В | 0.33h |  |

| ID | WBS | Task | Duration | Start | Finish | Complete | Remaining | Total slack | Constraint | Resources | Work | Actual work |
| --- | --- | --- | --- | --- | --- | --- | --- | --- | --- | --- | --- | --- |
| 3355 | 12.5.14 | **пневотранспорт роторный питатель** | 189.02d | 2026-03-19 09:00 A | 2026-11-20 09:10 | 55% | 84.73d | 78.57d |  |  | 7.17h | 2.83h |
| 3356 | 12.5.14.1 | замена на ЗИП / вывод на ремонт промывку | 2h | 2026-06-25 09:00 | 2026-06-25 11:00 |  |  | 197.34d | start no earlier than 2026-06-25 09:00 | Труфанов А; Некрасов А | 4h |  |
| 3357 | 12.5.14.2 | проверка масла - высок температурная смазка | 1h | 2026-03-19 09:00 A | 2026-03-19 10:00 A | 100% |  |  | start no earlier than 2026-03-19 09:00 | Труфанов А | 1h | 1h |
| 3358 | 12.5.14.3 | Ревизия узлов/масла | 30min | 2026-07-30 09:00 A | 2026-07-30 09:30 A | 100% |  |  | start no earlier than 2026-07-30 09:00 | Труфанов А | 0.5h | 0.5h |
| 3359 | 12.5.14.4 | Ревизия узлов/масла (смазку свежую набил) | 20min | 2026-09-03 09:00 A | 2026-09-03 09:20 A | 100% |  |  | start no earlier than 2026-09-03 09:00 | Труфанов А | 0.33h | 0.33h |
| 3360 | 12.5.14.5 | Ревизия узлов/масла. Очистка мотора от пыли | 20min | 2026-09-24 09:00 A | 2026-09-24 09:20 A | 100% |  |  | start no earlier than 2026-09-24 09:00 | Бундин В | 0.33h | 0.33h |
| 3361 | 12.5.14.6 | Ревизия узлов/масла. Очистка мотора от пыли | 20min | 2026-10-15 09:00 A | 2026-10-15 09:20 A | 100% |  |  | start no earlier than 2026-10-15 09:00 | Труфанов А | 0.33h | 0.33h |
| 3362 | 12.5.14.7 | Ревизия узлов/масла. Очистка мотора от пыли | 10min | 2026-10-30 09:00 A | 2026-10-30 09:10 A | 100% |  |  | start no earlier than 2026-10-30 09:00 | Макаревич А; Николаев | 0.33h | 0.33h |
| 3363 | 12.5.14.8 | Ревизия узлов/масла. Очистка мотора от пыли | 10min | 2026-11-20 09:00 | 2026-11-20 09:10 |  |  | 78.57d | start no earlier than 2026-11-20 09:00 | Макаревич А; Тимофеев В | 0.33h |  |
| 3364 | 12.5.15 | **печь - валы этажей, подшипники, цепи** | 189.06d | 2026-03-19 09:00 A | 2026-11-20 09:30 | 94% | 11.94d | 78.53d |  |  | 8.42h | 7.42h |
| 3365 | 12.5.15.1 | осмотр смазка | 30min | 2026-03-19 09:00 A | 2026-03-19 09:30 A | 100% |  |  | start no earlier than 2026-03-19 09:00 | Тимофеев В | 0.5h | 0.5h |
| 3366 | 12.5.15.2 | осмотр смазка сетки | 2h | 2026-05-14 09:00 A | 2026-05-14 11:00 A | 100% |  |  | start no earlier than 2026-05-14 09:00 | Макаревич А | 2h | 2h |
| 3367 | 12.5.15.3 | натяжка цепей | 30min | 2026-08-13 09:00 A | 2026-08-13 09:30 A | 100% |  |  | start no earlier than 2026-08-13 09:00 | Некрасов А | 0.5h | 0.5h |
| 3368 | 12.5.15.4 | натяжка цепей, контроль привода | 30min | 2026-09-03 09:00 A | 2026-09-03 09:30 A | 100% |  |  | start no earlier than 2026-09-03 09:00 | Труфанов А | 0.5h | 0.5h |
| 3369 | 12.5.15.5 | Контроль редуктора, осмотр, проверка масла | 30min | 2026-09-17 09:00 A | 2026-09-17 09:30 A | 100% |  |  | start no earlier than 2026-09-17 09:00 | Труфанов А | 0.5h | 0.5h |
| 3370 | 12.5.15.6 | Контроль редуктора, осмотр, проверка масла | 30min | 2026-09-24 09:00 A | 2026-09-24 09:30 A | 100% |  |  | start no earlier than 2026-09-24 09:00 | Некрасов А | 0.5h | 0.5h |
| 3371 | 12.5.15.7 | Смазка всех цепей (если не смазаны) | 1h | 2026-10-15 09:00 A | 2026-10-15 10:00 A | 100% |  |  | start no earlier than 2026-10-15 09:00 | Бобренок В | 1h | 1h |
| 3372 | 12.5.15.8 | Контроль редуктора, осмотр, проверка масла | 30min | 2026-09-29 09:00 A | 2026-09-29 09:30 A | 100% |  |  | start no earlier than 2026-09-29 08:00 | Бундин В | 0.5h | 0.5h |
| 3373 | 12.5.15.9 | Контроль состояния шестерен привода | 10min | 2026-10-08 09:00 A | 2026-10-08 09:10 A | 100% |  |  | start no earlier than 2026-10-08 09:00 | Дедов В | 0.17h | 0.17h |
| 3374 | 12.5.15.10 | Проверка редуктора и выявление причины его шума и шатания/устранить | 1h | 2026-10-08 09:00 A | 2026-10-08 10:00 A | 100% |  |  | start no earlier than 2026-10-08 09:00 | Дедов В | 1h | 1h |
| 3375 | 12.5.15.11 | Замер диаметра шкива двигателя привода редуктора | 15min | 2026-10-15 09:00 A | 2026-10-15 09:15 A | 100% |  |  | start no earlier than 2026-10-15 09:00 | Труфанов А | 0.25h | 0.25h |
| 3376 | 12.5.15.12 | Контроль редуктора, осмотр, проверка масла | 30min | 2026-11-20 09:00 | 2026-11-20 09:30 |  |  | 78.53d | start no earlier than 2026-11-20 09:00 | Макаревич А; Тимофеев В | 1h |  |
| 3377 | 12.5.16 | **вентиляторы обдува сушки** | 199.12d? | 2026-03-05 09:00 A | 2026-11-20 10:00 | 29% | 141.05d? | 78.47d |  | ТО | 1602h | 15h |
| 3378 | 12.5.16.1 | чистка крыльчатки | 1d? | 2026-03-05 09:00 | 2026-03-05 18:00 |  |  | 276.59d | start no earlier than 2026-03-05 09:00 |  |  |  |
| 3379 | 12.5.16.2 | замена подшипников | 1d? | 2026-03-05 09:00 | 2026-03-05 18:00 |  |  | 276.59d | start no earlier than 2026-03-05 09:00 |  |  |  |
| 3380 | 12.5.16.3 | Осмотр, чистка | 2h | 2026-09-17 09:00 A | 2026-09-17 11:00 A | 100% |  |  | start no earlier than 2026-09-17 09:00 | Бобренок В | 2h | 2h |
| 3381 | 12.5.16.4 | Осмотр, очистка от пыли | 2h | 2026-09-24 09:00 A | 2026-09-24 11:00 A | 100% |  |  | start no earlier than 2026-09-24 09:00 | Некрасов А | 2h | 2h |
| 3382 | 12.5.16.5 | Осмотр, очистка от пыли | 2h | 2026-10-15 09:00 A | 2026-10-15 11:00 A | 100% |  |  | start no earlier than 2026-10-15 09:00 | Дедов В | 2h | 2h |
| 3383 | 12.5.16.6 | Осмотр, очистка от пыли | 1h | 2026-10-30 09:00 A | 2026-10-30 10:00 A | 100% |  |  | start no earlier than 2026-10-30 09:00 | Тимофеев В | 1h | 1h |
| 3384 | 12.5.16.7 | Осмотр, очистка от пыли | 1h | 2026-11-20 09:00 | 2026-11-20 10:00 |  |  | 78.47d | start no earlier than 2026-11-20 09:00 | Тимофеев В; Макаревич А | 2h |  |

| ID | WBS | Task | Duration | Start | Finish | Predecessors | Complete | Remaining | Total slack | Constraint | Resources | Work | Actual work |
| --- | --- | --- | --- | --- | --- | --- | --- | --- | --- | --- | --- | --- | --- |
| 3385 | 12.5.17 | **шкаф управления тэнами сушки главный** | 199.04d | 2026-03-05 09:00 A | 2026-11-20 09:20 |  | 88% | 24.37d | 78.55d |  |  | 8.67h | 7.5h |
| 3386 | 12.5.17.1 | протяжка контактов, продувка шкафа, частотного привода | 10min | 2026-03-05 09:00 A | 2026-03-05 09:10 A |  | 100% |  |  | start no earlier than 2026-03-05 09:00 | Труфанов А | 0.17h | 0.17h |
| 3387 | 12.5.17.2 | протяжка контактов, продувка шкафа, частотного привода | 10min | 2026-07-14 09:00 A | 2026-07-14 09:10 A |  | 100% |  |  | start no earlier than 2026-07-14 09:00 | Некрасов А | 0.17h | 0.17h |
| 3388 | 12.5.17.3 | осмотср замена подгоревших кабелей | 30min | 2026-05-21 09:00 A | 2026-05-21 09:30 A |  | 100% |  |  | start no earlier than 2026-05-21 09:00 | Тимофеев В | 0.5h | 0.5h |
| 3389 | 12.5.17.4 | протяжка контактов, продувка шкафа, частотного привода | 30min | 2026-08-06 09:00 | 2026-08-06 09:30 |  |  |  | 167.53d | start no earlier than 2026-08-06 08:00 | Бундин В | 0.5h |  |
| 3390 | 12.5.17.5 | осмотср замена подгоревших кабелей | 30min | 2026-05-21 09:00 A | 2026-05-21 09:30 A |  | 100% |  |  | start no earlier than 2026-05-21 09:00 | Некрасов А | 0.5h | 0.5h |
| 3391 | 12.5.17.6 | продуть, протяжка контактов | 1h | 2026-05-21 08:00 A | 2026-05-21 10:00 A |  | 100% |  |  | start no earlier than 2026-05-21 08:00 | Тимофеев В | 1h | 1h |
| 3392 | 12.5.17.7 | осмотср замена подгоревших кабелей | 30min | 2026-07-14 09:00 A | 2026-07-14 09:30 A |  | 100% |  |  | start no earlier than 2026-07-14 09:00 | Труфанов А | 0.5h | 0.5h |
| 3393 | 12.5.17.8 | осмотср замена подгоревших кабелей | 1h | 2026-08-13 09:00 A | 2026-08-13 10:00 A |  | 100% |  |  | start no earlier than 2026-08-13 09:00 | Труфанов А | 1h | 1h |
| 3394 | 12.5.17.9 | продувка | 10min | 2026-09-03 09:00 A | 2026-09-03 09:10 A |  | 100% |  |  | start no earlier than 2026-09-03 09:00 | Труфанов А | 0.17h | 0.17h |
| 3395 | 12.5.17.10 | Продувка | 10min | 2026-09-17 09:00 A | 2026-09-17 09:10 A |  | 100% |  |  | start no earlier than 2026-09-17 09:00 | Некрасов А | 0.17h | 0.17h |
| 3396 | 12.5.17.11 | Продувка. Замена подогретых жил | 2h | 2026-09-24 09:00 A | 2026-09-24 11:00 A |  | 100% |  |  | start no earlier than 2026-09-24 09:00 | Труфанов А | 2h | 2h |
| 3397 | 12.5.17.12 | протяжка контактов, продувка шкафа, частотного привода | 10min | 2026-10-30 09:00 | 2026-10-30 09:10 |  |  |  | 97.57d | start no earlier than 2026-10-30 09:00 |  |  |  |
| 3398 | 12.5.17.13 | протяжка контактов, продувка шкафа, частотного привода | 10min | 2026-10-15 09:30 A | 2026-10-15 09:40 A | 3399 | 100% |  |  |  | Дедов В | 0.17h | 0.17h |
| 3399 | 12.5.17.14 | осмотср замена подгоревших кабелей | 30min | 2026-10-15 09:00 A | 2026-10-15 09:30 A |  | 100% |  |  | start no earlier than 2026-10-15 09:00 | Дедов В | 0.5h | 0.5h |
| 3400 | 12.5.17.15 | осмотср замена подгоревших кабелей | 20min | 2026-10-30 09:00 A | 2026-10-30 09:20 A |  | 100% |  |  | start no earlier than 2026-10-30 09:00 | Макаревич А; Николаев | 0.67h | 0.67h |
| 3401 | 12.5.17.16 | осмотср замена подгоревших кабелей | 20min | 2026-11-20 09:00 | 2026-11-20 09:20 |  |  |  | 78.55d | start no earlier than 2026-11-20 09:00 | Макаревич А; Тимофеев В | 0.67h |  |
| 3402 | 12.5.18 | **шкаф управления тэнами твердотельный** | 199.04d | 2026-03-05 09:00 A | 2026-11-20 09:20 |  | 93% | 13.73d | 78.55d |  |  | 5.5h | 4.83h |
| 3403 | 12.5.18.1 | продувка, протяжка | 10min | 2026-03-05 09:00 A | 2026-03-05 09:10 A |  | 100% |  |  | start no earlier than 2026-03-05 09:00 | Труфанов А | 0.17h | 0.17h |
| 3404 | 12.5.18.2 | продувка, протяжка | 10min | 2026-07-14 09:00 A | 2026-07-14 09:10 A |  | 100% |  |  | start no earlier than 2026-07-14 09:00 | Труфанов А | 0.17h | 0.17h |
| 3405 | 12.5.18.3 | продувка, протяжка | 10min | 2026-08-06 09:00 A | 2026-08-06 09:10 A |  | 100% |  |  | start no earlier than 2026-08-06 08:00 | Бундин В | 0.17h | 0.17h |
| 3406 | 12.5.18.4 | замена подгоревших кабелей | 30min | 2026-08-13 09:00 A | 2026-08-13 09:30 A |  | 100% |  |  | start no earlier than 2026-08-13 09:00 | Труфанов А | 0.5h | 0.5h |
| 3407 | 12.5.18.5 | продувка, протяжка | 10min | 2026-08-06 09:00 A | 2026-08-06 09:10 A |  | 100% |  |  | start no earlier than 2026-08-06 08:00 | Труфанов А | 0.17h | 0.17h |
| 3408 | 12.5.18.6 | продувка, протяжка | 10min | 2026-09-03 09:00 A | 2026-09-03 09:10 A |  | 100% |  |  | start no earlier than 2026-09-03 09:00 | Труфанов А | 0.17h | 0.17h |
| 3409 | 12.5.18.7 | Продувка | 10min | 2026-09-17 09:00 A | 2026-09-17 09:10 A |  | 100% |  |  | start no earlier than 2026-09-17 09:00 | Некрасов А | 0.17h | 0.17h |
| 3410 | 12.5.18.8 | Продувка. Замена подогретых жил | 2h | 2026-09-24 09:00 A | 2026-09-24 11:00 A |  | 100% |  |  | start no earlier than 2026-09-24 09:00 | Труфанов А | 2h | 2h |
| 3411 | 12.5.18.9 | Продувка | 10min | 2026-09-29 09:00 A | 2026-09-29 09:10 A |  | 100% |  |  | start no earlier than 2026-09-29 08:00 | Бундин В | 0.17h | 0.17h |
| 3412 | 12.5.18.10 | Продувка. Замена подогретых жил | 30min | 2026-10-15 09:00 A | 2026-10-15 09:30 A |  | 100% |  |  | start no earlier than 2026-10-15 09:00 | Дедов В | 0.5h | 0.5h |
| 3413 | 12.5.18.11 | Продувка. Замена подогретых жил | 20min | 2026-10-30 09:00 A | 2026-10-30 09:20 A |  | 100% |  |  | start no earlier than 2026-10-30 09:00 | Макаревич А; Николаев | 0.67h | 0.67h |
| 3414 | 12.5.18.12 | Продувка. Замена подогретых жил | 20min | 2026-11-20 09:00 | 2026-11-20 09:20 |  |  |  | 78.55d | start no earlier than 2026-11-20 09:00 | Макаревич А; Тимофеев В | 0.67h |  |

| ID | WBS | Task | Type | Duration | Start | Finish | Complete | Remaining | Total slack | Constraint | Resources | Work | Actual work |
| --- | --- | --- | --- | --- | --- | --- | --- | --- | --- | --- | --- | --- | --- |
| 3415 | 12.5.19 | **конвейер №1 с печи в дрожировщик** |  | 199.03d | 2026-03-05 09:00 A | 2026-11-20 09:15 | 93% | 12.98d | 78.56d |  |  | 4.08h | 3.58h |
| 3416 | 12.5.19.1 | ослабить ленту для чистки барабана / натяжка после чистки |  | 30min | 2026-03-05 09:00 A | 2026-03-05 09:30 A | 100% |  |  | start no earlier than 2026-03-05 09:00 | Тимофеев В | 0.5h | 0.5h |
| 3417 | 12.5.19.2 | ревизия люфтов, фиксации смазки подшипников |  | 30min | 2026-03-05 09:00 A | 2026-03-05 09:30 A | 100% |  |  | start no earlier than 2026-03-05 09:00 | Тимофеев В | 0.5h | 0.5h |
| 3418 | 12.5.19.3 | ослабить ленту для чистки барабана / натяжка после чистки |  | 10min | 2026-03-12 09:00 A | 2026-03-12 09:10 A | 100% |  |  | start no earlier than 2026-03-12 09:00 | Тимофеев В | 0.17h | 0.17h |
| 3419 | 12.5.19.4 | чистка ленты контроль операторов, если нужно ослаить |  | 15min | 2026-08-13 09:00 A | 2026-08-13 09:15 A | 100% |  |  | start no earlier than 2026-08-13 09:00 | Тимофеев В | 0.25h | 0.25h |
| 3420 | 12.5.19.5 | ревизия люфтов, фиксации смазки подшипников |  | 30min | 2026-09-03 09:00 A | 2026-09-03 09:30 A | 100% |  |  | start no earlier than 2026-09-03 09:00 | Тимофеев В | 0.5h | 0.5h |
| 3421 | 12.5.19.6 | ослабить ленту для чистки барабана / натяжка после чистки |  | 10min | 2026-09-03 09:00 A | 2026-09-03 09:10 A | 100% |  |  | start no earlier than 2026-09-03 09:00 | Тимофеев В | 0.17h | 0.17h |
| 3422 | 12.5.19.7 | ревизия люфтов, фиксации смазки подшипников |  | 30min | 2026-09-17 09:00 A | 2026-09-17 09:30 A | 100% |  |  | start no earlier than 2026-09-17 09:00 | Тимофеев В | 0.5h | 0.5h |
| 3423 | 12.5.19.8 | очистка валов и ленты / контроль крепления редуктора / состояния подшипника |  | 30min | 2026-09-24 09:00 A | 2026-09-24 09:30 A | 100% |  |  | start no earlier than 2026-09-24 09:00 | Тимофеев В | 0.5h | 0.5h |
| 3424 | 12.5.19.9 | очистка валов и ленты / контроль крепления редуктора / состояния подшипника |  | 30min | 2026-10-30 09:00 A | 2026-10-30 09:30 A | 100% |  |  | start no earlier than 2026-10-30 09:00 | Тимофеев В | 0.5h | 0.5h |
| 3425 | 12.5.19.10 | очистка валов и ленты / контроль крепления редуктора / состояния подшипника |  | 15min | 2026-11-20 09:00 | 2026-11-20 09:15 |  |  | 78.56d | start no earlier than 2026-11-20 09:00 | Труфанов А; Некрасов А | 0.5h |  |
| 3426 | 12.5.20 | **барабан смесительный дрожировка** |  | 769.12d | 2023-12-28 09:00 A | 2026-11-20 10:00 | 79% | 158.84d | 78.47d |  | ТО | 130.5h | 102.62h |
| 3427 | 12.5.20.1 | ревизия состяния валов, подшипников |  | 2h | 2026-02-25 09:00 A | 2026-02-25 11:00 A | 100% |  |  | start no earlier than 2026-02-25 09:00 | Тимофеев В | 2h | 2h |
| 3428 | 12.5.20.2 | ремонт вала временный. 11 час |  | 2h | 2026-02-25 09:00 A | 2026-02-25 11:00 A | 100% |  |  | start no earlier than 2026-02-25 09:00 | Тимофеев В | 2h | 2h |
| 3429 | 12.5.20.3 | замена подшипников мотора привода |  | 2h | 2026-02-25 09:00 A | 2026-02-25 11:00 A | 100% |  |  | start no earlier than 2026-02-25 09:00 | Тимофеев В | 2h | 2h |
| 3430 | 12.5.20.4 | заменаить вал дрожировки по стрелкам на 11час / после прихода с ремонта |  | 2h | 2026-04-30 09:00 A | 2026-04-30 11:00 A | 100% |  |  | start no earlier than 2026-04-30 09:00 | Тимофеев В | 2h | 2h |
| 3431 | 12.5.20.5 | насос подачи жира и смесительный узел, баки подогрева |  | 2h | 2023-12-28 09:00 | 2023-12-28 11:00 |  |  | 847.34d | start no earlier than 2023-12-28 09:00 | ТО | 2h |  |
| 3432 | 12.5.20.6 | Осмотр подшипников редукторов |  | 20min | 2026-07-30 09:00 A | 2026-07-30 09:20 A | 100% |  |  | start no earlier than 2026-07-30 09:00 | Труфанов А | 0.33h | 0.33h |
| 3433 | 12.5.20.7 | Осмотр подшипников редукторов |  | 15min | 2026-08-13 09:00 A | 2026-08-13 09:15 A | 100% |  |  | start no earlier than 2026-08-13 09:00 | Тимофеев В | 0.25h | 0.25h |
| 3434 | 12.5.20.8 | Осмотр подшипников редукторов |  | 15min | 2026-09-03 09:00 A | 2026-09-03 09:15 A | 100% |  |  | start no earlier than 2026-09-03 09:00 | Тимофеев В | 0.25h | 0.25h |
| 3435 | 12.5.20.9 | Осмотр соединений фитингов, трехходового крана бежит/не бежит |  | 10min | 2026-09-03 09:00 A | 2026-09-03 09:10 A | 100% |  |  | start no earlier than 2026-09-03 09:00 | Тимофеев В | 0.17h | 0.17h |
| 3436 | 12.5.20.10 | Осмотр соединений фитингов, трехходового крана бежит/не бежит |  | 10min | 2026-09-17 09:00 A | 2026-09-17 09:10 A | 100% |  |  | start no earlier than 2026-09-17 09:00 | Тимофеев В | 0.17h | 0.17h |
| 3437 | 12.5.20.11 | Осмотр соединений фитингов, трехходового крана бежит/не бежит |  | 10min | 2026-09-18 09:00 A | 2026-09-18 09:10 A | 100% |  |  | start no earlier than 2026-09-18 09:00 | Тимофеев В | 0.17h | 0.17h |
| 3438 | 12.5.20.12 | Осмотр подшипников редукторов |  | 15min | 2026-10-08 09:00 A | 2026-10-08 09:15 A | 100% |  |  | start no earlier than 2026-10-08 09:00 | Тимофеев В | 0.25h | 0.25h |
| 3439 | 12.5.20.13 | Осмотр соединений фитингов, трехходового крана бежит/не бежит |  | 10min | 2026-10-08 09:00 A | 2026-10-08 09:10 A | 100% |  |  | start no earlier than 2026-10-08 09:00 | Тимофеев В | 0.17h | 0.17h |
| 3440 | 12.5.20.14 | Осмотр соединений фитингов, трехходового крана бежит/не бежит |  | 15min | 2026-10-15 09:00 A | 2026-10-15 09:15 A | 100% |  |  | start no earlier than 2026-10-15 09:00 | Дедов В | 0.25h | 0.25h |
| 3441 | 12.5.20.15 | Осмотр соединений фитингов, трехходового крана бежит/не бежит |  | 10min | 2026-10-30 09:00 A | 2026-10-30 09:10 A | 100% |  |  | start no earlier than 2026-10-30 09:00 | Тимофеев В | 0.17h | 0.17h |
| 3442 | 12.5.20.16 | Замена фитингов на новые под новый шланг |  | 2h | 2026-10-30 09:00 A | 2026-10-30 11:00 A | 100% |  |  | start no earlier than 2026-10-30 09:00 | Тимофеев В | 2h | 2h |
| 3443 | 12.5.20.17 | Осмотр соединений фитингов, трехходового крана бежит/не бежит | manual | 10min | 2026-11-20 09:00 | 2026-11-20 09:10 |  |  |  |  | Труфанов А; Некрасов А | 0.33h |  |
| 3444 | 12.5.20.18 | Замена фитингов на новые под новый шланг |  | 1h | 2026-11-20 09:00 | 2026-11-20 10:00 |  |  | 78.47d | start no earlier than 2026-11-20 09:00 | Труфанов А; Некрасов А | 2h |  |

| ID | WBS | Task | Duration | Start | Finish | Complete | Remaining | Total slack | Constraint | Resources | Work | Actual work |
| --- | --- | --- | --- | --- | --- | --- | --- | --- | --- | --- | --- | --- |
| 3445 | 12.5.21 | **Узел подачи гидролизата** | 106.02d | 2026-07-14 09:00 A | 2026-11-20 09:10 | 93% | 7.31d | 78.57d |  |  | 5h | 4.5h |
| 3446 | 12.5.21.1 | Дефектовка/ выяснить причу почему еле крутит/ устранить | 2h | 2026-07-14 09:00 A | 2026-07-14 11:00 A | 100% |  |  | start no earlier than 2026-07-14 09:00 | Бундин В | 2h | 2h |
| 3447 | 12.5.21.2 | осмотр цепи, редуктора, протяжка | 20min | 2026-08-13 09:00 A | 2026-08-13 09:20 A | 100% |  |  | start no earlier than 2026-08-13 09:00 | Тимофеев В | 0.33h | 0.33h |
| 3448 | 12.5.21.3 | Осмотр/ревизия насоса гидролизата, проверка всех соединений | 10min | 2026-09-03 09:00 A | 2026-09-03 09:10 A | 100% |  |  | start no earlier than 2026-09-03 09:00 | Тимофеев В | 0.17h | 0.17h |
| 3449 | 12.5.21.4 | Осмотр/ревизия насоса гидролизата, проверка всех соединений | 10min | 2026-09-17 09:00 A | 2026-09-17 09:10 A | 100% |  |  | start no earlier than 2026-09-17 09:00 | Тимофеев В | 0.17h | 0.17h |
| 3450 | 12.5.21.5 | перенос розеток со стола на раму | 1h | 2026-09-17 09:00 A | 2026-09-17 10:00 A | 100% |  |  | start no earlier than 2026-09-17 09:00 | Тимофеев В | 1h | 1h |
| 3451 | 12.5.21.6 | Осмотр/ревизия насоса гидролизата, проверка всех соединений | 10min | 2026-10-08 09:00 A | 2026-10-08 09:10 A | 100% |  |  | start no earlier than 2026-10-08 09:00 | Тимофеев В | 0.17h | 0.17h |
| 3452 | 12.5.21.7 | Осмотр/ревизия насоса гидролизата, проверка всех соединений | 10min | 2026-10-15 09:00 A | 2026-10-15 09:10 A | 100% |  |  | start no earlier than 2026-10-15 09:00 | Дедов В | 0.17h | 0.17h |
| 3453 | 12.5.21.8 | Вернуть ограничение частоты на 70 герц и заблокировать настройки частотника, чтоб не могли менять | 20min | 2026-10-15 09:00 A | 2026-10-15 09:20 A | 100% |  |  | start no earlier than 2026-10-15 09:00 | Дедов В | 0.33h | 0.33h |
| 3454 | 12.5.21.9 | Осмотр/ревизия насоса гидролизата, проверка всех соединений | 10min | 2026-10-30 09:00 A | 2026-10-30 09:10 A | 100% |  |  | start no earlier than 2026-10-30 09:00 | Тимофеев В | 0.17h | 0.17h |
| 3455 | 12.5.21.10 | Осмотр/ревизия насоса гидролизата, проверка всех соединений | 10min | 2026-11-20 09:00 | 2026-11-20 09:10 |  |  | 78.57d | start no earlier than 2026-11-20 09:00 | Труфанов А; Некрасов А | 0.33h |  |
| 3456 | 12.5.21.11 | Проверка частотника, какая максимальная герцовка стоит | 10min | 2026-11-20 09:00 | 2026-11-20 09:10 |  |  | 78.57d | start no earlier than 2026-11-20 09:00 | Труфанов А | 0.17h |  |
| 3457 | 12.5.22 | **конвейер №2 с дрожировки в охладитель** | 199.06d | 2026-03-05 09:00 A | 2026-11-20 09:30 | 88% | 23.89d | 78.53d |  |  | 4.67h | 3.67h |
| 3458 | 12.5.22.1 | ослабить ленту для чистки барабана / натяжка после чистки | 30min | 2026-03-05 09:00 A | 2026-03-05 09:30 A | 100% |  |  | start no earlier than 2026-03-05 09:00 | Тимофеев В | 0.5h | 0.5h |
| 3459 | 12.5.22.2 | ревизия люфтов, фиксации смазки подшипников | 30min | 2026-03-05 09:00 A | 2026-03-05 09:30 A | 100% |  |  | start no earlier than 2026-03-05 09:00 | Тимофеев В | 0.5h | 0.5h |
| 3460 | 12.5.22.3 | ослабить ленту для чистки барабана / натяжка после чистки | 10min | 2026-03-12 09:00 A | 2026-03-12 09:10 A | 100% |  |  | start no earlier than 2026-03-12 09:00 | Тимофеев В | 0.17h | 0.17h |
| 3461 | 12.5.22.4 | чистка ленты контроль операторов, если нужно ослаить | 15min | 2026-08-13 09:00 A | 2026-08-13 09:15 A | 100% |  |  | start no earlier than 2026-08-13 09:00 | Тимофеев В | 0.25h | 0.25h |
| 3462 | 12.5.22.5 | чистка ленты контроль операторов, если нужно ослаить | 15min | 2026-08-13 09:00 A | 2026-08-13 09:15 A | 100% |  |  | start no earlier than 2026-08-13 09:00 | Тимофеев В | 0.25h | 0.25h |
| 3463 | 12.5.22.6 | ослабить ленту для чистки барабана / натяжка после чистки | 30min | 2026-09-03 09:00 A | 2026-09-03 09:30 A | 100% |  |  | start no earlier than 2026-09-03 09:00 | Тимофеев В | 0.5h | 0.5h |
| 3464 | 12.5.22.7 | ревизия люфтов, фиксации смазки подшипников | 30min | 2026-09-17 09:00 A | 2026-09-17 09:30 A | 100% |  |  | start no earlier than 2026-09-17 09:00 | Тимофеев В | 0.5h | 0.5h |
| 3465 | 12.5.22.8 | ревизия люфтов, фиксации смазки подшипников | 30min | 2026-09-24 09:00 A | 2026-09-24 09:30 A | 100% |  |  | start no earlier than 2026-09-24 09:00 | Тимофеев В | 0.5h | 0.5h |
| 3466 | 12.5.22.9 | ревизия люфтов, фиксации смазки подшипников | 30min | 2026-10-30 09:00 A | 2026-10-30 09:30 A | 100% |  |  | start no earlier than 2026-10-30 09:00 | Тимофеев В | 0.5h | 0.5h |
| 3467 | 12.5.22.10 | ревизия люфтов, фиксации смазки подшипников | 30min | 2026-11-20 09:00 | 2026-11-20 09:30 |  |  | 78.53d | start no earlier than 2026-11-20 09:00 | Труфанов А; Некрасов А | 1h |  |
| 3468 | 12.5.23 | **охладитель сеточный** | 700.38d? | 2024-04-18 09:00 A | 2026-12-07 12:00 | 60% | 279.32d? | 67.22d |  |  | 23h | 19.83h |
| 3469 | 12.5.23.1 | ревизия осей сетки, замена шплинтов | 2h | 2024-04-18 09:00 A | 2024-04-18 11:00 A | 100% |  |  | start no earlier than 2024-04-18 08:00 | Некрасов А; Черепанов И | 4h | 4h |
| 3470 | 12.5.23.2 | ревизия привода - масло, ремень (не проверено масло) | 10min | 2026-03-19 09:00 A | 2026-03-19 09:10 A | 100% |  |  | start no earlier than 2026-03-05 09:00 | Тимофеев В | 0.17h | 0.17h |
| 3471 | 12.5.23.3 | ревизия привода - масло, ремень (не проверено масло) | 10min | 2026-07-14 09:00 | 2026-07-14 09:10 |  |  | 184.57d | start no earlier than 2026-07-14 09:00 | Некрасов А | 0.17h |  |
| 3472 | 12.5.23.4 | ревизия состояния сетки | 2h | 2026-07-14 09:00 A | 2026-07-14 11:00 A | 100% |  |  | start no earlier than 2026-07-14 08:00 | Некрасов А | 2h | 2h |
| 3473 | 12.5.23.5 | ревизия состояния сетки | 1h | 2026-07-30 09:00 A | 2026-07-30 10:00 A | 100% |  |  | start no earlier than 2026-07-30 09:00 | Бундин В | 1h | 1h |
| 3474 | 12.5.23.6 | ревизия состояния сетки | 1d? | 2026-08-20 09:00 | 2026-08-20 18:00 |  |  | 156.59d | start no earlier than 2026-08-20 09:00 |  |  |  |
| 3475 | 12.5.23.7 | контроль натяжки цепей | 20min | 2026-03-05 09:00 A | 2026-03-05 09:20 A | 100% |  |  | start no earlier than 2026-03-05 09:00 | Бундин В | 0.33h | 0.33h |
| 3476 | 12.5.23.8 | текущий ремонт силиконовых уплотнений | 30min | 2026-03-05 09:00 A | 2026-03-05 09:30 A | 100% |  |  | start no earlier than 2026-03-05 09:00 | Бундин В | 0.5h | 0.5h |
| 3477 | 12.5.23.9 | осмотр ремней, натяжка цепей, ремонт силиконовых отбортовок | 1h | 2026-05-14 09:00 A | 2026-05-14 10:00 A | 100% |  |  | start no earlier than 2026-05-14 09:00 | Макаревич А | 1h | 1h |
| 3478 | 12.5.23.10 | осмотр ремней, натяжка цепей, ремонт силиконовых отбортовок | 1h | 2026-07-14 09:00 A | 2026-07-14 10:00 A | 100% |  |  | start no earlier than 2026-07-14 09:00 | Некрасов А | 1h | 1h |
| 3479 | 12.5.23.11 | осмотр ремней, натяжка цепей, ремонт силиконовых отбортовок | 1h | 2026-07-30 09:00 A | 2026-07-30 10:00 A | 100% |  |  | start no earlier than 2026-07-30 09:00 | Бундин В | 1h | 1h |
| 3480 | 12.5.23.12 | осмотр ремней, натяжка цепей, ремонт силиконовых отбортовок | 1h | 2026-08-20 09:00 A | 2026-08-20 10:00 A | 100% |  |  | start no earlier than 2026-08-20 09:00 | Труфанов А; Некрасов А | 2h | 2h |
| 3481 | 12.5.23.13 | осмотр ремней, натяжка цепей, ремонт силиконовых отбортовок | 1h | 2026-08-20 09:00 A | 2026-08-20 10:00 A | 100% |  |  | start no earlier than 2026-08-20 09:00 | Дедов В | 1h | 1h |
| 3482 | 12.5.23.14 | Ревизия сетки, контроль роспуска, подогнуть, где что можно, что бы не зацепилось | 1h | 2026-09-24 09:00 A | 2026-09-24 10:00 A | 100% |  |  | start no earlier than 2026-09-24 09:00 | Труфанов А | 1h | 1h |
| 3483 | 12.5.23.15 | Смазка подшипников привод охладителя | 30min | 2026-09-24 09:00 A | 2026-09-24 09:30 A | 100% |  |  | start no earlier than 2026-09-24 09:00 | Труфанов А | 0.5h | 0.5h |
| 3484 | 12.5.23.16 | Смазка всех цепей | 2h | 2026-09-24 09:00 A | 2026-09-24 11:00 A | 100% |  |  | start no earlier than 2026-09-24 09:00 | Труфанов А | 2h | 2h |
| 3485 | 12.5.23.17 | Ремонт уголка на охладителе, позвонить мне, перешлю видео | 30min | 2026-09-29 09:00 A | 2026-09-29 09:30 A | 100% |  |  | start no earlier than 2026-09-29 08:00 | Бундин В | 0.5h | 0.5h |
| 3486 | 12.5.23.18 | ревизия состояния сетки/контроль натяжки цепей, ревизия сетки | 1h | 2026-10-30 09:00 A | 2026-10-30 10:00 A | 100% |  |  | start no earlier than 2026-10-30 09:00 | Тимофеев В | 1h | 1h |
| 3487 | 12.5.23.19 | Смазка подшипников привода при необходимости | 30min | 2026-10-30 09:00 A | 2026-10-30 09:30 A | 100% |  |  | start no earlier than 2026-10-30 09:00 | Тимофеев В | 0.5h | 0.5h |
| 3488 | 12.5.23.20 | заявка на тавотницы 90 | 20min | 2026-10-30 09:00 A | 2026-10-30 09:20 A | 100% |  |  | start no earlier than 2026-10-30 08:00 | Зорькин В | 0.33h | 0.33h |
| 3489 | 12.5.23.21 | замена тавотниц которые требуют ослабление сетки для доступа | 3h | 2026-12-07 09:00 | 2026-12-07 12:00 |  |  | 67.22d | start no earlier than 2026-12-07 09:00 | Тимофеев В | 3h |  |

| ID | WBS | Task | Duration | Start | Finish | Predecessors | Complete | Remaining | Total slack | Constraint | Resources | Work | Actual work |
| --- | --- | --- | --- | --- | --- | --- | --- | --- | --- | --- | --- | --- | --- |
| 3490 | 12.5.24 | **конвейер 3 с охладителя в упаковку** | 84.03d | 2026-08-12 09:00 A | 2026-11-19 09:15 |  | 99% | 0d | 0d |  | ТО | 338.25h | 98.19h |
| 3491 | 12.5.24.1 | ослабить ленту для чистки барабана / натяжка после чистки | 15min | 2026-08-12 09:00 A | 2026-08-12 09:15 A |  | 100% |  |  | start no earlier than 2026-08-12 09:00 | Тимофеев В | 0.25h | 0.25h |
| 3492 | 12.5.24.2 | ревизия люфтов, фиксации, смазки подшипников | 15min | 2026-08-12 09:00 A | 2026-08-12 09:15 A |  | 100% |  |  | start no earlier than 2026-08-12 09:00 | Тимофеев В | 0.25h | 0.25h |
| 3493 | 12.5.24.3 | ослабить ленту для чистки барабана / натяжка после чистки | 15min | 2026-09-03 09:00 A | 2026-09-03 09:15 A |  | 100% |  |  | start no earlier than 2026-09-03 09:00 | Макаревич А | 0.25h | 0.25h |
| 3494 | 12.5.24.4 | ревизия люфтов, фиксации, смазки подшипников | 15min | 2026-09-17 09:00 A | 2026-09-17 09:15 A |  | 100% |  |  | start no earlier than 2026-09-17 09:00 | Некрасов А | 0.25h | 0.25h |
| 3495 | 12.5.24.5 | ревизия люфтов, фиксации, смазки подшипников | 15min | 2026-10-01 09:00 A | 2026-10-01 09:15 A |  | 100% |  |  | start no earlier than 2026-10-01 09:00 | Некрасов А | 0.25h | 0.25h |
| 3496 | 12.5.24.6 | ревизия люфтов, фиксации, смазки подшипников | 15min | 2026-10-15 09:00 A | 2026-10-15 09:15 A |  | 100% |  |  | start no earlier than 2026-10-15 09:00 |  |  |  |
| 3497 | 12.5.24.7 | ревизия люфтов, фиксации, смазки подшипников | 15min | 2026-10-30 09:00 A | 2026-10-30 09:15 A |  | 100% |  |  | start no earlier than 2026-10-30 09:00 | Тимофеев В | 0.25h | 0.25h |
| 3498 | 12.5.24.8 | ревизия люфтов, фиксации, смазки подшипников | 15min | 2026-11-19 09:00 A | 2026-11-19 09:15 A |  | 100% |  |  | start no earlier than 2026-11-19 08:00 | Труфанов А; Некрасов А | 0.5h | 0.5h |
| 3499 | 12.5.25 | **упаковка** | 769.06d | 2023-12-28 09:00 A | 2026-11-20 09:30 |  | 96% | 28.48d | 78.53d |  | ТО | 5102h | 4912.56h |
| 3500 | 12.5.25.1 | НОТИС 1 | 2h | 2023-12-28 09:00 A | 2023-12-28 11:00 A |  | 100% |  |  | start no earlier than 2023-12-28 09:00 | ТО | 2h | 2h |
| 3501 | 12.5.25.2 | НОТИС 2 | 2h | 2023-12-28 09:00 A | 2023-12-28 11:00 A |  | 100% |  |  | start no earlier than 2023-12-28 09:00 | ТО | 2h | 2h |
| 3502 | 12.5.25.3 | запайщик 1 | 2h | 2026-06-18 09:00 A | 2026-06-18 11:00 A |  | 100% |  |  | start no earlier than 2026-06-18 09:00 | Труфанов А | 2h | 2h |
| 3503 | 12.5.25.4 | запайщик 2 | 2h | 2026-06-18 09:00 A | 2026-06-18 11:00 A |  | 100% |  |  | start no earlier than 2026-06-18 09:00 | Труфанов А | 2h | 2h |
| 3504 | 12.5.25.5 | запайщик 1 проверка перемычек/тефлона замена при необходимости | 2h | 2026-09-03 09:00 A | 2026-09-03 11:00 A |  | 100% |  |  | start no earlier than 2026-09-03 09:00 | Макаревич А | 2h | 2h |
| 3505 | 12.5.25.6 | запайщик 1 проверка перемычек/тефлона замена при необходимости | 2h | 2026-09-03 09:00 A | 2026-09-03 11:00 A |  | 100% |  |  | start no earlier than 2026-09-03 09:00 | Макаревич А | 2h | 2h |
| 3506 | 12.5.25.7 | запайщик 1 и 2 проверка перемычек/тефлона замена при необходимости | 1h | 2026-09-24 09:00 A | 2026-09-24 10:00 A |  | 100% |  |  | start no earlier than 2026-09-24 09:00 | Некрасов А | 1h | 1h |
| 3507 | 12.5.25.8 | запайщик 1 и 2 проверка перемычек/тефлона замена при необходимости | 30min | 2026-11-20 09:00 | 2026-11-20 09:30 |  |  |  | 78.53d | start no earlier than 2026-11-20 09:00 | Труфанов А; Некрасов А | 1h |  |
| 3508 | 12.5.26 | **квадропак** | 85.12d | 2026-08-12 09:00 A | 2026-11-20 10:00 |  | 87% | 11.1d | 78.47d |  |  | 8.83h | 6.83h |
| 3509 | 12.5.26.1 | смазка вращающиющихся механизмов | 30min | 2026-10-01 09:00 A | 2026-10-01 09:30 A |  | 100% |  |  | start no earlier than 2026-10-01 09:00 | Бундин В | 0.5h | 0.5h |
| 3510 | 12.5.26.2 | протяжка креплений поворотных лап захвата | 30min | 2026-10-01 09:30 A | 2026-10-01 10:00 A | 3509 | 100% |  |  | start no earlier than 2026-03-05 09:00 | Бундин В | 0.5h | 0.5h |
| 3511 | 12.5.26.3 | чистка вала ленты выгрзного транспортера | 30min | 2026-10-01 10:00 A | 2026-10-01 10:30 A | 3510 | 100% |  |  | start no earlier than 2026-03-31 08:00 | Бундин В | 0.5h | 0.5h |
| 3512 | 12.5.26.4 | осмотр приводной системы нории / смазка | 30min | 2026-08-12 09:00 A | 2026-08-12 09:30 A |  | 100% |  |  | start no earlier than 2026-08-12 09:00 | Тимофеев В | 0.5h | 0.5h |
| 3513 | 12.5.26.5 | осмотр приводной системы нории / смазка | 30min | 2026-08-20 09:00 A | 2026-08-20 09:30 A |  | 100% |  |  | start no earlier than 2026-08-20 09:00 | Бобренок В | 0.5h | 0.5h |
| 3514 | 12.5.26.6 | осмотр приводной системы нории / смазка | 30min | 2026-09-03 09:00 A | 2026-09-03 09:30 A |  | 100% |  |  | start no earlier than 2026-09-03 09:00 | Макаревич А | 0.5h | 0.5h |
| 3515 | 12.5.26.7 | протяжка креплений поворотных лап захвата | 30min | 2026-09-03 09:00 A | 2026-09-03 09:30 A |  | 100% |  |  | start no earlier than 2026-09-03 09:00 | Макаревич А | 0.5h | 0.5h |
| 3516 | 12.5.26.8 | снимать ковши для доступка к подшинику, нуждающего в смазке( сообщил Некрасов) | 2h | 2026-09-24 09:00 A | 2026-09-24 11:00 A |  | 100% |  |  | start no earlier than 2026-09-24 09:00 | Бундин В | 2h | 2h |
| 3517 | 12.5.26.9 | Ревизия редуктора транспортной ленты, бежит масло | 1h | 2026-10-15 09:00 A | 2026-10-15 10:00 A |  | 100% |  |  | start no earlier than 2026-10-15 09:00 | Бобренок В | 1h | 1h |
| 3518 | 12.5.26.10 | Проверка редуктора транспортерной ленты | 10min | 2026-10-29 09:00 A | 2026-10-29 09:10 A |  | 100% |  |  | start no earlier than 2026-10-29 08:00 | Макаревич А; Николаев | 0.33h | 0.33h |
| 3519 | 12.5.26.11 | Комплексный осмотр всех узлов | 1h | 2026-11-20 09:00 | 2026-11-20 10:00 |  |  |  | 78.47d | start no earlier than 2026-11-20 09:00 | Труфанов А; Некрасов А | 2h |  |

| ID | WBS | Task | Duration | Start | Finish | Complete | Remaining | Total slack | Constraint | Resources | Work | Actual work |
| --- | --- | --- | --- | --- | --- | --- | --- | --- | --- | --- | --- | --- |
| 3520 | 12.5.27 | **БЕСТРОМ** | 769.12d | 2023-12-28 09:00 A | 2026-11-20 10:00 | 77% | 173.52d | 78.47d |  | ТО | 1109.83h | 77.33h |
| 3521 | 12.5.27.1 | чистка тен с демантожем | 2.5h | 2026-03-05 09:00 A | 2026-03-05 11:30 A | 100% |  |  | start no earlier than 2026-03-05 09:00 | Бундин В | 2.5h | 2.5h |
| 3522 | 12.5.27.2 | ослабить ленту для чистки барабана / натяжка после чистки | 10min | 2026-03-12 09:00 A | 2026-03-12 09:10 A | 100% |  |  | start no earlier than 2026-03-12 09:00 | Бундин В | 0.17h | 0.17h |
| 3523 | 12.5.27.3 | чистка тенов | 1h | 2026-05-14 09:00 A | 2026-05-14 10:00 A | 100% |  |  | start no earlier than 2026-05-14 09:00 | Макаревич А | 1h | 1h |
| 3524 | 12.5.27.4 | чистка тенов | 2h | 2026-07-14 09:00 | 2026-07-14 11:00 |  |  | 184.34d | start no earlier than 2026-07-14 09:00 | Бундин В | 2h |  |
| 3525 | 12.5.27.5 | конвейер и вибробункер БЕСТРОМ | 2h | 2023-12-28 09:00 | 2023-12-28 11:00 |  |  | 847.34d | start no earlier than 2023-12-28 09:00 | ТО | 2h |  |
| 3526 | 12.5.27.6 | бестром чистка тен, проверка тефлона, роликов (согласовать с мастером) | 2h | 2026-07-08 09:00 A | 2026-07-08 11:00 A | 100% |  |  | start no earlier than 2026-07-08 09:00 | Бобренок В | 2h | 2h |
| 3527 | 12.5.27.7 | бестром чистка тен, проверка тефлона, роликов (согласовать с мастером) | 1h | 2026-07-30 09:00 A | 2026-07-30 10:00 A | 100% |  |  | start no earlier than 2026-07-30 09:00 | Тимофеев В | 1h | 1h |
| 3528 | 12.5.27.8 | бестром чистка тен, проверка тефлона, роликов (согласовать с мастером) | 1h | 2026-08-13 09:00 A | 2026-08-13 10:00 A | 100% |  |  | start no earlier than 2026-08-13 09:00 | Тимофеев В | 1h | 1h |
| 3529 | 12.5.27.9 | бестром чистка тен, проверка тефлона, роликов (согласовать с мастером) | 1h | 2026-08-20 09:00 A | 2026-08-20 10:00 A | 100% |  |  | start no earlier than 2026-08-20 09:00 | Дедов В | 1h | 1h |
| 3530 | 12.5.27.10 | бестром чистка тен, проверка тефлона, роликов (согласовать с мастером) | 1h | 2026-09-03 09:00 A | 2026-09-03 10:00 A | 100% |  |  | start no earlier than 2026-09-03 09:00 | Макаревич А | 1h | 1h |
| 3531 | 12.5.27.11 | Замена линейного подшипника ISKRA KH2030-PP (согласование с Домоводовым) не делали, все норм там) | 2h | 2026-09-03 09:00 A | 2026-09-03 11:00 A | 100% |  |  | start no earlier than 2026-09-03 09:00 | Макаревич А | 2h | 2h |
| 3532 | 12.5.27.12 | ослабить ленту для чистки барабана / натяжка после чистки | 10min | 2026-09-10 09:00 | 2026-09-10 09:10 |  |  | 141.57d | start no earlier than 2026-09-10 09:00 | Макаревич А | 0.17h |  |
| 3533 | 12.5.27.13 | Замена поролоновой губки на горизонтальных тенах запайки пакетов | 30min | 2026-09-17 09:00 A | 2026-09-17 09:30 A | 100% |  |  | start no earlier than 2026-09-17 09:00 | Бобренок В | 0.5h | 0.5h |
| 3534 | 12.5.27.14 | Чистка ТЭНов | 2h | 2026-09-16 09:00 A | 2026-09-16 11:00 A | 100% |  |  | start no earlier than 2026-09-16 08:00 | Бундин В | 2h | 2h |
| 3535 | 12.5.27.15 | Чистка ТЭНов | 2h | 2026-09-24 09:00 A | 2026-09-24 11:00 A | 100% |  |  | start no earlier than 2026-09-24 09:00 | Бундин В | 2h | 2h |
| 3536 | 12.5.27.16 | Проверка контактов их продувка и их протяжка. Проверка эелектрической части, устранение неисправностей. | 4h | 2026-10-08 09:00 A | 2026-10-08 13:00 A | 100% |  |  | start no earlier than 2026-10-08 09:00 | Дедов В | 4h | 4h |
| 3537 | 12.5.27.17 | Чистка тенов, проверка тефлона, роликов | 1h | 2026-10-15 09:00 A | 2026-10-15 10:00 A | 100% |  |  | start no earlier than 2026-10-15 09:00 | Труфанов А | 1h | 1h |
| 3538 | 12.5.27.18 | Чистка тенов, проверка тефлона, роликов | 1h | 2026-10-30 09:00 | 2026-10-30 10:00 |  |  | 97.47d | start no earlier than 2026-10-30 09:00 | Макаревич А; Николаев | 2h |  |
| 3539 | 12.5.27.19 | Чистка тенов, проверка тефлона, роликов | 1h | 2026-11-20 09:00 | 2026-11-20 10:00 |  |  | 78.47d | start no earlier than 2026-11-20 09:00 | Труфанов А; Некрасов А | 2h |  |
| 3540 | 12.5.28 | **электрооборудование** | 700.02d? | 2023-12-28 09:00 A | 2026-09-03 09:10 |  | 696.66d? | 147.57d |  |  | 69.33h | 0.33h |
| 3541 | 12.5.28.1 | ВРУ3 | 30min | 2024-10-03 09:00 | 2024-10-03 09:30 |  |  | 647.53d | start no earlier than 2024-10-03 09:00 | Тимофеев В | 0.5h |  |
| 3542 | 12.5.28.2 | ВРУ4 | 2h | 2023-12-28 09:00 | 2023-12-28 11:00 |  |  | 847.34d | start no earlier than 2023-12-28 09:00 | ТО | 2h |  |
| 3543 | 12.5.28.3 | ВРУ5 | 2h | 2023-12-28 09:00 | 2023-12-28 11:00 |  |  | 847.34d | start no earlier than 2023-12-28 09:00 | ТО | 2h |  |
| 3544 | 12.5.28.4 | ВРУ6 | 2h | 2023-12-28 09:00 | 2023-12-28 11:00 |  |  | 847.34d | start no earlier than 2023-12-28 09:00 | ТО | 2h |  |
| 3545 | 12.5.28.5 | ЩР4 у печи | 2h | 2023-12-28 09:00 | 2023-12-28 11:00 |  |  | 847.34d | start no earlier than 2023-12-28 09:00 | ТО | 2h |  |
| 3546 | 12.5.28.6 | ЩО1 у печи | 30min | 2024-10-03 09:00 | 2024-10-03 09:30 |  |  | 647.53d | start no earlier than 2024-10-03 09:00 | Тимофеев В | 0.5h |  |
| 3547 | 12.5.28.7 | ЩР5 у жиротопки | 2h | 2023-12-28 09:00 | 2023-12-28 11:00 |  |  | 847.34d | start no earlier than 2023-12-28 09:00 | ТО | 2h |  |
| 3548 | 12.5.28.8 | ЩР6 упаковка стна жир | 2h | 2023-12-28 09:00 | 2023-12-28 11:00 |  |  | 847.34d | start no earlier than 2023-12-28 09:00 | ТО | 2h |  |
| 3549 | 12.5.28.9 | ЩР7 упаковка колонна | 2h | 2023-12-28 09:00 | 2023-12-28 11:00 |  |  | 847.34d | start no earlier than 2023-12-28 09:00 | ТО | 2h |  |
| 3550 | 12.5.28.10 | ЩР8 склад навесок | 2h | 2023-12-28 09:00 | 2023-12-28 11:00 |  |  | 847.34d | start no earlier than 2023-12-28 09:00 | ТО | 2h |  |
| 3551 | 12.5.28.11 | ЩР9 2 этаж | 2h | 2023-12-28 09:00 | 2023-12-28 11:00 |  |  | 847.34d | start no earlier than 2023-12-28 09:00 | ТО | 2h |  |
| 3552 | 12.5.28.12 | электрокотел 1 - 2 цех | 2h | 2023-12-28 09:00 | 2023-12-28 11:00 |  |  | 847.34d | start no earlier than 2023-12-28 09:00 | ТО | 2h |  |
| 3553 | 12.5.28.13 | электрокотел 2 - 2 цех | 1d? | 2023-12-28 09:00 | 2023-12-28 18:00 |  |  | 846.59d | start no earlier than 2023-12-28 09:00 | ТО | 8h |  |
| 3554 | 12.5.28.14 | электрокотел 3 - 2 цех | 1d? | 2023-12-28 09:00 | 2023-12-28 18:00 |  |  | 846.59d | start no earlier than 2023-12-28 09:00 | ТО | 8h |  |
| 3555 | 12.5.28.15 | бойлер 4 2 цех раковина | 1d? | 2023-12-28 09:00 | 2023-12-28 18:00 |  |  | 846.59d | start no earlier than 2023-12-28 09:00 | ТО | 8h |  |
| 3556 | 12.5.28.16 | бойлер 5 2 цех душ М | 1d? | 2023-12-28 09:00 | 2023-12-28 18:00 |  |  | 846.59d | start no earlier than 2023-12-28 09:00 | ТО | 8h |  |
| 3557 | 12.5.28.17 | бойлер 6 2 цех душ Ж | 1d? | 2023-12-28 09:00 | 2023-12-28 18:00 |  |  | 846.59d | start no earlier than 2023-12-28 09:00 | ТО | 8h |  |
| 3558 | 12.5.28.18 | насос санитарный | 1d? | 2023-12-28 09:00 | 2023-12-28 18:00 |  |  | 846.59d | start no earlier than 2023-12-28 09:00 | ТО | 8h |  |
| 3559 | 12.5.28.19 | ЩР4 у печи продувка | 10min | 2026-09-03 09:00 A | 2026-09-03 09:10 A | 100% |  |  | start no earlier than 2026-09-03 09:00 | Труфанов А | 0.17h | 0.17h |
| 3560 | 12.5.28.20 | ЩО1 у печи продувка | 10min | 2026-09-03 09:00 A | 2026-09-03 09:10 A | 100% |  |  | start no earlier than 2026-09-03 09:00 | Труфанов А | 0.17h | 0.17h |

| ID | WBS | Task | Duration | Start | Finish | Complete | Remaining | Total slack | Constraint | Resources | Work | Actual work |
| --- | --- | --- | --- | --- | --- | --- | --- | --- | --- | --- | --- | --- |
| 3561 | 12.5.29 | **Компрессор 2 цех** | 82.03d | 2026-08-06 09:00 A | 2026-11-13 09:15 | 99% | 0d | 0d |  | ТО | 4.5h | 4.5h |
| 3562 | 12.5.29.1 | продувка фильтров | 30min | 2026-08-06 09:00 A | 2026-08-06 09:30 A | 100% |  |  | start no earlier than 2026-08-06 09:00 | Тимофеев В | 0.5h | 0.5h |
| 3563 | 12.5.29.2 | слив конденсат с осушителя | 30min | 2026-08-06 09:00 A | 2026-08-06 09:30 A | 100% |  |  | start no earlier than 2026-08-06 09:00 | Тимофеев В | 0.5h | 0.5h |
| 3564 | 12.5.29.3 | слив конденсат с осушителя | 30min | 2026-08-20 09:00 A | 2026-08-20 09:30 A | 100% |  |  | start no earlier than 2026-08-20 09:00 | Дедов В | 0.5h | 0.5h |
| 3565 | 12.5.29.4 | продувка фильтров | 30min | 2026-08-29 09:00 A | 2026-08-31 09:30 A | 100% |  |  | start no earlier than 2026-08-29 09:00 | Макаревич А | 0.5h | 0.5h |
| 3566 | 12.5.29.5 | слив конденсат с осушителя | 30min | 2026-08-29 09:00 A | 2026-08-31 09:30 A | 100% |  |  | start no earlier than 2026-08-29 09:00 | Макаревич А | 0.5h | 0.5h |
| 3567 | 12.5.29.6 | слив конденсат с осушителя | 30min | 2026-08-29 09:00 A | 2026-08-31 09:30 A | 100% |  |  | start no earlier than 2026-08-29 09:00 | Макаревич А | 0.5h | 0.5h |
| 3568 | 12.5.29.7 | слив конденсат с осушителя | 30min | 2026-09-03 09:00 A | 2026-09-03 09:30 A | 100% |  |  | start no earlier than 2026-09-03 09:00 | Макаревич А | 0.5h | 0.5h |
| 3569 | 12.5.29.8 | продувка фильтров (дать размеры фильтра) | 30min | 2026-09-17 09:00 A | 2026-09-17 09:30 A | 100% |  |  | start no earlier than 2026-09-17 09:00 | Труфанов А | 0.5h | 0.5h |
| 3570 | 12.5.29.9 | вызвать сервисного инженера на ТО | 15min | 2026-11-13 09:00 A | 2026-11-13 09:15 A | 100% |  |  | start no earlier than 2026-11-16 09:00 | Зорькин В; Труфанов А | 0.5h | 0.5h |
| 3571 | 12.5.30 | **насосная станция 2 цех** | 130.06d | 2026-03-05 09:00 A | 2026-09-03 09:30 A | 100% |  |  |  |  | 1h | 1h |
| 3572 | 12.5.30.1 | замена фильтров | 30min | 2026-03-05 09:00 A | 2026-03-05 09:30 A | 100% |  |  | start no earlier than 2026-03-05 09:00 | Тимофеев В | 0.5h | 0.5h |
| 3573 | 12.5.30.2 | замена фильтров | 30min | 2026-09-03 09:00 A | 2026-09-03 09:30 A | 100% |  |  | start no earlier than 2026-09-03 09:00 | Труфанов А | 0.5h | 0.5h |
| 3574 | 12.5.31 | **приточнго-вытяжная венгтиляция и смесительный узел** | 127.06d | 2026-04-16 09:00 A | 2026-10-01 09:30 A | 100% |  |  |  |  | 2.5h | 2.5h |
| 3575 | 12.5.31.1 | замена фильтра | 1h | 2026-04-16 09:00 A | 2026-04-16 10:00 A | 100% |  |  | start no earlier than 2026-04-16 09:00 | Труфанов А; Некрасов А | 2h | 2h |
| 3576 | 12.5.31.2 | Осмотр состояния фильтра приточки/замена | 30min | 2026-10-01 09:00 A | 2026-10-01 09:30 A | 100% |  |  | start no earlier than 2026-10-01 09:00 | Труфанов А | 0.5h | 0.5h |
| 3577 | 12.5.32 | **кондиционер 1** | 689.04d? | 2024-04-18 09:00 A | 2026-11-20 09:20 | 94% | 39.37d? | 78.55d |  | ТО | 5071.33h | 4827.32h |
| 3578 | 12.5.32.1 | чистка фильтра | 1h | 2024-04-18 09:00 A | 2024-04-18 10:00 A | 100% |  |  | start no earlier than 2024-04-18 08:00 | Черепанов И; Некрасов А | 2h | 2h |
| 3579 | 12.5.32.2 | чистка фильтра | 20min | 2026-03-05 09:00 A | 2026-03-05 09:20 A | 100% |  |  | start no earlier than 2026-03-05 09:00 | Некрасов А; Бундин В | 0.67h | 0.67h |
| 3580 | 12.5.32.3 | чистка фильтров | 1d? | 2026-06-25 09:00 A | 2026-06-25 18:00 A | 100% |  |  | start no earlier than 2026-06-25 09:00 | Тимофеев В; Дедов В | 16h | 16h |
| 3581 | 12.5.32.4 | чистка фильтров | 20min | 2026-07-14 09:00 A | 2026-07-14 09:20 A | 100% |  |  | start no earlier than 2026-07-14 09:00 | Некрасов А; Бундин В | 0.67h | 0.67h |
| 3582 | 12.5.32.5 | чистка фильтров | 20min | 2026-08-13 09:00 A | 2026-08-13 09:20 A | 100% |  |  | start no earlier than 2026-08-13 09:00 | Некрасов А; Труфанов А | 0.67h | 0.67h |
| 3583 | 12.5.32.6 | чистка фильтров | 20min | 2026-09-03 09:00 A | 2026-09-03 09:20 A | 100% |  |  | start no earlier than 2026-09-03 09:00 | Некрасов А; Тимофеев В | 0.67h | 0.67h |
| 3584 | 12.5.32.7 | чистка фильтров | 20min | 2026-09-17 09:00 A | 2026-09-17 09:20 A | 100% |  |  | start no earlier than 2026-09-17 09:00 | Тимофеев В; Бобренок В | 0.67h | 0.67h |
| 3585 | 12.5.32.8 | чистка фильтров | 20min | 2026-09-24 09:00 A | 2026-09-24 09:20 A | 100% |  |  | start no earlier than 2026-09-24 09:00 | Тимофеев В; Бундин В | 0.67h | 0.67h |
| 3586 | 12.5.32.9 | чистка фильтров | 20min | 2026-10-30 09:00 | 2026-10-30 09:20 |  |  | 97.55d | start no earlier than 2026-10-30 09:00 | Тимофеев В | 0.33h |  |
| 3587 | 12.5.32.10 | чистка фильтров | 20min | 2026-11-20 09:00 | 2026-11-20 09:20 |  |  | 78.55d | start no earlier than 2026-11-20 09:00 | Труфанов А; Некрасов А | 0.67h |  |

| ID | WBS | Task | Type | Duration | Start | Finish | Complete | Remaining | Total slack | Constraint | Resources | Work | Actual work |
| --- | --- | --- | --- | --- | --- | --- | --- | --- | --- | --- | --- | --- | --- |
| 3588 | 12.5.33 | **кондиционер 2** |  | 689.04d? | 2024-04-18 09:00 A | 2026-11-20 09:20 | 95% | 37.76d? | 78.55d |  | ТО | 5072.5h | 4983.33h |
| 3589 | 12.5.33.1 | чистка фильтров |  | 1d? | 2026-06-25 09:00 A | 2026-06-25 18:00 A | 100% |  |  | start no earlier than 2026-06-25 09:00 | Тимофеев В; Дедов В | 16h | 16h |
| 3590 | 12.5.33.2 | чистка фильтра |  | 1h | 2024-04-18 09:00 A | 2024-04-18 10:00 A | 100% |  |  | start no earlier than 2024-04-18 08:00 | Черепанов И; Некрасов А | 2h | 2h |
| 3591 | 12.5.33.3 | чистка фильтра |  | 20min | 2026-03-05 09:00 A | 2026-03-05 09:20 A | 100% |  |  | start no earlier than 2026-03-05 09:00 | Некрасов А; Бундин В | 0.67h | 0.67h |
| 3592 | 12.5.33.4 | чистка фильтров |  | 20min | 2026-07-14 09:00 A | 2026-07-14 09:20 A | 100% |  |  | start no earlier than 2026-07-14 09:00 | Некрасов А; Бундин В | 0.67h | 0.67h |
| 3593 | 12.5.33.5 | чистка фильтров |  | 20min | 2026-08-13 09:00 A | 2026-08-13 09:20 A | 100% |  |  | start no earlier than 2026-08-13 09:00 | Некрасов А; Труфанов А | 0.67h | 0.67h |
| 3594 | 12.5.33.6 | чистка фильтров |  | 20min | 2026-08-13 09:00 A | 2026-08-13 09:20 A | 100% |  |  | start no earlier than 2026-08-13 09:00 | Некрасов А; Труфанов А | 0.67h | 0.67h |
| 3595 | 12.5.33.7 | чистка фильтров |  | 20min | 2026-09-03 09:00 A | 2026-09-03 09:20 A | 100% |  |  | start no earlier than 2026-09-03 09:00 | Некрасов А; Тимофеев В | 0.67h | 0.67h |
| 3596 | 12.5.33.8 | чистка фильтров |  | 30min | 2026-09-17 09:00 A | 2026-09-17 09:30 A | 100% |  |  | start no earlier than 2026-09-17 09:00 | Тимофеев В; Бобренок В | 1h | 1h |
| 3597 | 12.5.33.9 | чистка фильтров |  | 20min | 2026-09-24 09:00 A | 2026-09-24 09:20 A | 100% |  |  | start no earlier than 2026-09-24 09:00 | Тимофеев В; Бундин В | 0.67h | 0.67h |
| 3598 | 12.5.33.10 | чистка фильтров |  | 20min | 2026-10-30 09:00 | 2026-10-30 09:20 |  |  | 97.55d | start no earlier than 2026-10-30 09:00 | Тимофеев В | 0.33h |  |
| 3599 | 12.5.33.11 | чистка фильтров |  | 20min | 2026-11-20 09:00 | 2026-11-20 09:20 |  |  | 78.55d | start no earlier than 2026-11-20 09:00 | Труфанов А; Некрасов А | 0.67h |  |
| 3600 | 12.5.34 | **кондиционер 3** |  | 199.04d | 2026-03-05 09:00 A | 2026-11-20 09:20 | 78% | 44.23d | 78.55d |  |  | 5.67h | 4.67h |
| 3601 | 12.5.34.1 | чистка фильтра |  | 20min | 2026-03-05 09:00 A | 2026-03-05 09:20 A | 100% |  |  | start no earlier than 2026-03-05 09:00 | Некрасов А; Бундин В | 0.67h | 0.67h |
| 3602 | 12.5.34.2 | чистка фильтров |  | 20min | 2026-07-14 09:00 A | 2026-07-14 09:20 A | 100% |  |  | start no earlier than 2026-07-14 09:00 | Некрасов А; Бундин В | 0.67h | 0.67h |
| 3603 | 12.5.34.3 | чистка фильтров |  | 20min | 2026-08-13 09:00 A | 2026-08-13 09:20 A | 100% |  |  | start no earlier than 2026-08-13 09:00 | Некрасов А; Труфанов А | 0.67h | 0.67h |
| 3604 | 12.5.34.4 | чистка фильтров |  | 20min | 2026-08-13 09:00 A | 2026-08-13 09:20 A | 100% |  |  | start no earlier than 2026-08-13 09:00 | Некрасов А; Труфанов А | 0.67h | 0.67h |
| 3605 | 12.5.34.5 | чистка фильтров |  | 20min | 2026-09-03 09:00 A | 2026-09-03 09:20 A | 100% |  |  | start no earlier than 2026-09-03 09:00 | Некрасов А; Тимофеев В | 0.67h | 0.67h |
| 3606 | 12.5.34.6 | чистка фильтров |  | 20min | 2026-09-17 09:00 A | 2026-09-17 09:20 A | 100% |  |  | start no earlier than 2026-09-17 09:00 | Тимофеев В; Бобренок В | 0.67h | 0.67h |
| 3607 | 12.5.34.7 | чистка фильтров |  | 20min | 2026-09-24 09:00 A | 2026-09-24 09:20 A | 100% |  |  | start no earlier than 2026-09-24 09:00 | Тимофеев В; Бундин В | 0.67h | 0.67h |
| 3608 | 12.5.34.8 | чистка фильтров |  | 20min | 2026-10-30 09:00 | 2026-10-30 09:20 |  |  | 97.55d | start no earlier than 2026-10-30 09:00 | Тимофеев В | 0.33h |  |
| 3609 | 12.5.34.9 | чистка фильтров |  | 20min | 2026-11-20 09:00 | 2026-11-20 09:20 |  |  | 78.55d | start no earlier than 2026-11-20 09:00 | Труфанов А; Некрасов А | 0.67h |  |
| 3610 | 12.5.35 | **электроштабелер** |  | 2.38d | 2026-08-11 09:00 A | 2026-08-13 12:00 A | 100% |  |  |  | ТО | 22.25h | 22.25h |
| 3611 | 12.5.35.1 | **хруст в колесе устранить** |  | 2.38d | 2026-08-11 09:00 A | 2026-08-13 12:00 A | 100% |  |  |  |  | 3.25h | 3.25h |
| 3612 | 12.5.35.1.1 | хруст с правой стороны штабелера- ревизия, скорее всего подшипник (экструдер). Осмотр, доложить | manual | 15min | 2026-08-11 09:00 A | 2026-08-11 09:15 A | 100% |  |  | start no earlier than 2026-08-11 09:00 | Тимофеев В | 0.25h | 0.25h |
| 3613 | 12.5.35.1.2 | ремонт замена подшипник колесо штабелер |  | 3h | 2026-08-13 09:00 A | 2026-08-13 12:00 A | 100% |  |  | start no earlier than 2026-08-13 09:00 | Тимофеев В | 3h | 3h |

| ID | WBS | Task | Type | Duration | Start | Finish | Complete | Remaining | Total slack | Constraint | Resources | Work | Actual work |
| --- | --- | --- | --- | --- | --- | --- | --- | --- | --- | --- | --- | --- | --- |
| 3614 | 12.5.36 | **Лаборатория** |  | 0.25d | 2026-09-18 09:00 A | 2026-09-18 11:00 A | 100% |  |  |  |  | 2h | 2h |
| 3615 | 12.5.36.1 | Прочистка дистилятора/ТО, очистка накипи, инструкция смотреть в лаборатории |  | 2h | 2026-09-18 09:00 A | 2026-09-18 11:00 A | 100% |  |  | start no earlier than 2026-09-18 09:00 | Бобренок В | 2h | 2h |
| 3616 | 12.6 | **3 цех** |  | 1d? | 2023-12-28 09:00 | 2023-12-28 18:00 |  |  | 846.59d |  | ТО | 88h |  |
| 3617 | 12.6.1 | **электрооборудование** |  | 1d? | 2023-12-28 09:00 | 2023-12-28 18:00 |  |  | 846.59d |  | ТО | 48h |  |
| 3618 | 12.6.1.1 | ВРУ7 |  | 1d? | 2023-12-28 09:00 | 2023-12-28 18:00 |  |  | 846.59d | start no earlier than 2023-12-28 09:00 | ТО | 8h |  |
| 3619 | 12.6.1.2 | ОЩР |  | 1d? | 2023-12-28 09:00 | 2023-12-28 18:00 |  |  | 846.59d | start no earlier than 2023-12-28 09:00 | ТО | 8h |  |
| 3620 | 12.6.1.3 | электрокотел 4 - 3 цех |  | 1d? | 2023-12-28 09:00 | 2023-12-28 18:00 |  |  | 846.59d | start no earlier than 2023-12-28 09:00 | ТО | 8h |  |
| 3621 | 12.6.1.4 | электрокотел 5 - 3 цех |  | 1d? | 2023-12-28 09:00 | 2023-12-28 18:00 |  |  | 846.59d | start no earlier than 2023-12-28 09:00 | ТО | 8h |  |
| 3622 | 12.6.1.5 | электрокотел 6 - 3 цех |  | 1d? | 2023-12-28 09:00 | 2023-12-28 18:00 |  |  | 846.59d | start no earlier than 2023-12-28 09:00 | ТО | 8h |  |
| 3623 | 12.6.2 | электроштабелер 1 |  | 1d? | 2023-12-28 09:00 | 2023-12-28 18:00 |  |  | 846.59d | start no earlier than 2023-12-28 09:00 | ТО | 8h |  |
| 3624 | 12.6.3 | электроштабелер 2 |  | 1d? | 2023-12-28 09:00 | 2023-12-28 18:00 |  |  | 846.59d | start no earlier than 2023-12-28 09:00 | ТО | 8h |  |
| 3625 | 12.6.4 | вилочный погрузчик 1 |  | 1d? | 2023-12-28 09:00 | 2023-12-28 18:00 |  |  | 846.59d | start no earlier than 2023-12-28 09:00 | ТО | 8h |  |
| 3626 | 12.6.5 | вилочный погрузчик 2 |  | 1d? | 2023-12-28 09:00 | 2023-12-28 18:00 |  |  | 846.59d | start no earlier than 2023-12-28 09:00 | ТО | 8h |  |
| 3627 | 12.7 | **5 цех** |  | 755.02d? | 2023-12-28 09:00 A | 2026-11-06 09:10 | 10% | 678.35d? | 92.57d |  | ТО | 7084.67h | 906.67h |
| 3628 | 12.7.1 | **насосная станция 5 цех** |  | 0.02d | 2026-11-06 09:00 | 2026-11-06 09:10 |  |  | 92.57d |  | ТО | 0.5h |  |
| 3629 | 12.7.1.1 | Осмотр |  | 10min | 2026-11-06 09:00 | 2026-11-06 09:10 |  |  | 92.57d | start no earlier than 2026-11-06 08:00 | Макаревич А; Николаев | 0.33h |  |
| 3630 | 12.7.2 | растариватель |  | 1d? | 2023-12-28 09:00 | 2023-12-28 18:00 |  |  | 846.59d | start no earlier than 2023-12-28 09:00 | ТО | 8h |  |
| 3631 | 12.7.3 | **шнек 1 растариватель-смеситель** |  | 65.25d | 2026-04-03 09:00 A | 2026-07-03 11:00 | 67% | 21.75d | 0d |  | ТО | 492h | 342.67h |
| 3632 | 12.7.3.1 | замена подшипник нижний | manual | 2h | 2026-04-03 09:00 A | 2026-04-03 11:00 A | 100% |  |  |  | Некрасов А; Труфанов А | 4h | 4h |
| 3633 | 12.7.3.2 | ревизия подшипник верхний - не снимается.ревизия - все ок, мазка | manual | 2h | 2026-04-03 09:00 A | 2026-04-03 11:00 A | 100% |  |  |  | Некрасов А; Труфанов А | 4h | 4h |
| 3634 | 12.7.3.3 | осмотр износа, смазка | manual | 2h | 2026-07-03 09:00 | 2026-07-03 11:00 |  |  |  |  | Тимофеев В | 2h |  |
| 3635 | 12.7.4 | смеситель СМ1500 |  | 1d? | 2023-12-28 09:00 | 2023-12-28 18:00 |  |  | 846.59d | start no earlier than 2023-12-28 09:00 | ТО | 8h |  |
| 3636 | 12.7.5 | **шнек 2 смеситель -дробилка** |  | 68.5d? | 2026-03-24 09:00 A | 2026-06-26 13:00 | 67% | 22.83d? | 196.09d |  | ТО | 440h | 64h |
| 3637 | 12.7.5.1 | ремонт вала, т.к съело посадку на верх подшипник |  | 1d? | 2026-03-24 09:00 A | 2026-03-24 18:00 A | 100% |  |  | start no earlier than 2026-03-24 09:00 | Труфанов А; Некрасов А | 16h | 16h |
| 3638 | 12.7.5.2 | осмотр износа |  | 4h | 2026-06-26 09:00 | 2026-06-26 13:00 |  |  | 196.09d | start no earlier than 2026-06-26 09:00 | Тимофеев В | 4h |  |

| ID | WBS | Task | Duration | Start | Finish | Total slack | Constraint | Resources | Work |
| --- | --- | --- | --- | --- | --- | --- | --- | --- | --- |
| 3639 | 12.7.6 | **дробилка ДМС3** | 0.5d | 2026-05-11 09:00 | 2026-05-11 13:00 | 230.09d |  | ТО | 8h |
| 3640 | 12.7.6.1 | замена подшипник буксы сторона мотора | 4h | 2026-05-11 09:00 | 2026-05-11 13:00 | 230.09d | start no earlier than 2026-05-10 09:00 | Бундин В | 4h |
| 3641 | 12.7.7 | шнек 3 дробилка-накопитель | 1d? | 2023-12-28 09:00 | 2023-12-28 18:00 | 846.59d | start no earlier than 2023-12-28 09:00 | ТО | 8h |
| 3642 | 12.7.8 | дробилка 11квт | 1d? | 2023-12-28 09:00 | 2023-12-28 18:00 | 846.59d | start no earlier than 2023-12-28 09:00 | ТО | 8h |
| 3643 | 12.7.9 | дробилка 7,5квт | 1d? | 2023-12-28 09:00 | 2023-12-28 18:00 | 846.59d | start no earlier than 2023-12-28 09:00 | ТО | 8h |
| 3644 | 12.7.10 | вибросито А | 1d? | 2023-12-28 09:00 | 2023-12-28 18:00 | 846.59d | start no earlier than 2023-12-28 09:00 | ТО | 8h |
| 3645 | 12.7.11 | вибросито Б | 1d? | 2023-12-28 09:00 | 2023-12-28 18:00 | 846.59d | start no earlier than 2023-12-28 09:00 | ТО | 8h |
| 3646 | 12.7.12 | **электрооборудование** | 1d? | 2023-12-28 09:00 | 2023-12-28 18:00 | 846.59d |  | ТО | 48h |
| 3647 | 12.7.12.1 | ВРУ7 | 1d? | 2023-12-28 09:00 | 2023-12-28 18:00 | 846.59d | start no earlier than 2023-12-28 09:00 | ТО | 8h |
| 3648 | 12.7.12.2 | ЩР2 | 1d? | 2023-12-28 09:00 | 2023-12-28 18:00 | 846.59d | start no earlier than 2023-12-28 09:00 | ТО | 8h |
| 3649 | 12.7.12.3 | котельная газовая 5 цех | 1d? | 2023-12-28 09:00 | 2023-12-28 18:00 | 846.59d | start no earlier than 2023-12-28 09:00 | ТО | 8h |
| 3650 | 12.7.12.4 | бойлеры душ | 1d? | 2023-12-28 09:00 | 2023-12-28 18:00 | 846.59d | start no earlier than 2023-12-28 09:00 | ТО | 8h |
| 3651 | 12.7.12.5 | вентилятор вытяжной в дробилке | 1d? | 2023-12-28 09:00 | 2023-12-28 18:00 | 846.59d | start no earlier than 2023-12-28 09:00 | ТО | 8h |
| 3652 | 12.8 | **адм корпус** | 1d? | 2023-12-28 09:00 | 2023-12-28 18:00 | 846.59d |  | ТО | 24h |
| 3653 | 12.8.1 | бойлер туалет | 1d? | 2023-12-28 09:00 | 2023-12-28 18:00 | 846.59d | start no earlier than 2023-12-28 09:00 | ТО | 8h |
| 3654 | 12.8.2 | ОЩР | 1d? | 2023-12-28 09:00 | 2023-12-28 18:00 | 846.59d | start no earlier than 2023-12-28 09:00 | ТО | 8h |
| 3655 | 12.9 | **склад упаковки** | 1d? | 2023-12-28 09:00 | 2023-12-28 18:00 | 846.59d |  | ТО | 32h |
| 3656 | 12.9.1 | **электрооборудование** | 1d? | 2023-12-28 09:00 | 2023-12-28 18:00 | 846.59d |  | ТО | 24h |
| 3657 | 12.9.1.1 | ЩО и ЩР | 1d? | 2023-12-28 09:00 | 2023-12-28 18:00 | 846.59d | start no earlier than 2023-12-28 09:00 | ТО | 8h |
| 3658 | 12.9.1.2 | санитарный насос | 1d? | 2023-12-28 09:00 | 2023-12-28 18:00 | 846.59d | start no earlier than 2023-12-28 09:00 | ТО | 8h |
| 3659 | 12.10 | **цех наполнителей** | 1d? | 2023-12-28 09:00 | 2023-12-28 18:00 | 846.59d |  | ТО | 56h |
| 3660 | 12.10.1 | ЩО и ЩР | 1d? | 2023-12-28 09:00 | 2023-12-28 18:00 | 846.59d | start no earlier than 2023-12-28 09:00 | ТО | 8h |
| 3661 | 12.10.2 | комппрессор | 1d? | 2023-12-28 09:00 | 2023-12-28 18:00 | 846.59d | start no earlier than 2023-12-28 09:00 | ТО | 8h |
| 3662 | 12.10.3 | конвейер загрузки | 1d? | 2023-12-28 09:00 | 2023-12-28 18:00 | 846.59d | start no earlier than 2023-12-28 09:00 | ТО | 8h |
| 3663 | 12.10.4 | дозатор НОТИС | 1d? | 2023-12-28 09:00 | 2023-12-28 18:00 | 846.59d | start no earlier than 2023-12-28 09:00 | ТО | 8h |
| 3664 | 12.10.5 | запайщик | 1d? | 2023-12-28 09:00 | 2023-12-28 18:00 | 846.59d | start no earlier than 2023-12-28 09:00 | ТО | 8h |
| 3665 | 12.10.6 | вилочный погрузчик тойота | 1d? | 2023-12-28 09:00 | 2023-12-28 18:00 | 846.59d | start no earlier than 2023-12-28 09:00 | ТО | 8h |
| 3666 | 12.11 | Установка розетки под литийионный аккумклятор 3-х фазный, установить рядом с существующей ВРУ | 2h | 2026-07-08 09:00 | 2026-07-08 11:00 | 188.34d | start no earlier than 2026-07-08 08:00 | Бундин В | 2h |

| ID | WBS | Task | Type | Duration | Start | Finish | Predecessors | Complete | Remaining | Total slack | Constraint | Resources | Work | Actual work |
| --- | --- | --- | --- | --- | --- | --- | --- | --- | --- | --- | --- | --- | --- | --- |
| 3667 | 13 | **синий склад** |  | 155.38d | 2026-05-07 09:00 A | 2026-11-23 12:00 |  | 63% | 56.84d | 77.22d |  |  | 52h | 33h |
| 3668 | 13.1 | Маркировка оборудования по списку с кладовщиком, взять красные стикеры и пометить |  | 3h | 2026-11-23 09:00 A | 2026-11-23 12:00 A |  | 100% |  |  | start no earlier than 2026-11-23 09:00 | Тимофеев В | 3h | 3h |
| 3669 | 13.2 | уборка зона металла / склад ЗИП |  | 4h | 2026-11-10 09:00 A | 2026-11-10 13:00 A |  | 100% |  |  | start no earlier than 2026-11-10 09:00 | Бундин В; Тимофеев В | 8h | 8h |
| 3670 | 13.3 | Замерить ширину запаечных губок на теко 1,5, написать информацию в мах |  | 30min | 2026-10-30 09:00 A | 2026-10-30 09:30 A |  | 100% |  |  | start no earlier than 2026-10-30 09:00 | Тимофеев В | 0.5h | 0.5h |
| 3671 | 13.4 | Перевезти лист металла на пандус 1 цех через карщика сразу на входе, запинаются |  | 1h | 2026-10-27 09:00 A | 2026-10-27 10:00 A |  | 100% |  |  | start no earlier than 2026-10-27 08:00 | Бундин В | 1h | 1h |
| 3672 | 13.5 | **ЗАМЕНА СВЕТИЛЬНИКОВ** |  | 7.56d | 2026-10-26 09:00 A | 2026-11-04 14:30 |  | 53% | 3.56d | 94.03d |  |  | 15.5h | 7.5h |
| 3673 | 13.5.1 | сборка леса по наряд допуску / перенос от офиса |  | 3h | 2026-10-26 09:00 A | 2026-10-26 12:00 A |  | 100% |  |  | start no earlier than 2026-10-26 09:00 | Труфанов А; Некрасов А | 6h | 6h |
| 3674 | 13.5.2 | определить тип лампы |  | 1h | 2026-10-26 12:00 A | 2026-10-26 13:00 A | 3673 | 100% |  |  | start no earlier than 2026-10-19 08:00 | Труфанов А | 1h | 1h |
| 3675 | 13.5.3 | заявка на лампы |  | 15min | 2026-10-26 14:00 A | 2026-10-26 14:15 A | 3674 | 100% |  |  | start no earlier than 2026-10-19 08:00 | Зорькин В | 0.25h | 0.25h |
| 3676 | 13.5.4 | контроль доставка |  | 15min | 2026-11-04 14:15 A | 2026-11-04 14:30 A | 3675FS+7d | 100% |  |  | start no earlier than 2026-10-19 08:00 | Зорькин В | 0.25h | 0.25h |
| 3677 | 13.5.5 | замена |  | 4h | 2026-11-03 09:00 | 2026-11-03 13:00 |  |  |  | 95.09d | start no earlier than 2026-11-03 09:00 | Труфанов А; Некрасов А | 8h |  |
| 3678 | 13.6 | Найти и подготовить к транспортировке оснастку для бестрома со стойкой для висения и для штабелера удлинитель изготовленный со швелеров |  | 1h | 2026-10-15 09:00 A | 2026-10-15 10:00 A |  | 100% |  |  | start no earlier than 2026-10-15 09:00 | Труфанов А | 1h | 1h |
| 3679 | 13.7 | установить на место крышки вентиляторов |  | 1h | 2026-08-17 09:00 A | 2026-08-17 10:00 A |  | 100% |  |  | start no earlier than 2026-08-17 09:00 | Бобренок В | 1h | 1h |
| 3680 | 13.8 | Монтаж доп освещения |  | 2h | 2026-09-26 09:00 A | 2026-09-26 11:00 A |  | 100% |  |  | start no earlier than 2026-09-26 09:00 | Бобренок В | 2h | 2h |
| 3681 | 13.9 | монтаж включателя света с улицы, возле вход. Двери |  | 3h | 2026-09-30 09:00 | 2026-09-30 12:00 |  |  |  | 121.22d | start no earlier than 2026-09-30 09:00 | Бобренок В | 3h |  |
| 3682 | 13.10 | расширить проем вверху для проезда погрузчиков, врезаются | manual | 1d | 2026-09-21 09:00 | 2026-09-21 18:00 |  |  |  |  | start no earlier than 2026-09-21 09:00 | Олег | 8h |  |
| 3683 | 13.11 | замерить диаметр крыльчатки двигателя экструдера, инфу передать мне |  | 1h | 2026-06-13 09:00 A | 2026-06-15 10:00 A |  | 100% |  |  | start no earlier than 2026-06-13 09:00 | Бобренок В | 1h | 1h |
| 3684 | 13.12 | найти амперметры 30А и 150А (сказать кол-во) |  | 2h | 2026-06-10 09:00 A | 2026-06-10 11:00 A |  | 100% |  |  | start no earlier than 2026-06-10 09:00 | Труфанов А | 2h | 2h |
| 3685 | 13.13 | Навести порядок на входе в синий склад |  | 2h | 2026-07-23 09:00 A | 2026-07-23 11:00 A |  | 100% |  |  | start no earlier than 2026-07-24 09:00 | Бундин В | 2h | 2h |
| 3686 | 13.14 | проверить и подписать все материалы в синем складе с Алексеем |  | 4h | 2026-05-07 09:00 A | 2026-05-07 13:00 A |  | 100% |  |  | start no earlier than 2026-05-07 09:00 | Шуранов Ю | 4h | 4h |
| 3687 | 14 | **хим лаб** |  | 652.25d? | 2024-01-11 08:00 A | 2026-07-13 11:00 A |  | 100% |  |  |  |  | 71.75h | 71.75h |
| 3688 | 14.1 | замена кран РР |  | 2h | 2026-07-13 09:00 A | 2026-07-13 11:00 A |  | 100% |  |  | start no earlier than 2026-07-13 09:00 | Тимофеев В | 2h | 2h |
| 3689 | 14.2 | ремонт термоконтроллера - замена реле / перепаять с сзоны ALARM |  | 1h | 2026-06-09 09:00 A | 2026-06-09 10:00 A |  | 100% |  |  | start no earlier than 2026-06-09 09:00 | Дедов В | 1h | 1h |
| 3690 | 14.3 | **усилить питание хим лаб, что бы не отключался автомат при вкл быт приборов** |  | 0.12d | 2026-05-29 09:00 A | 2026-05-29 10:00 A |  | 100% |  |  |  |  | 2h | 2h |
| 3691 | 14.3.1 | переключение питания хим лаб на отдельный ШУ |  | 1h | 2026-05-29 09:00 A | 2026-05-29 10:00 A |  | 100% |  |  | start no earlier than 2026-05-29 09:00 | Некрасов А; Бобренок В | 2h | 2h |

| ID | WBS | Task | Duration | Start | Finish | Predecessors | Complete | Constraint | Resources | Work | Actual work |
| --- | --- | --- | --- | --- | --- | --- | --- | --- | --- | --- | --- |
| 3692 | 14.4 | **ремонт бойлер вода - ПУН** | 10.25d | 2026-05-14 08:00 A | 2026-05-28 11:00 A |  | 100% |  |  | 4.75h | 4.75h |
| 3693 | 14.4.1 | замена из ЗИП | 1h | 2026-05-14 08:00 A | 2026-05-14 10:00 A |  | 100% | start no earlier than 2026-05-14 08:00 | Тимофеев В | 1h | 1h |
| 3694 | 14.4.2 | диагностика неисправности. Бойлер в слесарне | 1h | 2026-05-14 08:00 A | 2026-05-14 10:00 A |  | 100% | start no earlier than 2026-05-14 08:00 | Бобренок В | 1h | 1h |
| 3695 | 14.4.3 | заявка предохарнитель | 30min | 2026-05-15 09:00 A | 2026-05-15 09:30 A | 3694 | 100% | start no earlier than 2026-05-15 08:00 | Шуранов Ю | 0.5h | 0.5h |
| 3696 | 14.4.4 | контроль поставки | 15min | 2026-05-22 09:30 A | 2026-05-22 09:45 A | 3695FS+7d | 100% | start no earlier than 2026-05-15 08:00 | Шуранов Ю | 0.25h | 0.25h |
| 3697 | 14.4.5 | заменить на бойлере в слесарке термостата WY-S37A | 2h | 2026-05-28 09:00 A | 2026-05-28 11:00 A |  | 100% | start no earlier than 2026-05-28 09:00 | Тимофеев В | 2h | 2h |
| 3698 | 14.5 | **ремонт дистилятор** | 31d? | 2026-04-27 09:00 A | 2026-06-08 18:00 A |  | 100% |  |  | 17h | 17h |
| 3699 | 14.5.1 | заявка тен | 1h | 2026-04-27 09:00 A | 2026-04-27 10:00 A |  | 100% | start no earlier than 2026-04-27 09:00 | Шуранов Ю | 1h | 1h |
| 3700 | 14.5.2 | доставка | 1d? | 2026-06-05 09:00 A | 2026-06-05 18:00 A | 3699 | 100% | finish no earlier than 2026-06-05 18:00 | Карабанов | 8h | 8h |
| 3701 | 14.5.3 | замена. Больше не выбиывает | 1d? | 2026-06-05 18:00 A | 2026-06-08 18:00 A | 3700 | 100% | start no earlier than 2026-05-13 09:00 | Тимофеев В | 8h | 8h |
| 3702 | 14.6 | **ремонт АКВ_шесть** | 30d? | 2026-04-27 09:00 A | 2026-06-05 18:00 A |  | 100% |  |  | 11h | 11h |
| 3703 | 14.6.1 | заявка тен | 1h | 2026-04-27 09:00 A | 2026-04-27 10:00 A |  | 100% | start no earlier than 2026-04-27 09:00 | Шуранов Ю | 1h | 1h |
| 3704 | 14.6.2 | доставка | 1d? | 2026-06-05 09:00 A | 2026-06-05 18:00 A | 3703 | 100% | finish no earlier than 2026-06-05 18:00 | Карабанов | 8h | 8h |
| 3705 | 14.6.3 | замена | 2h | 2026-05-24 09:00 A | 2026-05-25 11:00 A |  | 100% | start no earlier than 2026-05-24 09:00 | Дедов В | 2h | 2h |
| 3706 | 14.7 | проверить прибор | 1d? | 2026-05-06 09:00 A | 2026-05-06 18:00 A |  | 100% | start no earlier than 2026-05-06 08:00 | Шуранов Ю | 8h | 8h |
| 3707 | 14.8 | датчик температуры ?? Заявка | 1d? | 2026-04-27 09:00 A | 2026-04-27 18:00 A |  | 100% | start no earlier than 2026-04-27 08:00 | Шуранов Ю | 8h | 8h |
| 3708 | 14.9 | дистилятор отключается ?? Заявка | 1d? | 2026-04-27 09:00 A | 2026-04-27 18:00 A |  | 100% | start no earlier than 2026-04-27 08:00 | Шуранов Ю | 8h | 8h |
| 3709 | 14.10 | перенос старый прибор в архив 5ц | 30min | 2026-04-20 09:00 A | 2026-04-20 09:30 A |  | 100% | start no earlier than 2026-04-20 08:00 | Кладовщики | 0.5h | 0.5h |
| 3710 | 14.11 | замена 2 вентилятора | 4h | 2024-01-16 08:00 A | 2024-01-16 13:00 A |  | 100% | start no earlier than 2024-01-16 08:00 | Бобренок В | 4h | 4h |
| 3711 | 14.12 | ремонт соленоид | 2h | 2024-01-16 08:00 A | 2024-01-16 11:00 A |  | 100% | start no earlier than 2024-01-16 08:00 | Тимофеев В | 2h | 2h |
| 3712 | 14.13 | ремонт вытяжка №2 диагностика вентилятор | 30min | 2024-01-11 08:00 A | 2024-01-11 09:30 A |  | 100% | start no earlier than 2024-01-11 08:00 | Дедов В | 0.5h | 0.5h |
| 3713 | 14.14 | замена насос " агрегат | 1h | 2024-01-11 08:00 A | 2024-01-11 10:00 A |  | 100% | start no earlier than 2024-01-11 08:00 | Дедов В | 1h | 1h |
| 3714 | 14.15 | замена тен по доставке | 2h | 2026-03-17 09:00 A | 2026-03-17 11:00 A |  | 100% | start no earlier than 2026-03-17 09:00 | Макаревич А | 2h | 2h |
| 3715 | 15 | **цех наполнителей** | 194.12d | 2025-07-14 09:00 A | 2026-04-10 10:00 A |  | 100% |  |  | 10h | 10h |
| 3716 | 15.1 | взять со склада АКБ и клеммы заменить на погрузчике, старый АКБ отдать на 2 этаж склад | 1h | 2026-04-10 09:00 A | 2026-04-10 10:00 A |  | 100% | start no earlier than 2026-04-10 09:00 | Тимофеев В | 1h | 1h |
| 3717 | 15.2 | поменять пневмоцилиндр на нотис | 1h | 2026-04-09 09:00 A | 2026-04-09 10:00 A |  | 100% | start no earlier than 2026-04-10 09:00 | Тимофеев В | 1h | 1h |
| 3718 | 15.3 | проверить дист. Воду в АКБ погрузчика | 1h | 2026-04-01 09:00 A | 2026-04-01 10:00 A |  | 100% | start no earlier than 2026-04-01 09:00 | Тимофеев В | 1h | 1h |
| 3719 | 15.4 | просверлить больше, нарезать резьбу для крепления стола запайщика, резьба сорвана | 1h | 2026-03-20 09:00 A | 2026-03-20 10:00 A |  | 100% | start no earlier than 2026-03-20 09:00 | Бундин В | 1h | 1h |
| 3720 | 15.5 | ремонт компрессор. Проверка конденсаторов/не запускается мотор. Ключь у кладовщиков | 4h | 2025-07-14 09:00 A | 2025-07-14 13:00 A |  | 100% | start no earlier than 2025-07-14 09:00 | Бобренок В | 4h | 4h |
| 3721 | 15.6 | ТО компрессор / конвейер / запайщик | 2h | 2026-03-09 09:00 A | 2026-03-09 11:00 A |  | 100% | start no earlier than 2026-03-09 09:00 | Тимофеев В | 2h | 2h |

| ID | WBS | Task | Duration | Start | Finish | Predecessors | Complete | Remaining | Total slack | Constraint | Resources | Work | Actual work |
| --- | --- | --- | --- | --- | --- | --- | --- | --- | --- | --- | --- | --- | --- |
| 3722 | 16 | **офис** | 944.25d? | 2023-03-10 09:00 A | 2026-10-12 11:00 |  | 97% | 26.27d? | 112.34d |  |  | 223.67h | 217.17h |
| 3723 | 16.1 | Кинуть времянку в серверную | 1h | 2026-10-02 09:00 A | 2026-10-02 10:00 A |  | 100% |  |  | start no earlier than 2026-10-02 09:00 | Некрасов А; Труфанов А | 2h | 2h |
| 3724 | 16.2 | монтаж полочка Курдюмова продожить | 1h | 2026-09-22 09:00 A | 2026-09-22 10:00 A |  | 100% |  |  | start no earlier than 2026-09-22 09:00 | Тимофеев В | 1h | 1h |
| 3725 | 16.3 | **Ремонт бойлера** | 13.25d? | 2026-09-08 09:00 A | 2026-09-21 11:00 A |  | 100% |  |  |  |  | 7h | 7h |
| 3726 | 16.3.1 | Заявка тэна | 1d? | 2026-09-08 09:00 A | 2026-09-08 18:00 A |  | 100% |  |  | start no earlier than 2026-09-08 09:00 |  |  |  |
| 3727 | 16.3.2 | контроль доставка | 1d? | 2026-09-14 09:00 A | 2026-09-14 18:00 A |  | 100% |  |  | start no earlier than 2026-09-14 09:00 |  |  |  |
| 3728 | 16.3.3 | Повесить отремонтированный бойлер обратно в офис - проверить работу | 1h | 2026-09-18 09:00 A | 2026-09-18 10:00 A |  | 100% |  |  | start no earlier than 2026-09-18 09:00 | Тимофеев В | 1h | 1h |
| 3729 | 16.3.4 | устранить утечку / монтаж | 2h | 2026-09-21 09:00 A | 2026-09-21 11:00 A |  | 100% |  |  | start no earlier than 2026-09-21 09:00 | Некрасов А; Труфанов А | 4h | 4h |
| 3730 | 16.3.5 | Замена ТЭНа на бойлере, который в слесарке, получить на складе упаковки | 1h | 2026-09-16 09:00 A | 2026-09-16 10:00 A |  | 100% |  |  | start no earlier than 2026-09-16 08:00 | Бундин В | 1h | 1h |
| 3731 | 16.3.6 | Дефектовка бойлера, лежит в слесарке, проверка ТЭНов и анода, показывал кз по тэнам | 1h | 2026-09-14 09:00 A | 2026-09-14 10:00 A |  | 100% |  |  | start no earlier than 2026-09-14 08:00 | Макаревич А | 1h | 1h |
| 3732 | 16.4 | демонтаж шурупы с наличиников | 10min | 2026-07-10 09:00 A | 2026-07-10 09:10 A |  | 100% |  |  | start no earlier than 2026-07-10 09:00 | Тимофеев В | 0.17h | 0.17h |
| 3733 | 16.5 | взять на складе ламочку Е27 малого размера и поменять в муж. Туалете и закрыть плафоном | 1h | 2026-06-29 09:00 A | 2026-06-29 10:00 A |  | 100% |  |  | start no earlier than 2026-06-29 09:00 | Тимофеев В | 1h | 1h |
| 3734 | 16.6 | собрать аккуратно стеллаж для Буслаева (стеллаж на складе у Веры, подписан буквами ГД, мечковская) | 3h | 2026-06-13 09:00 A | 2026-06-15 12:00 A |  | 100% |  |  | start no earlier than 2026-06-13 09:00 | Бобренок В | 3h | 3h |
| 3735 | 16.7 | посмотреть что с розеткой у Ширяевой в кабинете | 1h | 2026-06-22 09:00 A | 2026-06-22 10:00 A |  | 100% |  |  | start no earlier than 2026-06-22 09:00 | Тимофеев В | 1h | 1h |
| 3736 | 16.8 | бухгалтерия настройка язычка двери, что бы дверь закрывалась без усилия | 1h | 2026-05-28 09:00 A | 2026-05-28 10:00 A |  | 100% |  |  | start no earlier than 2026-05-28 09:00 | Тимофеев В | 1h | 1h |
| 3737 | 16.9 | **полка мебельная** | 25.12d | 2026-05-18 09:00 A | 2026-06-22 10:00 A |  | 100% |  |  |  |  | 1.5h | 1.5h |
| 3738 | 16.9.1 | заявка крепеж | 15min | 2026-05-18 09:00 A | 2026-05-18 09:15 A |  | 100% |  |  | start no earlier than 2026-05-18 09:00 | Шуранов Ю | 0.25h | 0.25h |
| 3739 | 16.9.2 | контроль доставка | 15min | 2026-05-27 09:15 A | 2026-05-27 09:30 A | 3738FS+7d | 100% |  |  | start no earlier than 2026-05-15 08:00 | Шуранов Ю | 0.25h | 0.25h |
| 3740 | 16.9.3 | крепеж полки у Юли в кабинете (уголки на складе) | 1h | 2026-06-22 09:00 A | 2026-06-22 10:00 A | 3739 | 100% |  |  | start no earlier than 2026-06-22 09:00 | Тимофеев В | 1h | 1h |
| 3741 | 16.10 | монтаж диплом на стену нач хим лаб | 30min | 2026-05-15 09:00 A | 2026-05-15 09:30 A |  | 100% |  |  | start no earlier than 2026-05-15 09:00 | Тимофеев В | 0.5h | 0.5h |
| 3742 | 16.11 | монтаж розеток в серверной продолжить | 2h | 2026-04-23 09:00 A | 2026-04-23 11:00 A |  | 100% |  |  | start no earlier than 2026-04-23 09:00 | Тимофеев В; Бобренок В | 4h | 4h |
| 3743 | 16.12 | ремонт стул в столовая, спинка | 1h | 2026-04-21 09:00 A | 2026-04-21 10:00 A |  | 100% |  |  | start no earlier than 2026-04-21 09:00 | Тимофеев В | 1h | 1h |
| 3744 | 16.13 | **полочка под пк** | 0.12d | 2026-06-26 09:00 A | 2026-06-26 10:00 A |  | 100% |  |  |  | Тимофеев В | 2h | 2h |
| 3745 | 16.13.1 | замер | 1h | 2026-06-26 09:00 A | 2026-06-26 10:00 A |  | 100% |  |  | start no earlier than 2026-06-26 09:00 | Тимофеев В | 1h | 1h |
| 3746 | 16.14 | прикрутить декоративную пластину на ручке в столовой | 1h | 2026-04-15 09:00 A | 2026-04-15 10:00 A |  | 100% |  |  | start no earlier than 2026-04-17 08:00 | Макаревич А | 1h | 1h |
| 3747 | 16.15 | монтаж розеток 4 шт. в серверной | 2h | 2026-04-15 09:00 A | 2026-04-15 11:00 A |  | 100% |  |  | start no earlier than 2026-04-17 08:00 | Макаревич А | 2h | 2h |
| 3748 | 16.16 | протянуть кабель UTP от кабинета Курдюмовой до переговорки | 2h | 2026-04-17 08:00 A | 2026-04-17 11:00 A |  | 100% |  |  | start no earlier than 2026-04-17 08:00 | Тимофеев В; Некрасов А | 4h | 4h |
| 3749 | 16.17 | убрать шнурок у Курдюмовой в кабинете | 1h | 2026-04-17 08:00 A | 2026-04-17 10:00 A |  | 100% |  |  | start no earlier than 2026-04-17 08:00 | Тимофеев В | 1h | 1h |
| 3750 | 16.18 | ремонт кровля над каб Курдюмовой | 20d | 2026-06-15 09:00 A | 2026-07-10 18:00 A |  | 100% |  |  | start no earlier than 2026-06-15 09:00 | Олег | 160h | 160h |
| 3751 | 16.19 | ремонт крепеж пано каб продаж | 1h | 2026-03-24 08:00 A | 2026-03-24 10:00 A |  | 100% |  |  | start no earlier than 2026-03-24 08:00 | Тимофеев В | 1h | 1h |
| 3752 | 16.20 | крепить розетку для проектора | 2h | 2025-04-09 09:00 A | 2025-04-09 11:00 A |  | 100% |  |  | start no earlier than 2025-04-09 09:00 | Тимофеев В | 2h | 2h |
| 3753 | 16.21 | упорядочить кабеля под тв | 2h | 2025-04-09 09:00 A | 2025-04-09 11:00 A |  | 100% |  |  | start no earlier than 2025-04-09 09:00 | Некрасов А | 2h | 2h |
| 3754 | 16.22 | выбивает автомат у Монича, нет селективности, замена автоматов. Ремонт освещения корридор | 4h | 2026-09-29 09:00 | 2026-09-29 13:00 |  |  |  | 122.09d | start no earlier than 2026-09-29 09:00 | Дедов В | 4h |  |
| 3755 | 16.23 | монтаж ключница для пожарной двери 2 и 3 этаж | 1h | 2026-03-16 09:00 A | 2026-03-16 10:00 A |  | 100% |  |  | start no earlier than 2026-03-16 09:00 | Тимофеев В | 1h | 1h |
| 3756 | 16.24 | замена регистр отопления нач снабжения | 2h | 2026-10-12 09:00 | 2026-10-12 11:00 |  |  |  | 112.34d | start no earlier than 2026-10-12 09:00 | Некрасов А | 2h |  |
| 3757 | 16.25 | сделать заглушки в комнату пищи | 30min | 2026-09-01 09:00 | 2026-09-01 09:30 |  |  |  | 149.53d | start no earlier than 2026-09-01 09:00 | Домоводов К | 0.5h |  |

| ID | WBS | Task | Type | Duration | Start | Finish | Predecessors | Complete | Remaining | Total slack | Free slack | Constraint | Resources | Work | Actual work |
| --- | --- | --- | --- | --- | --- | --- | --- | --- | --- | --- | --- | --- | --- | --- | --- |
| 3758 | 16.26 | **вентиляция в переговорке и к приема пищи** |  | 812d? | 2023-03-10 09:00 A | 2026-04-20 18:00 A |  | 100% |  |  |  |  |  | 17h | 17h |
| 3759 | 16.26.1 | взять на желтом складе (наша половина) вентилятор канальный и проверить работает или нет |  | 1h | 2023-03-10 09:00 A | 2023-03-10 10:00 A |  | 100% |  |  |  |  | Бундин В | 1h | 1h |
| 3760 | 16.26.2 | заявка на КП = 300к |  | 4h | 2026-03-13 09:00 A | 2026-03-13 13:00 A |  | 100% |  |  |  | start no earlier than 2026-03-13 09:00 | Домоводов К | 4h | 4h |
| 3761 | 16.26.3 | монтаж ВК200 + кабель |  | 6h | 2026-04-20 09:00 A | 2026-04-20 16:00 A |  | 100% |  |  |  | start no earlier than 2026-04-20 08:00 | Некрасов А; Труфанов А | 12h | 12h |
| 3762 | 16.26.4 | установка на крыше офиса, приточка в переговорку |  | 1d? | 2026-04-20 09:00 A | 2026-04-20 18:00 A |  | 100% |  |  |  | start no earlier than 2026-04-20 09:00 |  |  |  |
| 3763 | 16.27 | **подсветка продукции в пепреговорке вращающийся лаезерный круг с эмблемой** |  | 0.12d | 2026-03-13 09:00 A | 2026-03-13 10:00 A |  | 100% |  |  |  |  |  | 1h | 1h |
| 3764 | 16.27.1 | найти поставщика / узнать стоимость |  | 1h | 2026-03-13 09:00 A | 2026-03-13 10:00 A |  | 100% |  |  |  | start no earlier than 2026-03-13 09:00 | Зорькин В | 1h | 1h |
| 3765 | 17 | **склад упаковки** |  | 184.12d? | 2026-04-02 09:00 A | 2026-11-27 10:00 |  | 99% | 0.73d? | 73.47d |  |  |  | 400.75h | 399.25h |
| 3766 | 17.1 | На желтом складе наведение порядка. Всю вентиляцию утащить на синий склад. | manual | 2h | 2026-11-21 09:00 A | 2026-11-21 11:00 A |  | 100% |  |  |  | start no earlier than 2026-11-21 09:00 | Тимофеев В | 2h | 2h |
| 3767 | 17.2 | **ремонт роль ворот** |  | 12.12d | 2026-11-13 09:00 | 2026-11-27 10:00 |  |  |  | 73.47d |  |  |  | 1.5h |  |
| 3768 | 17.2.1 | заявка ролик |  | 15min | 2026-11-13 09:00 | 2026-11-13 09:15 |  |  |  | 77.41d | 0d | start no earlier than 2026-11-13 09:00 | Домоводов К | 0.25h |  |
| 3769 | 17.2.2 | контроль доставка |  | 15min | 2026-11-20 09:15 | 2026-11-20 09:30 | 3768FS+7d |  |  | 77.41d | 3.94d | start no earlier than 2026-11-09 08:00 | Зорькин В | 0.25h |  |
| 3770 | 17.2.3 | замена |  | 1h | 2026-11-27 09:00 | 2026-11-27 10:00 | 3769FS+1d |  |  | 73.47d |  | start no earlier than 2026-11-27 09:00 | Тимофеев В | 1h |  |
| 3771 | 17.3 | Замена терморегулятора о котором ты мне говорил на болере склада упаковки, новые должны быть на складе, если нет, снять со старого в контейнере | manual | 2h | 2026-10-11 09:00 A | 2026-10-11 11:00 A |  | 100% |  |  |  | start no earlier than 2026-10-11 09:00 | Бобренок В | 2h | 2h |
| 3772 | 17.4 | Установить новый бойлер, старый на ремонт в слесарку |  | 30min | 2026-10-08 09:00 A | 2026-10-08 09:30 A |  | 100% |  |  |  | start no earlier than 2026-10-08 08:00 | Бобренок В | 0.5h | 0.5h |
| 3773 | 17.5 | Повесить доп светильники 3 шт (спросить у Лехи, где нужны) |  | 3h | 2026-10-02 09:00 A | 2026-10-02 12:00 A |  | 100% |  |  |  | start no earlier than 2026-10-02 09:00 | Труфанов А; Некрасов А | 6h | 6h |
| 3774 | 17.6 | переделать крепление рамы наруж блока - к МК здания, анкера убрать |  | 4h | 2026-10-07 09:00 A | 2026-10-07 13:00 A |  | 100% |  |  |  | start no earlier than 2026-10-07 09:00 | Некрасов А; Труфанов А | 8h | 8h |
| 3775 | 17.7 | установить светильники над столом Веры и перенести светильник над стеллажами |  | 3h | 2026-08-25 09:00 A | 2026-08-25 12:00 A |  | 100% |  |  |  | start no earlier than 2026-08-25 09:00 | Тимофеев В; Некрасов А | 6h | 6h |
| 3776 | 17.8 | втягиваем кабель 5х4 от реф, для подключения кондиционера, место установки щитка покажу- подключаем кондиционер |  | 1d? | 2026-07-31 08:00 A | 2026-07-31 18:00 A |  | 100% |  |  |  | start no earlier than 2026-07-31 08:00 | Труфанов А; Бобренок В | 16h | 16h |
| 3777 | 17.9 | сделать акты списания по результатам инвентаризации |  | 1d? | 2026-06-22 09:00 A | 2026-06-22 18:00 A |  | 100% |  |  |  | start no earlier than 2026-06-22 09:00 | Шуранов Ю | 8h | 8h |
| 3778 | 17.10 | **установить бойлер** |  | 92.12d | 2026-06-01 09:00 A | 2026-09-28 10:00 A |  | 100% |  |  |  |  |  | 13h | 13h |
| 3779 | 17.10.1 | Замена тэна на бойлере |  | 1h | 2026-09-28 09:00 A | 2026-09-28 10:00 A |  | 100% |  |  |  | start no earlier than 2026-09-28 08:00 | Бобренок В | 1h | 1h |
| 3780 | 17.10.2 | монтаж кабель + розетка с щитка 1 этажа на 2 этаж |  | 4h | 2026-06-03 09:00 A | 2026-06-03 13:00 A |  | 100% |  |  |  | start no earlier than 2026-06-03 09:00 | Некрасов А; Бундин В | 8h | 8h |
| 3781 | 17.10.3 | монтаж бойлер на стену |  | 2h | 2026-06-01 09:00 A | 2026-06-01 11:00 A | 3780 | 100% |  |  |  | start no earlier than 2026-06-01 09:00 | Тимофеев В | 2h | 2h |
| 3782 | 17.10.4 | подключение сантехника |  | 2h | 2026-06-16 09:00 A | 2026-06-16 11:00 A | 3781 | 100% |  |  |  | start no earlier than 2026-06-16 09:00 | Тимофеев В | 2h | 2h |
| 3783 | 17.11 | отремонтировать ручку на входной двери |  | 1h | 2026-05-16 09:00 A | 2026-05-18 10:00 A |  | 100% |  |  |  | start no earlier than 2026-05-16 09:00 |  |  |  |

| ID | WBS | Task | Type | Duration | Start | Finish | Predecessors | Complete | Remaining | Total slack | Free slack | Constraint | Resources | Work | Actual work |
| --- | --- | --- | --- | --- | --- | --- | --- | --- | --- | --- | --- | --- | --- | --- | --- |
| 3784 | 17.12 | **анкерить стеллажи** |  | 26d | 2026-05-15 09:00 A | 2026-06-21 13:00 A |  | 100% |  |  |  |  |  | 4.75h | 4.75h |
| 3785 | 17.12.1 | заявка анкеры |  | 30min | 2026-05-15 09:00 A | 2026-05-15 09:30 A |  | 100% |  |  |  | start no earlier than 2026-05-15 09:00 | Шуранов Ю | 0.5h | 0.5h |
| 3786 | 17.12.2 | контроль доставка |  | 15min | 2026-05-27 09:30 A | 2026-05-27 09:45 A | 3785FS+10d | 100% |  |  |  | start no earlier than 2026-05-14 08:00 | Шуранов Ю | 0.25h | 0.25h |
| 3787 | 17.12.3 | монтаж / указать доделать оставшиеся анкера | manual | 4h | 2026-06-21 09:00 A | 2026-06-21 13:00 A | 3786 | 100% |  |  |  | start no earlier than 2026-06-21 09:00 | Бундин В | 4h | 4h |
| 3788 | 17.13 | заменить тросик на воротах |  | 2h | 2026-04-29 09:00 A | 2026-04-29 11:00 A |  | 100% |  |  |  | start no earlier than 2026-04-29 09:00 | Тимофеев В; Бундин В | 4h | 4h |
| 3789 | 17.14 | **замена двери** |  | 40.12d? | 2026-04-02 09:00 A | 2026-05-28 10:00 A |  | 100% |  |  |  |  |  | 329h | 329h |
| 3790 | 17.14.1 | заказ замерщика / получить счет |  | 1h | 2026-04-02 09:00 A | 2026-04-02 10:00 A |  | 100% |  |  |  | start no earlier than 2026-04-02 08:00 | Домоводов К | 1h | 1h |
| 3791 | 17.14.2 | изготовление |  | 40d | 2026-04-02 10:00 A | 2026-05-28 10:00 A | 3790 | 100% |  |  |  | start no earlier than 2026-04-02 08:00 | Подрядчик | 320h | 320h |
| 3792 | 17.14.3 | замена |  | 1d? | 2026-05-19 10:00 A | 2026-05-20 10:00 A | 3791 | 100% |  |  |  | start no earlier than 2026-04-02 08:00 | Подрядчик | 8h | 8h |
| 3793 | 18 | **РЭФ контейнеры** |  | 217.59d? | 2026-05-28 09:00 A | 2027-03-10 14:45 |  | 15% | 185.84d? | 0d |  |  |  | 66.25h | 13.5h |
| 3794 | 18.1 | уложить палеты в проходе к площадке / вырубить кусты с дворником |  | 1h | 2026-05-28 09:00 A | 2026-05-28 10:00 A |  | 100% |  |  |  | start no earlier than 2026-05-28 09:00 | Некрасов А; Бобренок В | 1h | 1h |
| 3795 | 18.2 | монтаж площадка обслуживания внешнего блока. 4 стойки труба 100 + лист 5 |  | 7h | 2026-05-28 09:00 A | 2026-05-28 17:00 A |  | 100% |  |  |  | start no earlier than 2026-05-28 09:00 | Некрасов А; Бобренок В | 12h | 12h |
| 3796 | 18.3 | **ремонт сплит система холодильная камера №1** |  | 27.12d | 2026-08-12 09:00 A | 2026-09-15 10:00 |  | 40% | 16.27d | 136.47d |  |  |  | 1.25h | 0.5h |
| 3797 | 18.3.1 | отправить фото участка |  | 15min | 2026-08-12 09:00 A | 2026-08-12 09:15 A |  | 100% |  |  |  | start no earlier than 2026-08-12 09:00 | Домоводов К | 0.25h | 0.25h |
| 3798 | 18.3.2 | получить счет на ремонт |  | 15min | 2026-09-08 09:00 A | 2026-09-08 09:15 A |  | 100% |  |  |  | start no earlier than 2026-09-08 09:00 | Домоводов К | 0.25h | 0.25h |
| 3799 | 18.3.3 | оплата |  | 15min | 2026-09-09 09:15 | 2026-09-09 09:30 | 3798FS+1d |  |  | 136.47d | 0d | start no earlier than 2026-09-09 09:00 | Домоводов К | 0.25h |  |
| 3800 | 18.3.4 | контроль даты ремонта |  | 15min | 2026-09-14 09:30 | 2026-09-14 09:45 | 3799FS+5d |  |  | 136.47d | 0d | start no earlier than 2026-08-10 08:00 | Зорькин В | 0.25h |  |
| 3801 | 18.3.5 | приемка работ |  | 15min | 2026-09-15 09:45 | 2026-09-15 10:00 | 3800FS+1d |  |  | 136.47d |  | start no earlier than 2026-08-10 08:00 | Зорькин В | 0.25h |  |
| 3802 | 18.4 | **монтаж холодильной машины №2** |  | 6.59d? | 2027-03-02 09:00 | 2027-03-10 14:45 |  |  |  | 0d |  |  |  | 45h |  |
| 3803 | 18.4.1 | решение какую ставить машину - на весну |  | 30min | 2027-03-02 09:00 | 2027-03-02 09:30 |  |  |  | 0d |  | start no earlier than 2027-03-02 09:00 | Домоводов К | 0.5h |  |
| 3804 | 18.4.2 | заключение договор |  | 3d | 2027-03-02 09:30 | 2027-03-05 09:30 | 3803 |  |  | 0d |  | start no earlier than 2026-08-12 09:00 | Домоводов К | 24h |  |
| 3805 | 18.4.3 | оплата |  | 15min | 2027-03-08 09:30 | 2027-03-08 09:45 | 3804FS+1d |  |  | 0d |  | start no earlier than 2026-08-18 09:00 | Домоводов К | 0.25h |  |
| 3806 | 18.4.4 | контроль доставки , начала работ |  | 1d? | 2027-03-08 09:45 | 2027-03-09 09:45 | 3805 |  |  | 0d |  | start no earlier than 2026-08-10 08:00 | Зорькин В | 8h |  |
| 3807 | 18.4.5 | **монтаж кабель силовой** |  | 0.5d | 2027-03-09 09:45 | 2027-03-09 14:45 | 3806 |  |  | 0d |  |  |  | 4.25h |  |
| 3808 | 18.4.5.1 | проверка поставки |  | 15min | 2027-03-09 09:45 | 2027-03-09 10:00 |  |  |  | 0.47d |  | start no earlier than 2026-08-10 08:00 | Зорькин В | 0.25h |  |
| 3809 | 18.4.5.2 | монтаж |  | 4h | 2027-03-09 09:45 | 2027-03-09 14:45 |  |  |  | 0d |  | start no earlier than 2026-08-10 08:00 | Некрасов А | 4h |  |
| 3810 | 18.4.6 | монтаж |  | 1d? | 2027-03-09 14:45 | 2027-03-10 14:45 | 3807 |  |  | 0d |  | start no earlier than 2026-08-10 08:00 | Подрядчик | 8h |  |

| ID | WBS | Task | Type | Duration | Start | Finish | Predecessors | Complete | Remaining | Total slack | Free slack | Constraint | Resources | Work | Actual work |
| --- | --- | --- | --- | --- | --- | --- | --- | --- | --- | --- | --- | --- | --- | --- | --- |
| 3811 | 18.5 | **утепление контейнера №2 под рефрежератор** |  | 0.5d | 2026-08-21 09:00 | 2026-08-21 13:00 |  |  |  | 0d |  |  |  | 7h |  |
| 3812 | 18.5.1 | продолжить выравнивание пены по периметру ножовкой для будующей установки профлиста (задание, если нечем заняться) | manual | 2h | 2026-08-21 09:00 | 2026-08-21 11:00 |  |  |  |  |  | start no earlier than 2026-08-21 09:00 | Некрасов А; Дедов В | 4h |  |
| 3813 | 18.5.2 | установка профлиста |  | 2h | 2026-08-21 11:00 | 2026-08-21 13:00 | 3812 |  |  | 156.09d |  | start no earlier than 2026-08-11 09:00 | Некрасов А; Дедов В | 3h |  |
| 3814 | 19 | **обучение** |  | 655d? | 2024-05-14 09:00 A | 2026-11-03 18:00 |  | 45% | 359.51d? | 94.59d |  |  |  | 138h | 65h |
| 3815 | 19.1 | Оперативные работы/ принятие заявок на производстве |  | 1d? | 2026-11-03 09:00 | 2026-11-03 18:00 |  |  |  | 94.59d |  | start no earlier than 2026-11-03 09:00 | Николаев | 8h |  |
| 3816 | 19.2 | **инструкция управлления дозаций жира** |  | 1.5d | 2026-09-09 09:00 | 2026-09-10 13:00 |  |  |  | 141.09d |  |  |  | 12h |  |
| 3817 | 19.2.1 | подготовка гидравлической и функциональной схем системы |  | 4h | 2026-09-09 09:00 | 2026-09-09 13:00 |  |  |  | 141.09d | 0d | start no earlier than 2026-09-09 09:00 | Зорькин В | 4h |  |
| 3818 | 19.2.2 | описание принципов регулирования |  | 4h | 2026-09-09 14:00 | 2026-09-09 18:00 | 3817 |  |  | 141.09d | 0d | start no earlier than 2026-08-31 09:00 | Зорькин В | 4h |  |
| 3819 | 19.2.3 | пошаговый алогритм действий по операциям замена фильтров, остановка пуск, настройка режимов |  | 4h | 2026-09-10 09:00 | 2026-09-10 13:00 | 3818 |  |  | 141.09d |  | start no earlier than 2026-08-31 09:00 | Зорькин В | 4h |  |
| 3820 | 19.3 | настройка и ремонты упаковщиков |  | 1h | 2026-02-27 09:00 A | 2026-02-27 10:00 A |  | 100% |  |  |  | start no earlier than 2026-02-27 08:00 | Труфанов А; Бундин В | 2h | 2h |
| 3821 | 19.4 | подготовить памятку по чистке ножа для бестром |  | 4h | 2026-09-04 09:00 A | 2026-09-04 13:00 A |  | 100% |  |  |  | start no earlier than 2026-09-04 09:00 | Зорькин В | 4h | 4h |
| 3822 | 19.5 | бестром |  | 2h | 2025-09-02 09:00 A | 2025-09-02 11:00 A |  | 100% |  |  |  | start no earlier than 2025-09-02 09:00 | Труфанов А; Зорькин В | 4h | 4h |
| 3823 | 19.6 | квадропак |  | 2h | 2025-09-02 11:00 A | 2025-09-02 13:00 A | 3822 | 100% |  |  |  | start no earlier than 2025-09-02 09:00 | Труфанов А; Зорькин В | 4h | 4h |
| 3824 | 19.7 | инструкция парогенератор управление по датчику давления |  | 4h | 2025-01-16 09:00 A | 2025-01-16 13:00 A |  | 100% |  |  |  | start no earlier than 2025-01-16 09:00 | Зорькин В | 4h | 4h |
| 3825 | 19.8 | инструкция по работе на теко 1.5 новый |  | 2d | 2025-01-17 09:00 A | 2025-01-20 18:00 A | 3824 | 100% |  |  |  | start no earlier than 2025-01-17 09:00 | Зорькин В | 16h | 16h |
| 3826 | 19.9 | инструкция ремонт запайщика |  | 1d? | 2025-01-17 09:00 A | 2025-01-17 18:00 A |  | 100% |  |  |  | start no earlier than 2025-01-17 09:00 | Зорькин В | 8h | 8h |
| 3827 | 19.10 | Составить список ЗИП - ежедневно вносить приход / расход |  | 1h | 2024-05-14 09:00 | 2024-05-14 10:00 |  |  |  | 749.47d |  | start no earlier than 2024-05-14 09:00 | Шуранов Ю | 1h |  |
| 3828 | 19.11 | составить инструкцию по затягиванию фильеры и соосности муфты |  | 4h | 2024-05-14 09:00 | 2024-05-14 13:00 |  |  |  | 749.09d |  | start no earlier than 2024-05-14 09:00 | Шуранов Ю | 4h |  |
| 3829 | 19.12 | составитьт инструкцию настройка бестром - формирование шва |  | 4h | 2024-05-14 09:00 | 2024-05-14 13:00 |  |  |  | 749.09d |  | start no earlier than 2024-05-14 09:00 | Шуранов Ю | 4h |  |
| 3830 | 19.13 | составитьт инструкцию настройка бестром - заправка ленты зип лок |  | 4h | 2024-05-14 09:00 | 2024-05-14 13:00 |  |  |  | 749.09d |  | start no earlier than 2024-05-14 09:00 | Шуранов Ю | 4h |  |
| 3831 | 19.14 | **формирование шаблона настройки оборудования** |  | 4d | 2024-09-06 09:00 A | 2024-09-11 18:00 A |  | 100% |  |  |  |  |  | 21h | 21h |
| 3832 | 19.14.1 | **БЕСТРОМ** |  | 2.25d | 2024-09-06 09:00 A | 2024-09-10 11:00 A |  | 100% |  |  |  |  |  | 7h | 7h |
| 3833 | 19.14.1.1 | определить базовые точки относительно которых будет проводится замер в 3х плоскостях - флажки верх, флажки низ, смыкание ножа, центр трубы |  | 1h | 2024-09-06 09:00 A | 2024-09-06 10:00 A |  | 100% |  |  |  | start no earlier than 2024-09-06 08:00 | Зорькин В | 1h | 1h |
| 3834 | 19.14.1.2 | обвести в PAINT фото методику измерений, присвоить \имя каждому размеру |  | 2h | 2024-09-06 10:00 A | 2024-09-06 12:00 A | 3833 | 100% |  |  |  | start no earlier than 2024-09-06 09:00 | Зорькин В | 2h | 2h |
| 3835 | 19.14.1.3 | создать карту / таблицу настройки. Размер-дата-фио |  | 2h | 2024-09-09 09:00 A | 2024-09-09 11:00 A | 3834 | 100% |  |  |  | start no earlier than 2024-09-09 09:00 | Зорькин В | 2h | 2h |
| 3836 | 19.14.1.4 | оформить ведение карты в журнал |  | 2h | 2024-09-10 09:00 A | 2024-09-10 11:00 A | 3835 | 100% |  |  |  | start no earlier than 2024-09-10 09:00 | Зорькин В | 2h | 2h |

| ID | WBS | Task | Duration | Start | Finish | Predecessors | Complete | Remaining | Total slack | Constraint | Resources | Work | Actual work |
| --- | --- | --- | --- | --- | --- | --- | --- | --- | --- | --- | --- | --- | --- |
| 3837 | 19.14.2 | **ТЕКО 1.5** | 0.88d | 2024-09-10 11:00 A | 2024-09-11 10:00 A | 3832 | 100% |  |  |  |  | 7h | 7h |
| 3838 | 19.14.2.1 | определить базовые точки относительно которых будет проводится замер в 3х плоскостях - флажки верх, флажки низ, смыкание ножа, центр трубы | 1h | 2024-09-10 11:00 A | 2024-09-10 12:00 A |  | 100% |  |  | start no earlier than 2024-09-10 09:00 | Зорькин В | 1h | 1h |
| 3839 | 19.14.2.2 | обвести в PAINT фото методику измерений, присвоить \имя каждому размеру | 2h | 2024-09-10 12:00 A | 2024-09-10 15:00 A | 3838 | 100% |  |  | start no earlier than 2024-09-06 08:00 | Зорькин В | 2h | 2h |
| 3840 | 19.14.2.3 | создать карту / таблицу настройки. Размер-дата-фио | 2h | 2024-09-10 15:00 A | 2024-09-10 17:00 A | 3839 | 100% |  |  | start no earlier than 2024-09-06 08:00 | Зорькин В | 2h | 2h |
| 3841 | 19.14.2.4 | оформить ведение карты в журнал | 2h | 2024-09-10 17:00 A | 2024-09-11 10:00 A | 3840 | 100% |  |  | start no earlier than 2024-09-06 08:00 | Зорькин В | 2h | 2h |
| 3842 | 19.14.3 | **ТЕКО 0,4** | 0.88d | 2024-09-11 10:00 A | 2024-09-11 18:00 A | 3837 | 100% |  |  |  |  | 7h | 7h |
| 3843 | 19.14.3.1 | определить базовые точки относительно которых будет проводится замер в 3х плоскостях - флажки верх, флажки низ, смыкание ножа, центр трубы | 1h | 2024-09-11 10:00 A | 2024-09-11 11:00 A |  | 100% |  |  | start no earlier than 2024-09-06 08:00 | Зорькин В | 1h | 1h |
| 3844 | 19.14.3.2 | обвести в PAINT фото методику измерений, присвоить \имя каждому размеру | 2h | 2024-09-11 11:00 A | 2024-09-11 13:00 A | 3843 | 100% |  |  | start no earlier than 2024-09-06 08:00 | Зорькин В | 2h | 2h |
| 3845 | 19.14.3.3 | создать карту / таблицу настройки. Размер-дата-фио | 2h | 2024-09-11 14:00 A | 2024-09-11 16:00 A | 3844 | 100% |  |  | start no earlier than 2024-09-06 08:00 | Зорькин В | 2h | 2h |
| 3846 | 19.14.3.4 | оформить ведение карты в журнал | 2h | 2024-09-11 16:00 A | 2024-09-11 18:00 A | 3845 | 100% |  |  | start no earlier than 2024-09-06 08:00 | Зорькин В | 2h | 2h |
| 3847 | 19.15 | **наполнение базы данных по занятиям, запись видео уроки** | 5.12d | 2024-09-09 09:00 A | 2024-09-16 10:00 |  | 5% | 4.88d | 660.47d |  |  | 42h | 2h |
| 3848 | 19.15.1 | заяавка фотокамера, штатив | 1h | 2024-09-09 09:00 A | 2024-09-09 10:00 A |  | 100% |  |  | start no earlier than 2024-09-09 09:00 | Зорькин В | 1h | 1h |
| 3849 | 19.15.2 | доставка | 5d | 2024-09-09 10:00 | 2024-09-16 10:00 | 3848 |  |  | 660.47d | start no earlier than 2024-09-06 08:00 | Мультан | 40h |  |
| 3850 | 19.15.3 | **Бестром** | 0.12d | 2024-09-16 09:00 A | 2024-09-16 10:00 A |  | 100% |  |  |  |  | 1h | 1h |
| 3851 | 19.15.3.1 | урок 1 | 1h | 2024-09-16 09:00 A | 2024-09-16 10:00 A | 3849 | 100% |  |  | start no earlier than 2024-09-16 09:00 | Зорькин В | 1h | 1h |
| 3852 | 20 | **администрантивные** | 186.12d | 2026-03-19 09:00 A | 2026-11-17 10:00 |  | 87% | 23.28d | 81.47d |  |  | 106.92h | 91.92h |
| 3853 | 20.1 | Проведение экзамена Николаеву Юре на предмет понимания и знания технологического оборудования на предприятии. Где что включается, выключается, как производится ремонт, принцип работы. Где проложены основные магистрали Электроснабжения и водоснабжения | 1h | 2026-11-17 09:00 A | 2026-11-17 10:00 A |  | 100% |  |  | start no earlier than 2026-11-17 08:00 | Макаревич А | 1h | 1h |
| 3854 | 20.2 | Установить ящики желаний (узнавать места размещений у Кости) | 2h | 2026-11-16 09:00 | 2026-11-16 11:00 |  |  |  | 82.34d | start no earlier than 2026-11-16 09:00 | Труфанов А; Некрасов А | 4h |  |
| 3855 | 20.3 | Контроль монтажа по водоподготовке в 1 цеху, проверить материалы | 1h | 2026-10-28 09:00 A | 2026-10-28 10:00 A |  | 100% |  |  | start no earlier than 2026-10-28 09:00 | Труфанов А; Некрасов А | 2h | 2h |
| 3856 | 20.4 | спсиание материалов | 6h | 2026-09-01 09:00 | 2026-09-01 16:00 |  |  |  | 148.84d | start no earlier than 2026-09-01 09:00 | Шуранов Ю | 6h |  |
| 3857 | 20.5 | составить список остатков шнеков в таблицу зип | 2h | 2026-09-01 09:00 | 2026-09-01 11:00 |  |  |  | 149.34d | start no earlier than 2026-09-01 09:00 | Шуранов Ю | 2h |  |
| 3858 | 20.6 | подготовить спсток перчаток | 3h | 2026-03-19 09:00 A | 2026-03-19 12:00 A |  | 100% |  |  | start no earlier than 2026-03-19 08:00 | Зорькин В | 3h | 3h |
| 3859 | 20.7 | подготовка данных дебеторская задолжность | 3h | 2026-03-19 09:00 A | 2026-03-19 12:00 A |  | 100% |  |  | start no earlier than 2026-03-19 08:00 | Зорькин В | 3h | 3h |
| 3860 | 20.8 | договор по ремонту стиральных машинок. Переговоры | 1h | 2026-09-01 09:00 | 2026-09-01 10:00 |  |  |  | 149.47d | start no earlier than 2026-09-01 09:00 | Шуранов Ю | 1h |  |
| 3861 | 20.9 | Составить список на год ППР (планово-предупредительные работы) на оборудовании Цеха №1, Цеха №2, Цеха навесок. | 2h | 2026-09-01 09:00 | 2026-09-01 11:00 |  |  |  | 149.34d | start no earlier than 2026-09-01 09:00 | Шуранов Ю | 2h |  |

| ID | WBS | Task | Type | Duration | Start | Finish | Predecessors | Complete | Remaining | Total slack | Free slack | Constraint | Resources | Work | Actual work |
| --- | --- | --- | --- | --- | --- | --- | --- | --- | --- | --- | --- | --- | --- | --- | --- |
| 3862 | 20.10 | **Ключи на шкафы** |  | 111.25d | 2026-04-16 09:00 A | 2026-09-15 11:00 A |  | 100% |  |  |  |  |  | 82.75h | 82.75h |
| 3863 | 20.10.1 | Заказать |  | 30min | 2026-04-16 09:00 A | 2026-04-16 09:30 A |  | 100% |  |  |  | start no earlier than 2026-04-16 09:00 | Зорькин В | 0.5h | 0.5h |
| 3864 | 20.10.2 | доставить |  | 10d | 2026-04-16 09:30 A | 2026-04-30 09:30 A | 3863 | 100% |  |  |  | start no earlier than 2026-04-14 09:00 | Карабанов | 80h | 80h |
| 3865 | 20.10.3 | контроль доставка |  | 15min | 2026-05-15 09:00 A | 2026-05-15 09:15 A |  | 100% |  |  |  | start no earlier than 2026-05-15 09:00 | Зорькин В | 0.25h | 0.25h |
| 3866 | 20.10.4 | Повешать на веревочку ключи на все шкафы ВРУ и электрощитки (ключи на складе, веревочки взять на производстве, нитки) |  | 2h | 2026-09-15 09:00 A | 2026-09-15 11:00 A | 3864 | 100% |  |  |  | start no earlier than 2026-09-15 09:00 | Бобренок В | 2h | 2h |
| 3867 | 20.11 | Расписаться в нашем кабинете |  | 10min | 2026-07-28 09:00 A | 2026-07-28 09:10 A |  | 100% |  |  |  | start no earlier than 2026-07-28 09:00 | Макаревич А | 0.17h | 0.17h |
| 3868 | 21 | **ТБ** |  | 933.25d? | 2023-06-06 09:00 A | 2026-12-15 11:00 |  | 39% | 569.36d? | 61.34d |  |  |  | 249.92h | 96.67h |
| 3869 | 21.1 | инструктаж по ТБ оформить |  | 1h | 2026-08-31 09:00 | 2026-08-31 10:00 |  |  |  | 150.47d |  | start no earlier than 2026-08-31 09:00 | Шуранов Ю | 1h |  |
| 3870 | 21.2 | выполнить перелкаду похарных шлангов офис, 1ц |  | 2h | 2026-12-15 09:00 | 2026-12-15 11:00 |  |  |  | 61.34d |  | start no earlier than 2026-12-15 09:00 | Некрасов А; Труфанов А | 4h |  |
| 3871 | 21.3 | маркировка лестниц / оформление журналов |  | 2h | 2026-08-31 09:00 | 2026-08-31 11:00 |  |  |  | 150.34d |  | start no earlier than 2026-08-31 09:00 | Шуранов Ю | 2h |  |
| 3872 | 21.4 | внеплановый инструктаж персонала при аварии на проризводстве |  | 2h | 2025-03-26 09:00 A | 2025-03-26 11:00 A |  | 100% |  |  |  | start no earlier than 2025-03-26 08:00 | Шуранов Ю | 2h | 2h |
| 3873 | 21.5 | заявка на табличики НЕ ВКЛЮЧАТЬ |  | 10min | 2025-03-26 09:00 A | 2025-03-26 09:10 A |  | 100% |  |  |  | start no earlier than 2025-03-26 08:00 | Шуранов Ю | 0.17h | 0.17h |
| 3874 | 21.6 | офорить наряд допуск на монтаж кабеля КПП |  | 30min | 2024-08-05 09:00 A | 2024-08-05 09:30 A |  | 100% |  |  |  | start no earlier than 2024-08-05 09:00 | Шуранов Ю | 0.5h | 0.5h |
| 3875 | 21.7 | составить схемы кабельных линий по производству |  | 5d | 2026-09-01 09:00 | 2026-09-05 18:00 |  |  |  | 144.59d |  | start no earlier than 2026-09-01 09:00 | Шуранов Ю | 40h |  |
| 3876 | 21.8 | организация аттестации электроперсонала |  | 10d | 2024-05-14 09:00 A | 2024-05-27 18:00 A |  | 100% |  |  |  | start no earlier than 2024-05-14 09:00 | Шуранов Ю | 80h | 80h |
| 3877 | 21.9 | расклеить таблички на стремянки |  | 1h | 2023-10-18 09:00 A | 2023-10-18 10:00 A |  | 100% |  |  |  | start no earlier than 2023-10-18 09:00 | Тимофеев В | 1h | 1h |
| 3878 | 21.10 | вести журнал учета такелажных средств, механизмов и приспособлений |  | 1h | 2026-09-01 09:00 | 2026-09-01 10:00 |  |  |  | 149.47d |  | start no earlier than 2026-09-01 09:00 | Шуранов Ю | 1h |  |
| 3879 | 21.11 | комплект сиз для высотных работ |  | 1h | 2023-06-09 09:00 A | 2023-06-09 10:00 A |  | 100% |  |  |  | start no earlier than 2023-06-09 09:00 | Лобанов И | 1h | 1h |
| 3880 | 21.12 | тестер индикторная отвертка |  | 1h | 2024-05-14 09:00 A | 2024-05-14 10:00 A |  | 100% |  |  |  | start no earlier than 2024-05-14 09:00 | Шуранов Ю | 1h | 1h |
| 3881 | 21.13 | заявка на диэл коврик, галоши, перчатки, маска, таблички |  | 1h | 2026-09-01 09:00 | 2026-09-01 10:00 |  |  |  | 149.47d |  | start no earlier than 2026-09-01 09:00 | Шуранов Ю | 1h |  |
| 3882 | 21.14 | заявка спецодежда наладчикам |  | 1d? | 2024-05-14 09:00 A | 2024-05-14 18:00 A |  | 100% |  |  |  | start no earlier than 2024-05-14 09:00 | Шуранов Ю | 8h | 8h |
| 3883 | 21.15 | аттестация охрана труда |  | 10d | 2024-05-14 09:00 | 2024-05-27 18:00 |  |  |  | 739.59d |  | start no earlier than 2024-05-14 09:00 | Шуранов Ю | 80h |  |
| 3884 | 21.16 | **испытание стеллажей** |  | 847d? | 2023-06-06 09:00 A | 2026-09-02 18:00 |  | 11% | 753.75d? | 147.59d |  |  |  | 27.25h | 3h |
| 3885 | 21.16.1 | оплата испытания стеллажей контроль | milestone | 0d | 2023-06-06 09:00 A | 2023-06-06 09:00 A |  | 100% |  |  |  | start no earlier than 2023-06-06 09:00 | Домоводов К |  |  |
| 3886 | 21.16.2 | орг испытание стеллажей |  | 1h | 2023-07-11 09:00 A | 2023-07-11 10:00 A |  | 100% |  |  |  | start no earlier than 2023-07-11 09:00 | Домоводов К | 1h | 1h |
| 3887 | 21.16.3 | график осмотров стеллажей |  | 1d? | 2026-08-31 09:00 | 2026-08-31 18:00 | 3885 |  |  | 147.59d | 0d | start no earlier than 2026-08-31 09:00 | Домоводов К | 8h |  |
| 3888 | 21.16.4 | табличка КП |  | 1d? | 2026-09-01 09:00 | 2026-09-01 18:00 | 3887 |  |  | 147.59d | 0d | start no earlier than 2023-04-27 08:00 | Домоводов К | 8h |  |
| 3889 | 21.16.5 | журнал технического освидетельствования стеллажей |  | 1d? | 2026-09-02 09:00 | 2026-09-02 18:00 | 3888 |  |  | 147.59d |  | start no earlier than 2023-04-27 08:00 | Домоводов К | 8h |  |
| 3890 | 21.16.6 | запрос стоимости ремонта стеллажей в 5ц |  | 2h | 2026-08-18 09:00 A | 2026-08-18 11:00 A |  | 100% |  |  |  | start no earlier than 2026-08-18 09:00 | Шуранов Ю | 2h | 2h |
| 3891 | 21.16.7 | контрольизг |  | 15min | 2026-08-27 09:00 | 2026-08-27 09:15 |  |  |  | 152.56d |  | start no earlier than 2026-08-27 09:00 | Шуранов Ю | 0.25h |  |

| ID | WBS | Task | Type | Duration | Start | Finish | Complete | Remaining | Total slack | Constraint | Resources | Work | Actual work |
| --- | --- | --- | --- | --- | --- | --- | --- | --- | --- | --- | --- | --- | --- |
| 3892 | 22 | **офис** |  | 392.12d | 2025-06-11 09:00 A | 2026-11-24 10:00 | 31% | 271.47d | 76.47d |  |  | 6.25h | 2h |
| 3893 | 22.1 | **Монтаж дополнительного освещения** |  | 0.12d | 2026-11-24 09:00 | 2026-11-24 10:00 |  |  | 76.47d |  |  | 4h |  |
| 3894 | 22.1.1 | Выяснить маркировку и тип светильников в кабинете снабжения, 2 этаж |  | 1h | 2026-11-24 09:00 | 2026-11-24 10:00 |  |  | 76.47d | start no earlier than 2026-11-24 09:00 | Тимофеев В; Дедов В | 2h |  |
| 3895 | 22.1.2 | Повесить доп светильники, в каких местах добавить, узнать у маркетинга, узнать возможность поставить другие светильники (согласовать с Домоводовым), смонтировать по красоте. |  | 1h | 2026-11-24 09:00 | 2026-11-24 10:00 |  |  | 76.47d | start no earlier than 2026-11-24 09:00 | Тимофеев В; Дедов В | 2h |  |
| 3896 | 22.2 | дует подконник офис - передать Олегу задачу |  | 15min | 2026-09-08 09:00 | 2026-09-08 09:15 |  |  | 143.56d | start no earlier than 2026-09-08 08:00 | Зорькин В | 0.25h |  |
| 3897 | 22.3 | ремонт светильник моргает , бухгалтерия |  | 1h | 2025-06-11 09:00 A | 2025-06-11 10:00 A | 100% |  |  | start no earlier than 2025-06-11 09:00 | Тимофеев В; Дедов В | 2h | 2h |
| 3898 | 23 | **территория** |  | 469.12d? | 2025-02-20 09:00 A | 2026-11-20 10:00 | 71% | 137.27d? | 78.47d |  |  | 391.75h | 275.5h |
| 3899 | 23.1 | Растяжка бетона, помощ олегу, когда привезут |  | 1h | 2026-11-20 09:00 A | 2026-11-20 10:00 A | 100% |  |  | start no earlier than 2026-11-20 09:00 | Труфанов А; Некрасов А | 2h | 2h |
| 3900 | 23.2 | Из арматуры наделать треугольников для колодцев, по диаметру основания, высота 180см. |  | 4h | 2026-11-04 09:00 A | 2026-11-04 13:00 A | 100% |  |  | start no earlier than 2026-11-04 09:00 | Макаревич А | 4h | 4h |
| 3901 | 23.3 | Выполнить работу по розетке для электрокара, по видео, которое скинет Домоводов |  | 2h | 2026-10-29 09:00 A | 2026-10-29 11:00 A | 100% |  |  | start no earlier than 2026-10-29 08:00 | Бобренок В | 2h | 2h |
| 3902 | 23.4 | Завести проводку в туалет и сделать там розетку на КПП №1 | manual | 2h | 2026-10-21 09:00 A | 2026-10-21 11:00 A | 100% |  |  |  | Бобренок В | 2h | 2h |
| 3903 | 23.5 | Завести проводку в туалет и сделать там розетку на КПП №1 - согласовать отключение/ переключить |  | 1h | 2026-10-26 09:00 A | 2026-10-26 10:00 A | 100% |  |  | start no earlier than 2026-10-26 09:00 | Бундин В | 1h | 1h |
| 3904 | 23.6 | Накачать давление в контур склада 4, ключи у кладовщиков, проверить сварной шов, перед проверкой, убрать паллеты с продукцией, чтоб не замочило. |  | 2h | 2026-10-20 09:00 A | 2026-10-20 11:00 A | 100% |  |  | start no earlier than 2026-10-20 09:00 | Бобренок В | 2h | 2h |
| 3905 | 23.7 | Закрепить профлист на углу между крышами возле 1 кпп (при сильном ветре сильно стучит и отрывает |  | 1d? | 2026-10-16 09:00 | 2026-10-16 18:00 |  |  | 107.59d | start no earlier than 2026-10-16 09:00 | Олег | 8h |  |
| 3906 | 23.8 | Обход по цехам по трассе воды в 5 цех (цех 3, цех 4, 5а, 5) Утром и вечером | manual | 1h | 2026-10-10 09:00 A | 2026-10-10 10:00 A | 100% |  |  | start no earlier than 2026-10-10 09:00 | Дедов В | 1h | 1h |
| 3907 | 23.9 | У охраны не работает тепловая пушка, ревизия/ремонт |  | 1h | 2026-10-06 09:00 A | 2026-10-06 10:00 A | 100% |  |  | start no earlier than 2026-10-06 09:00 | Бобренок В | 1h | 1h |
| 3908 | 23.10 | Накачать котлы на всех узлах отопления |  | 4h | 2026-09-28 09:00 | 2026-09-28 13:00 |  |  | 123.09d | start no earlier than 2026-09-28 08:00 | Бобренок В | 4h |  |
| 3909 | 23.11 | Обход по воде протянутой до 5 цеха, проверка протечек во всех узлах по возможности устранить, если нет возможности, перекрыть в 3-ем цехе |  | 30min | 2026-09-21 09:00 A | 2026-09-21 09:30 A | 100% |  |  | start no earlier than 2026-09-21 08:00 | Макаревич А | 0.5h | 0.5h |
| 3910 | 23.12 | отсыпать спуск для парковки между цех 2 и 3 |  | 1d? | 2026-08-26 09:00 A | 2026-08-26 18:00 A | 100% |  |  | start no earlier than 2026-08-26 08:00 | Дворник | 8h | 8h |
| 3911 | 23.13 | отсыпать тропинку до КТПН |  | 1d? | 2026-08-27 09:00 | 2026-08-27 18:00 |  |  | 151.59d | start no earlier than 2026-08-27 09:00 | Дворник | 8h |  |
| 3912 | 23.14 | **орг водосток КПП - 5ц** |  | 0.03d | 2026-08-31 09:00 A | 2026-08-31 09:15 A | 100% |  |  |  |  | 0.25h | 0.25h |
| 3913 | 23.14.1 | получить КП от Вугара |  | 15min | 2026-08-31 09:00 A | 2026-08-31 09:15 A | 100% |  |  | start no earlier than 2026-08-31 09:00 | Домоводов К | 0.25h | 0.25h |
| 3914 | 23.15 | **орг водосток между 4 и5А** |  | 0.03d | 2026-08-31 09:00 A | 2026-08-31 09:15 A | 100% |  |  |  |  | 0.25h | 0.25h |
| 3915 | 23.15.1 | получить КП от Вугара |  | 15min | 2026-08-31 09:00 A | 2026-08-31 09:15 A | 100% |  |  | start no earlier than 2026-08-31 09:00 | Домоводов К | 0.25h | 0.25h |

| ID | WBS | Task | Type | Duration | Start | Finish | Predecessors | Complete | Remaining | Total slack | Free slack | Constraint | Resources | Work | Actual work |
| --- | --- | --- | --- | --- | --- | --- | --- | --- | --- | --- | --- | --- | --- | --- | --- |
| 3916 | 23.16 | **Белявский выравнивание стены** |  | 14.16d | 2026-08-13 09:00 A | 2026-09-02 10:15 A |  | 100% |  |  |  |  |  | 2.58h | 2.58h |
| 3917 | 23.16.1 | оформить план работ, эскиз предложенный ГИП Глуходед |  | 1h | 2026-09-01 09:00 A | 2026-09-01 10:00 A |  | 100% |  |  |  | start no earlier than 2026-09-01 09:00 | Домоводов К | 1h | 1h |
| 3918 | 23.16.2 | поиск подрядчика на перекладку панели |  | 1h | 2026-09-01 09:00 A | 2026-09-01 10:00 A |  | 100% |  |  |  | start no earlier than 2026-09-01 09:00 | Домоводов К | 1h | 1h |
| 3919 | 23.16.3 | звонок по решению от варианта ремонта Белявского |  | 20min | 2026-08-13 09:00 A | 2026-08-13 09:20 A |  | 100% |  |  |  | start no earlier than 2026-08-13 09:00 | Домоводов К | 0.33h | 0.33h |
| 3920 | 23.16.4 | ожидание КП от бригады Белявского | milestone | 0d | 2026-08-20 09:00 A | 2026-08-20 09:00 A | 3919FS+1d | 100% |  |  |  | start no earlier than 2026-08-20 09:00 | Домоводов К |  |  |
| 3921 | 23.16.5 | согл работы с ГД | milestone | 0d | 2026-09-01 10:00 A | 2026-09-01 10:00 A | 3917, 3920FS+1d | 100% |  |  |  | start no earlier than 2026-08-31 09:00 | Домоводов К |  |  |
| 3922 | 23.16.6 | заказ кран |  | 15min | 2026-09-02 10:00 A | 2026-09-02 10:15 A | 3921FS+1d | 100% |  |  |  | start no earlier than 2026-08-13 09:00 | Зорькин В | 0.25h | 0.25h |
| 3923 | 23.17 | замена тусклых или не рабочих ламп на мухоловках 1,2,5 цех.Схемы расположения предоставлю (количество ламп, которые поменял указать в отчете) |  | 4h | 2026-08-06 09:00 A | 2026-08-06 13:00 A |  | 100% |  |  |  | start no earlier than 2026-08-06 08:00 | Труфанов А | 4h | 4h |
| 3924 | 23.18 | **КПП ревизия прожектор, не горит** |  | 1.12d | 2026-07-08 09:00 A | 2026-07-09 10:00 A |  | 100% |  |  |  |  |  | 1.33h | 1.33h |
| 3925 | 23.18.1 | Сфотать шильдик от прожектора кпп |  | 20min | 2026-07-08 09:00 A | 2026-07-08 09:20 A |  | 100% |  |  |  | start no earlier than 2026-07-08 08:00 | Бундин В | 0.33h | 0.33h |
| 3926 | 23.18.2 | монтаж прожетора |  | 1h | 2026-07-09 09:00 A | 2026-07-09 10:00 A |  | 100% |  |  |  | start no earlier than 2026-07-09 09:00 | Бобренок В | 1h | 1h |
| 3927 | 23.19 | **установить люки колодцев возле на территории** |  | 1d? | 2026-09-25 09:00 A | 2026-09-25 18:00 |  | 50% | 0.5d? |  |  |  |  | 12h | 4h |
| 3928 | 23.19.1 | разложить по местам |  | 4h | 2026-09-25 09:00 A | 2026-09-25 13:00 A |  | 100% |  |  |  | start no earlier than 2026-09-25 08:00 | Бобренок В | 4h | 4h |
| 3929 | 23.19.2 | врезать в асфальт |  | 4h | 2026-10-06 09:00 | 2026-10-06 13:00 |  |  |  | 116.09d |  | start no earlier than 2026-10-06 09:00 | Тимофеев В; Олег | 8h |  |
| 3930 | 23.20 | **установить пост для зарядки эл мобиль директору** |  | 1d? | 2026-06-03 09:00 | 2026-06-03 18:00 |  |  |  | 212.59d |  |  |  |  |  |
| 3931 | 23.20.1 | заявка на щиток / кабель |  | 1d? | 2026-06-03 09:00 | 2026-06-03 18:00 |  |  |  | 212.59d |  | start no earlier than 2026-06-03 08:00 |  |  |  |
| 3932 | 23.21 | уборка строительный мусор задний двор 5А склад |  | 2h | 2026-05-27 09:00 | 2026-05-27 11:00 |  |  |  | 218.34d |  | start no earlier than 2026-05-27 09:00 | оператор2 | 2h |  |
| 3933 | 23.22 | поправить бетонную крышку колодца. Дренаж вдоль забора колодец №2 |  | 2h | 2026-05-27 09:00 | 2026-05-27 11:00 |  |  |  | 218.34d |  | start no earlier than 2026-05-27 09:00 | оператор2 | 2h |  |
| 3934 | 23.23 | расчистить камни, для доступа к люку. Дренаж вдоль забора колодец №2 |  | 2h | 2026-05-27 09:00 | 2026-05-27 11:00 |  |  |  | 218.34d |  | start no earlier than 2026-05-27 09:00 | оператор2 | 2h |  |
| 3935 | 23.24 | проверка всех стемянок по цехам, приклеить бумажки о проверке |  | 1d? | 2026-06-26 09:00 A | 2026-06-26 18:00 A |  | 100% |  |  |  | start no earlier than 2026-06-26 09:00 | Шуранов Ю | 8h | 8h |
| 3936 | 23.25 | в 1,2,3 цехе ближе к утру выключить все оборудование, кроме камер охраны КПП- подготовка к фогации |  | 2h | 2026-04-30 08:00 A | 2026-04-30 11:00 A |  | 100% |  |  |  | start no earlier than 2026-04-30 08:00 | Дедов В | 2h | 2h |
| 3937 | 23.26 | заизолировать гофру в местах разрыва (гофра с кабелем для рефрежераторов возле нашего склада) | manual | 1h | 2026-04-26 09:00 A | 2026-04-26 10:00 A |  | 100% |  |  |  | start no earlier than 2026-04-26 09:00 | Макаревич А | 1h | 1h |
| 3938 | 23.27 | ремонт стен сосед Белявский |  | 5d | 2026-04-16 09:00 | 2026-04-22 18:00 |  |  |  | 242.59d |  | start no earlier than 2026-04-16 08:00 | Олег; Некрасов А | 80h |  |
| 3939 | 23.28 | **выезд ул.Писемского** |  | 15.03d | 2026-08-11 09:00 A | 2026-09-01 09:15 |  | 89% | 1.67d | 149.56d |  |  |  | 2.25h | 2h |
| 3940 | 23.28.1 | **топосъемка** |  | 15.03d | 2026-08-11 09:00 A | 2026-09-01 09:15 |  | 67% | 5.01d | 149.56d |  |  |  | 0.75h | 0.5h |
| 3941 | 23.28.1.1 | получить старт от ГД | milestone | 0d | 2026-08-31 09:00 | 2026-08-31 09:00 |  |  |  | 149.56d | 0d | start no earlier than 2026-08-31 09:00 | Домоводов К |  |  |
| 3942 | 23.28.1.2 | поск исполнителя / запрос счет |  | 30min | 2026-08-11 09:00 A | 2026-08-11 09:30 A |  | 100% |  |  |  | start no earlier than 2026-08-11 09:00 | Домоводов К | 0.5h | 0.5h |
| 3943 | 23.28.1.3 | контроль оплата |  | 15min | 2026-09-01 09:00 | 2026-09-01 09:15 | 3941FS+1d, 3942FS+5d |  |  | 149.56d | 0d | start no earlier than 2026-08-24 09:00 | Домоводов К | 0.25h |  |

| ID | WBS | Task | Type | Duration | Start | Finish | Predecessors | Complete | Remaining | Total slack | Free slack | Constraint | Resources | Work | Actual work |
| --- | --- | --- | --- | --- | --- | --- | --- | --- | --- | --- | --- | --- | --- | --- | --- |
| 3944 | 23.28.2 | **геология** |  | 15.03d | 2026-08-11 09:00 A | 2026-09-01 09:15 |  | 99% | 0d | 149.56d |  |  |  | 0.5h | 0.5h |
| 3945 | 23.28.2.1 | поск исполнителя / запрос счет |  | 30min | 2026-08-11 09:00 A | 2026-08-11 09:30 A |  | 100% |  |  |  | start no earlier than 2026-08-11 09:00 | Домоводов К | 0.5h | 0.5h |
| 3946 | 23.28.2.2 | контроль оплата | milestone | 0min | 2026-09-01 09:15 | 2026-09-01 09:15 | 3943, 3945FS+5d |  |  | 149.56d | 0d | start no earlier than 2026-08-10 08:00 | Домоводов К |  |  |
| 3947 | 23.28.3 | **проект дорога** |  | 15.03d | 2026-08-11 09:00 A | 2026-09-01 09:15 |  | 99% | 0d | 149.56d |  |  |  | 0.5h | 0.5h |
| 3948 | 23.28.3.1 | поск исполнителя / запрос счет |  | 30min | 2026-08-11 09:00 A | 2026-08-11 09:30 A |  | 100% |  |  |  | start no earlier than 2026-08-11 09:00 | Домоводов К | 0.5h | 0.5h |
| 3949 | 23.28.3.2 | получить счет / договор | milestone | 0d | 2026-08-13 09:00 A | 2026-08-13 09:00 A |  | 100% |  |  |  | start no earlier than 2026-08-13 09:00 | Домоводов К |  |  |
| 3950 | 23.28.3.3 | контроль оплата | milestone | 0min | 2026-09-01 09:15 | 2026-09-01 09:15 | 3946, 3948FS+5d |  |  | 149.56d | 0d | start no earlier than 2026-08-10 08:00 | Домоводов К |  |  |
| 3951 | 23.28.4 | **проект бетонная подушка** |  | 15.03d | 2026-08-11 09:00 A | 2026-09-01 09:15 |  | 99% | 0d | 149.56d |  |  |  | 0.5h | 0.5h |
| 3952 | 23.28.4.1 | поск исполнителя / запрос счет |  | 30min | 2026-08-11 09:00 A | 2026-08-11 09:30 A |  | 100% |  |  |  | start no earlier than 2026-08-11 09:00 | Домоводов К | 0.5h | 0.5h |
| 3953 | 23.28.4.2 | получить счет / договор | milestone | 0d | 2026-08-13 09:00 A | 2026-08-13 09:00 A |  | 100% |  |  |  | start no earlier than 2026-08-13 09:00 | Домоводов К |  |  |
| 3954 | 23.28.4.3 | контроль оплата | milestone | 0min | 2026-09-01 09:15 | 2026-09-01 09:15 | 3950, 3952FS+5d |  |  | 149.56d |  | start no earlier than 2026-08-10 08:00 | Домоводов К |  |  |
| 3955 | 23.29 | Сборка рамы и навеса для мусорки 2 ц возле 1 КПП |  | 4h | 2026-09-04 09:00 A | 2026-09-04 13:00 A |  | 100% |  |  |  | start no earlier than 2026-09-04 09:00 | Некрасов А; Макаревич А | 8h | 8h |
| 3956 | 23.30 | Покраска рамы новой мусорки, стоит у ворот навесок 2 цех |  | 1h | 2026-09-04 09:00 A | 2026-09-04 10:00 A |  | 100% |  |  |  | start no earlier than 2026-09-04 09:00 | Некрасов А; Макаревич А | 2h | 2h |
| 3957 | 23.31 | Монтаж дверей на мусорку собираем раму (петли привезем после обеда) |  | 3h | 2026-09-04 09:00 A | 2026-09-04 12:00 A |  | 100% |  |  |  | start no earlier than 2026-09-04 09:00 | Некрасов А; Макаревич А | 6h | 6h |
| 3958 | 23.32 | **асфальтирование дороги до 5ц** |  | 11.25d? | 2026-08-11 09:00 A | 2026-08-26 11:00 A |  | 100% |  |  |  |  |  | 36.5h | 36.5h |
| 3959 | 23.32.1 | составить схему площади дороги / 3 корректировки |  | 2h | 2026-08-11 09:00 A | 2026-08-11 11:00 A |  | 100% |  |  |  | start no earlier than 2026-08-11 09:00 | Зорькин В | 2h | 2h |
| 3960 | 23.32.2 | получить цену исполнителя |  | 1d | 2026-08-11 11:00 A | 2026-08-12 11:00 A | 3959 | 100% |  |  |  | start no earlier than 2026-08-10 08:00 | Домоводов К | 8h | 8h |
| 3961 | 23.32.3 | согл с ГД |  | 1d | 2026-08-11 09:00 A | 2026-08-11 18:00 A | 3960 | 100% |  |  |  | start no earlier than 2026-08-10 08:00 | Домоводов К | 8h | 8h |
| 3962 | 23.32.4 | получить счет от Вугара | milestone | 0h | 2026-08-12 09:00 A | 2026-08-12 09:00 A |  | 100% |  |  |  | start no earlier than 2026-08-12 09:00 | Домоводов К |  |  |
| 3963 | 23.32.5 | будет ли Вугар оформлятся как подрядчик? Соглаосвать с ГД |  | 15min | 2026-08-17 09:00 A | 2026-08-17 09:15 A |  | 100% |  |  |  | start no earlier than 2026-08-17 09:00 | Домоводов К | 0.25h | 0.25h |
| 3964 | 23.32.6 | корректировка чертеж объем работ |  | 1d? | 2026-08-20 09:00 A | 2026-08-20 18:00 A |  | 100% |  |  |  | start no earlier than 2026-08-20 09:00 | Домоводов К | 8h | 8h |
| 3965 | 23.32.7 | подготовка смета |  | 2h | 2026-08-26 09:00 A | 2026-08-26 11:00 A |  | 100% |  |  |  | start no earlier than 2026-08-26 09:00 | Домоводов К | 2h | 2h |
| 3966 | 23.32.8 | контроль сроков завоза техники |  | 15min | 2026-08-14 09:00 A | 2026-08-14 09:15 A |  | 100% |  |  |  | start no earlier than 2026-08-14 09:00 | Домоводов К | 0.25h | 0.25h |
| 3967 | 23.32.9 | монтаж |  | 1d? | 2026-08-19 09:00 A | 2026-08-19 18:00 A | 3961, 3962 | 100% |  |  |  | start no earlier than 2026-08-19 09:00 | Подрядчик | 8h | 8h |
| 3968 | 23.33 | взять роутер у нас в кабинете - подключить к UTP кабелю |  | 1d? | 2026-04-13 09:00 A | 2026-04-13 18:00 A |  | 100% |  |  |  | start no earlier than 2026-04-13 09:00 |  |  |  |
| 3969 | 23.34 | в цехе 2, 3, 4 и 5 убавить температуры на нагревателях и газ. Котлах |  | 4h | 2026-03-31 09:00 A | 2026-03-31 13:00 A |  | 100% |  |  |  | start no earlier than 2026-03-31 08:00 | Бундин В | 4h | 4h |
| 3970 | 23.35 | перенос камеры на 10см ниже КПП |  | 3h | 2026-03-21 09:00 A | 2026-03-23 12:00 A |  | 100% |  |  |  | start no earlier than 2026-03-21 09:00 | Бундин В | 3h | 3h |
| 3971 | 23.36 | запуск контейнер рэф |  | 2h | 2026-03-20 09:00 A | 2026-03-20 11:00 A |  | 100% |  |  |  | start no earlier than 2026-03-20 09:00 | Шуранов Ю | 2h | 2h |

| ID | WBS | Task | Duration | Start | Finish | Predecessors | Complete | Remaining | Total slack | Free slack | Constraint | Resources | Work | Actual work |
| --- | --- | --- | --- | --- | --- | --- | --- | --- | --- | --- | --- | --- | --- | --- |
| 3972 | 23.37 | **выровнить контейнеры, перекос двери** | 3.25d | 2026-03-19 09:00 A | 2026-03-24 11:00 A |  | 100% |  |  |  |  |  | 2.5h | 2.5h |
| 3973 | 23.37.1 | заявка кран | 30min | 2026-03-19 09:00 A | 2026-03-19 09:30 A |  | 100% |  |  |  | start no earlier than 2026-03-19 09:00 | Шуранов Ю | 0.5h | 0.5h |
| 3974 | 23.37.2 | работа по выравниванию | 2h | 2026-03-24 09:00 A | 2026-03-24 11:00 A | 3973FS+1d | 100% |  |  |  | start no earlier than 2026-03-24 09:00 | Некрасов А | 2h | 2h |
| 3975 | 23.38 | **двойной шлагбаум замрзает** | 5.01d | 2025-02-20 09:00 A | 2025-02-27 09:05 A |  | 100% |  |  |  |  |  | 1.08h | 1.08h |
| 3976 | 23.38.1 | вызов сервисного инженера контроль даты | 5min | 2025-02-27 09:00 A | 2025-02-27 09:05 A |  | 100% |  |  |  | start no earlier than 2025-02-27 09:00 | Шуранов Ю | 0.08h | 0.08h |
| 3977 | 23.38.2 | осмотр с сервисн инжзенером | 1h | 2025-02-20 09:00 A | 2025-02-20 10:00 A |  | 100% |  |  |  | start no earlier than 2025-02-20 09:00 | Шуранов Ю | 1h | 1h |
| 3978 | 23.39 | **Люки на колодцы** | 13.31d | 2026-05-26 09:00 A | 2026-06-12 11:30 |  | 98% | 0.32d | 206.28d |  |  |  | 163.5h | 161.5h |
| 3979 | 23.39.1 | Консультация с Олегом | 30min | 2026-05-26 09:00 A | 2026-05-26 09:30 A |  | 100% |  |  |  | start no earlier than 2026-05-26 08:00 | Зорькин В; Олег | 1h | 1h |
| 3980 | 23.39.2 | Заявка на закуп | 30min | 2026-05-29 09:00 A | 2026-05-29 09:30 A | 3979 | 100% |  |  |  | start no earlier than 2026-05-29 09:00 | Зорькин В | 0.5h | 0.5h |
| 3981 | 23.39.3 | Доставка, контроль | 10d | 2026-05-29 09:30 A | 2026-06-12 09:30 A | 3980 | 100% |  |  |  | start no earlier than 2026-05-26 09:00 | Зорькин В; Шуранов Ю | 160h | 160h |
| 3982 | 23.39.4 | установка люков на колодцы | 2h | 2026-06-12 09:30 | 2026-06-12 11:30 | 3981 |  |  | 206.28d |  | start no earlier than 2026-06-04 09:00 | Олег | 2h |  |
| 3983 | 24 | **ежедневные обходы и осмотры** | 473.5d | 2024-05-14 09:00 A | 2026-03-06 13:00 |  | 16% | 398.74d | 276.09d |  |  |  | 25.33h | 4h |
| 3984 | 24.1 | цех 1 | 20min | 2024-05-14 09:00 | 2024-05-14 09:20 |  |  |  | 747.01d | 0d | start no earlier than 2024-05-14 09:00 | Шуранов Ю | 0.33h |  |
| 3985 | 24.2 | цех 2 | 20min | 2024-05-14 09:00 | 2024-05-14 09:20 |  |  |  | 749.55d |  | start no earlier than 2024-05-14 09:00 | Шуранов Ю | 0.33h |  |
| 3986 | 24.3 | цех навесок | 20min | 2024-05-14 09:20 | 2024-05-14 09:40 | 3984 |  |  | 747.01d | 0d | start no earlier than 2024-05-14 09:00 | Шуранов Ю | 0.33h |  |
| 3987 | 24.4 | техника | 20h | 2024-05-14 09:40 | 2024-05-16 14:40 | 3986 |  |  | 747.01d |  | start no earlier than 2024-05-14 09:00 | Шуранов Ю | 20h |  |
| 3988 | 24.5 | вести журнал осмотров стеллажей | 20min | 2024-05-14 09:00 | 2024-05-14 09:20 |  |  |  | 749.55d |  | start no earlier than 2024-05-14 09:00 | Шуранов Ю | 0.33h |  |
| 3989 | 24.6 | оперативная работа | 4h | 2026-03-06 09:00 A | 2026-03-06 13:00 A |  | 100% |  |  |  | start no earlier than 2026-03-06 09:00 | Бобренок В | 4h | 4h |
| 3990 | 25 | **замена шнеков** | 882.5d? | 2023-03-29 09:00 A | 2026-08-14 13:00 |  | 2% | 864.01d? | 161.09d |  |  |  | 53h | 34h |
| 3991 | 25.1 | посчитать количество шнеков и гильз для цех1 и цех 2 | 2h | 2026-04-03 09:00 | 2026-04-03 11:00 |  |  |  | 256.34d |  | start no earlier than 2026-04-03 09:00 | Шуранов Ю | 2h |  |
| 3992 | 25.2 | вести список и учет замены шнеков | 1h | 2024-05-14 09:00 | 2024-05-14 10:00 |  |  |  | 749.47d |  | start no earlier than 2024-05-14 09:00 | Шуранов Ю | 1h |  |
| 3993 | 25.3 | линия 3 - было 3/приход спец12-3/спец14-9 | 1d? | 2024-04-15 09:00 A | 2024-04-15 18:00 A |  | 100% |  |  |  | start no earlier than 2024-04-15 08:00 |  |  |  |
| 3994 | 25.4 | линия3 | 42d | 2023-10-16 09:00 | 2023-12-12 18:00 |  |  |  | 858.59d |  | start no earlier than 2023-10-16 09:00 |  |  |  |
| 3995 | 25.5 | линия3 | 30d | 2023-12-12 09:00 | 2024-01-22 18:00 |  |  |  | 829.59d |  | start no earlier than 2023-12-12 09:00 |  |  |  |
| 3996 | 25.6 | линия3 | 45d | 2024-01-24 09:00 | 2024-03-26 18:00 |  |  |  | 783.59d |  | start no earlier than 2024-01-24 09:00 |  |  |  |
| 3997 | 25.7 | линия3 | 11d | 2023-03-29 09:00 | 2023-04-12 18:00 |  |  |  | 1032.59d |  | start no earlier than 2023-03-29 09:00 |  |  |  |
| 3998 | 25.8 | линия3 | 1d? | 2023-04-12 09:00 | 2023-04-12 18:00 |  |  |  | 1032.59d |  | start no earlier than 2023-04-12 09:00 |  |  |  |
| 3999 | 25.9 | линия 3 | 1.38d? | 2024-05-08 08:00 A | 2024-05-13 11:00 A |  | 100% |  |  |  | start no earlier than 2024-05-08 08:00 | Макаревич А; Некрасов А; Черепанов И | 26h | 26h |
| 4000 | 25.10 | диния 3 | 1d? | 2024-05-20 09:00 | 2024-05-20 18:00 |  |  |  | 744.59d |  | start no earlier than 2024-05-20 09:00 | Некрасов А; Тимофеев В | 16h |  |
| 4131 | 25.11 | замена линия 3, была струшка | 4h | 2026-08-14 09:00 A | 2026-08-14 13:00 A |  | 100% |  |  |  | start no earlier than 2026-08-14 09:00 | Некрасов А; Бундин В | 8h | 8h |
